# Finish Line

How a schedule from MS Project changed from version to version. A marks actual dates.

## Version 1 (saved 2005-01-28)

| ID | WBS | Task | Duration | Start | Finish | Predecessors | Total float |
| --- | --- | --- | --- | --- | --- | --- | --- |
| 2 | 1 | **01_Escape** | 11d? | 2005-01-24 | 2005-02-04 |  | 44d |
| 3 | 1.1 | **LevelDesign** | 11d? | 2005-01-24 | 2005-02-04 |  | 44d |
| 4 | 1.1.1 | **Stage 1** | 11d? | 2005-01-24 | 2005-02-04 |  | 44d |
| 5 |  | List of Changes | 2d | 2005-01-24 | 2005-01-25 |  | 44d |
| 6 |  | Changed Geometry | 1d? | 2005-01-26 | 2005-01-26 | 5 | 44d |
| 7 |  | Check List 1 | 1d? | 2005-01-27 | 2005-01-27 | 6 | 44d |
| 8 |  | Check List 2 | 1d? | 2005-01-28 | 2005-01-28 | 7 | 44d |
| 9 |  | Check List 3 | 1d? | 2005-01-29 | 2005-01-29 | 8 | 44d |
| 10 |  | Check List 4 | 1d? | 2005-01-31 | 2005-01-31 | 9 | 44d |
| 11 |  | Render Geometry | 1d? | 2005-02-01 | 2005-02-01 | 10 | 44d |
| 12 |  | Grass | 1d? | 2005-02-02 | 2005-02-02 | 11 | 44d |
| 13 |  | AI Maps | 1d? | 2005-02-03 | 2005-02-03 | 12 | 44d |
| 14 |  | Graphs | 1d? | 2005-02-04 | 2005-02-04 | 13 | 44d |
| 16 | 1.2 | **GameDesign** | 3d? | 2005-01-24 | 2005-01-26 |  | 52d |
| 17 | 1.2.1 | **Secrets** | 3d? | 2005-01-24 | 2005-01-26 |  | 52d |
| 18 | 1.2.1.1 | **Stage 1** | 3d? | 2005-01-24 | 2005-01-26 |  | 52d |
| 19 |  | Design | 1d? | 2005-01-24 | 2005-01-24 |  | 52d |
| 20 |  | Implementation | 1d? | 2005-01-25 | 2005-01-25 | 19 | 52d |
| 21 |  | Tuning | 1d? | 2005-01-26 | 2005-01-26 | 20 | 52d |
| 22 | 1.2.2 | **Smartterrains** | 3d? | 2005-01-24 | 2005-01-26 |  | 52d |
| 23 | 1.2.2.1 | **Stage 1** | 3d? | 2005-01-24 | 2005-01-26 |  | 52d |
| 24 |  | Design | 1d? | 2005-01-24 | 2005-01-24 |  | 52d |
| 25 |  | Implementation | 1d? | 2005-01-25 | 2005-01-25 | 24 | 52d |
| 26 |  | Tuning | 1d? | 2005-01-26 | 2005-01-26 | 25 | 52d |
| 27 | 1.2.3 | **Monsters/Spawns** | 3d? | 2005-01-24 | 2005-01-26 |  | 52d |
| 28 | 1.2.3.1 | **Stage 1** | 3d? | 2005-01-24 | 2005-01-26 |  | 52d |
| 29 |  | Design | 1d? | 2005-01-24 | 2005-01-24 |  | 52d |
| 30 |  | Implementation | 1d? | 2005-01-25 | 2005-01-25 | 29 | 52d |
| 31 |  | Tuning | 1d? | 2005-01-26 | 2005-01-26 | 30 | 52d |
| 32 | 1.2.4 | **Stalkers/Spawns** | 3d? | 2005-01-24 | 2005-01-26 |  | 52d |
| 33 | 1.2.4.1 | **Stage 1** | 3d? | 2005-01-24 | 2005-01-26 |  | 52d |
| 34 |  | Design | 1d? | 2005-01-24 | 2005-01-24 |  | 52d |
| 35 |  | Implementation | 1d? | 2005-01-25 | 2005-01-25 | 34 | 52d |
| 36 |  | Tuning | 1d? | 2005-01-26 | 2005-01-26 | 35 | 52d |
| 37 | 1.2.5 | **Anomalies/Spawns** | 3d? | 2005-01-24 | 2005-01-26 |  | 52d |
| 38 | 1.2.5.1 | **Stage 1** | 3d? | 2005-01-24 | 2005-01-26 |  | 52d |
| 39 |  | Design | 1d? | 2005-01-24 | 2005-01-24 |  | 52d |
| 40 |  | Implementation | 1d? | 2005-01-25 | 2005-01-25 | 39 | 52d |
| 41 |  | Tuning | 1d? | 2005-01-26 | 2005-01-26 | 40 | 52d |
| 42 | 1.2.6 | **Physicks** | 3d? | 2005-01-24 | 2005-01-26 |  | 52d |
| 43 | 1.2.6.1 | **Stage 1** | 3d? | 2005-01-24 | 2005-01-26 |  | 52d |
| 44 |  | Design | 1d? | 2005-01-24 | 2005-01-24 |  | 52d |
| 45 |  | Implementation | 1d? | 2005-01-25 | 2005-01-25 | 44 | 52d |
| 46 |  | Tuning | 1d? | 2005-01-26 | 2005-01-26 | 45 | 52d |
| 48 | 1.3 | **Scripts** | 3d? | 2005-01-24 | 2005-01-26 |  | 52d |
| 49 |  | Сценарий (текст) | 1d? | 2005-01-24 | 2005-01-24 |  | 54d |
| 50 | 1.3.2 | **Сцена 1 - Плоть рядом с аномалией** | 3d? | 2005-01-24 | 2005-01-26 |  | 52d |
| 51 |  | Постановка задач | 1d? | 2005-01-24 | 2005-01-24 |  | 52d |
| 52 | 1.3.2.2 | **Реализация** | 1d? | 2005-01-25 | 2005-01-25 | 51 | 52d |
| 53 |  | Доработка X в движке | 1d? | 2005-01-25 | 2005-01-25 |  | 52d |
| 54 | 1.3.2.3 | **Тестирование** | 1d? | 2005-01-26 | 2005-01-26 | 53 | 52d |
| 55 |  | Проверить расстановку AI нод вокруг дерева | 1d? | 2005-01-26 | 2005-01-26 |  | 52d |
| 56 | 1.3.3 | **Сцена 2 - Кабаны играют в футбол** | 3d? | 2005-01-24 | 2005-01-26 |  | 52d |
| 57 |  | Постановка задач | 1d? | 2005-01-24 | 2005-01-24 |  | 52d |
| 58 | 1.3.3.2 | **Реализация** | 1d? | 2005-01-25 | 2005-01-25 | 57 | 52d |
| 59 |  | Написать схему mob_kicker | 1d? | 2005-01-25 | 2005-01-25 |  | 52d |
| 60 |  | Установить и настроить схему на Escape | 1d? | 2005-01-25 | 2005-01-25 |  | 53d |
| 61 | 1.3.3.3 | **Тестирование** | 1d? | 2005-01-26 | 2005-01-26 | 59 | 52d |
| 62 |  | Отсутствие визуальных дефектов | 1d? | 2005-01-26 | 2005-01-26 |  | 52d |
| 64 | 2 | **02_Garbage** | 11d? | 2005-01-24 | 2005-02-04 |  | 44d |
| 65 | 2.1 | **LevelDesign** | 11d? | 2005-01-24 | 2005-02-04 |  | 44d |
| 66 | 2.1.1 | **Stage 1** | 11d? | 2005-01-24 | 2005-02-04 |  | 44d |
| 67 |  | List of Changes | 2d | 2005-01-24 | 2005-01-25 |  | 44d |
| 68 |  | Changed Geometry | 1d? | 2005-01-26 | 2005-01-26 | 67 | 44d |
| 69 |  | Check List 1 | 1d? | 2005-01-27 | 2005-01-27 | 68 | 44d |
| 70 |  | Check List 2 | 1d? | 2005-01-28 | 2005-01-28 | 69 | 44d |
| 71 |  | Check List 3 | 1d? | 2005-01-29 | 2005-01-29 | 70 | 44d |
| 72 |  | Check List 4 | 1d? | 2005-01-31 | 2005-01-31 | 71 | 44d |
| 73 |  | Render Geometry | 1d? | 2005-02-01 | 2005-02-01 | 72 | 44d |
| 74 |  | Grass | 1d? | 2005-02-02 | 2005-02-02 | 73 | 44d |

| ID | WBS | Task | Duration | Start | Finish | Predecessors | Total float |
| --- | --- | --- | --- | --- | --- | --- | --- |
| 75 |  | AI Maps | 1d? | 2005-02-03 | 2005-02-03 | 74 | 44d |
| 76 |  | Graphs | 1d? | 2005-02-04 | 2005-02-04 | 75 | 44d |
| 78 | 2.2 | **GameDesign** | 3d? | 2005-01-24 | 2005-01-26 |  | 52d |
| 79 | 2.2.1 | **Secrets** | 3d? | 2005-01-24 | 2005-01-26 |  | 52d |
| 80 | 2.2.1.1 | **Stage 1** | 3d? | 2005-01-24 | 2005-01-26 |  | 52d |
| 81 |  | Design | 1d? | 2005-01-24 | 2005-01-24 |  | 52d |
| 82 |  | Implementation | 1d? | 2005-01-25 | 2005-01-25 | 81 | 52d |
| 83 |  | Tuning | 1d? | 2005-01-26 | 2005-01-26 | 82 | 52d |
| 84 | 2.2.2 | **Smartterrains** | 3d? | 2005-01-24 | 2005-01-26 |  | 52d |
| 85 | 2.2.2.1 | **Stage 1** | 3d? | 2005-01-24 | 2005-01-26 |  | 52d |
| 86 |  | Design | 1d? | 2005-01-24 | 2005-01-24 |  | 52d |
| 87 |  | Implementation | 1d? | 2005-01-25 | 2005-01-25 | 86 | 52d |
| 88 |  | Tuning | 1d? | 2005-01-26 | 2005-01-26 | 87 | 52d |
| 89 | 2.2.3 | **Monsters/Spawns** | 3d? | 2005-01-24 | 2005-01-26 |  | 52d |
| 90 | 2.2.3.1 | **Stage 1** | 3d? | 2005-01-24 | 2005-01-26 |  | 52d |
| 91 |  | Design | 1d? | 2005-01-24 | 2005-01-24 |  | 52d |
| 92 |  | Implementation | 1d? | 2005-01-25 | 2005-01-25 | 91 | 52d |
| 93 |  | Tuning | 1d? | 2005-01-26 | 2005-01-26 | 92 | 52d |
| 94 | 2.2.4 | **Stalkers/Spawns** | 3d? | 2005-01-24 | 2005-01-26 |  | 52d |
| 95 | 2.2.4.1 | **Stage 1** | 3d? | 2005-01-24 | 2005-01-26 |  | 52d |
| 96 |  | Design | 1d? | 2005-01-24 | 2005-01-24 |  | 52d |
| 97 |  | Implementation | 1d? | 2005-01-25 | 2005-01-25 | 96 | 52d |
| 98 |  | Tuning | 1d? | 2005-01-26 | 2005-01-26 | 97 | 52d |
| 99 | 2.2.5 | **Anomalies/Spawns** | 3d? | 2005-01-24 | 2005-01-26 |  | 52d |
| 100 | 2.2.5.1 | **Stage 1** | 3d? | 2005-01-24 | 2005-01-26 |  | 52d |
| 101 |  | Design | 1d? | 2005-01-24 | 2005-01-24 |  | 52d |
| 102 |  | Implementation | 1d? | 2005-01-25 | 2005-01-25 | 101 | 52d |
| 103 |  | Tuning | 1d? | 2005-01-26 | 2005-01-26 | 102 | 52d |
| 104 | 2.2.6 | **Physicks** | 3d? | 2005-01-24 | 2005-01-26 |  | 52d |
| 105 | 2.2.6.1 | **Stage 1** | 3d? | 2005-01-24 | 2005-01-26 |  | 52d |
| 106 |  | Design | 1d? | 2005-01-24 | 2005-01-24 |  | 52d |
| 107 |  | Implementation | 1d? | 2005-01-25 | 2005-01-25 | 106 | 52d |
| 108 |  | Tuning | 1d? | 2005-01-26 | 2005-01-26 | 107 | 52d |
| 110 | 2.3 | **Scripts** | 5d? | 2005-01-24 | 2005-01-28 |  | 50d |
| 111 | 2.3.1 | **Script 1** | 5d? | 2005-01-24 | 2005-01-28 |  | 50d |
| 112 |  | Scenario(text) | 1d? | 2005-01-24 | 2005-01-24 |  | 50d |
| 113 |  | Постановка задач | 1d? | 2005-01-25 | 2005-01-25 | 112 | 50d |
| 114 |  | Implimentation | 1d? | 2005-01-26 | 2005-01-26 | 113 | 50d |
| 115 |  | Dilogs/VO/Icons/Objects/Animations | 1d? | 2005-01-27 | 2005-01-27 | 114 | 50d |
| 116 |  | Настройка | 1d? | 2005-01-28 | 2005-01-28 | 115 | 50d |
| 117 | 2.3.2 | **Script 2** | 5d? | 2005-01-24 | 2005-01-28 |  | 50d |
| 118 |  | Scenario(text) | 1d? | 2005-01-24 | 2005-01-24 |  | 50d |
| 119 |  | Постановка задач | 1d? | 2005-01-25 | 2005-01-25 | 118 | 50d |
| 120 |  | Implimentation | 1d? | 2005-01-26 | 2005-01-26 | 119 | 50d |
| 121 |  | Dilogs/VO/Icons/Objects/Animations | 1d? | 2005-01-27 | 2005-01-27 | 120 | 50d |
| 122 |  | Настройка | 1d? | 2005-01-28 | 2005-01-28 | 121 | 50d |
| 123 | 2.3.3 | **Script 3** | 5d? | 2005-01-24 | 2005-01-28 |  | 50d |
| 124 |  | Scenario(text) | 1d? | 2005-01-24 | 2005-01-24 |  | 50d |
| 125 |  | Постановка задач | 1d? | 2005-01-25 | 2005-01-25 | 124 | 50d |
| 126 |  | Implimentation | 1d? | 2005-01-26 | 2005-01-26 | 125 | 50d |
| 127 |  | Dilogs/VO/Icons/Objects/Animations | 1d? | 2005-01-27 | 2005-01-27 | 126 | 50d |
| 128 |  | Настройка | 1d? | 2005-01-28 | 2005-01-28 | 127 | 50d |
| 129 | 2.3.4 | **Script 4** | 5d? | 2005-01-24 | 2005-01-28 |  | 50d |
| 130 |  | Scenario(text) | 1d? | 2005-01-24 | 2005-01-24 |  | 50d |
| 131 |  | Постановка задач | 1d? | 2005-01-25 | 2005-01-25 | 130 | 50d |
| 132 |  | Implimentation | 1d? | 2005-01-26 | 2005-01-26 | 131 | 50d |
| 133 |  | Dilogs/VO/Icons/Objects/Animations | 1d? | 2005-01-27 | 2005-01-27 | 132 | 50d |
| 134 |  | Настройка | 1d? | 2005-01-28 | 2005-01-28 | 133 | 50d |
| 135 | 2.3.5 | **Script 5** | 5d? | 2005-01-24 | 2005-01-28 |  | 50d |
| 136 |  | Scenario(text) | 1d? | 2005-01-24 | 2005-01-24 |  | 50d |
| 137 |  | Постановка задач | 1d? | 2005-01-25 | 2005-01-25 | 136 | 50d |
| 138 |  | Implimentation | 1d? | 2005-01-26 | 2005-01-26 | 137 | 50d |
| 139 |  | Dilogs/VO/Icons/Objects/Animations | 1d? | 2005-01-27 | 2005-01-27 | 138 | 50d |
| 140 |  | Настройка | 1d? | 2005-01-28 | 2005-01-28 | 139 | 50d |
| 142 | 3 | **03_Agroprom** | 11d? | 2005-01-24 | 2005-02-04 |  | 44d |
| 143 | 3.1 | **LevelDesign** | 11d? | 2005-01-24 | 2005-02-04 |  | 44d |
| 144 | 3.1.1 | **Stage 1** | 11d? | 2005-01-24 | 2005-02-04 |  | 44d |
| 145 |  | List of Changes | 2d | 2005-01-24 | 2005-01-25 |  | 44d |
| 146 |  | Changed Geometry | 1d? | 2005-01-26 | 2005-01-26 | 145 | 44d |
| 147 |  | Check List 1 | 1d? | 2005-01-27 | 2005-01-27 | 146 | 44d |

| ID | WBS | Task | Duration | Start | Finish | Predecessors | Total float |
| --- | --- | --- | --- | --- | --- | --- | --- |
| 148 |  | Check List 2 | 1d? | 2005-01-28 | 2005-01-28 | 147 | 44d |
| 149 |  | Check List 3 | 1d? | 2005-01-29 | 2005-01-29 | 148 | 44d |
| 150 |  | Check List 4 | 1d? | 2005-01-31 | 2005-01-31 | 149 | 44d |
| 151 |  | Render Geometry | 1d? | 2005-02-01 | 2005-02-01 | 150 | 44d |
| 152 |  | Grass | 1d? | 2005-02-02 | 2005-02-02 | 151 | 44d |
| 153 |  | AI Maps | 1d? | 2005-02-03 | 2005-02-03 | 152 | 44d |
| 154 |  | Graphs | 1d? | 2005-02-04 | 2005-02-04 | 153 | 44d |
| 156 | 3.2 | **GameDesign** | 3d? | 2005-01-24 | 2005-01-26 |  | 52d |
| 157 | 3.2.1 | **Secrets** | 3d? | 2005-01-24 | 2005-01-26 |  | 52d |
| 158 | 3.2.1.1 | **Stage 1** | 3d? | 2005-01-24 | 2005-01-26 |  | 52d |
| 159 |  | Design | 1d? | 2005-01-24 | 2005-01-24 |  | 52d |
| 160 |  | Implementation | 1d? | 2005-01-25 | 2005-01-25 | 159 | 52d |
| 161 |  | Tuning | 1d? | 2005-01-26 | 2005-01-26 | 160 | 52d |
| 162 | 3.2.2 | **Smartterrains** | 3d? | 2005-01-24 | 2005-01-26 |  | 52d |
| 163 | 3.2.2.1 | **Stage 1** | 3d? | 2005-01-24 | 2005-01-26 |  | 52d |
| 164 |  | Design | 1d? | 2005-01-24 | 2005-01-24 |  | 52d |
| 165 |  | Implementation | 1d? | 2005-01-25 | 2005-01-25 | 164 | 52d |
| 166 |  | Tuning | 1d? | 2005-01-26 | 2005-01-26 | 165 | 52d |
| 167 | 3.2.3 | **Monsters/Spawns** | 3d? | 2005-01-24 | 2005-01-26 |  | 52d |
| 168 | 3.2.3.1 | **Stage 1** | 3d? | 2005-01-24 | 2005-01-26 |  | 52d |
| 169 |  | Design | 1d? | 2005-01-24 | 2005-01-24 |  | 52d |
| 170 |  | Implementation | 1d? | 2005-01-25 | 2005-01-25 | 169 | 52d |
| 171 |  | Tuning | 1d? | 2005-01-26 | 2005-01-26 | 170 | 52d |
| 172 | 3.2.4 | **Stalkers/Spawns** | 3d? | 2005-01-24 | 2005-01-26 |  | 52d |
| 173 | 3.2.4.1 | **Stage 1** | 3d? | 2005-01-24 | 2005-01-26 |  | 52d |
| 174 |  | Design | 1d? | 2005-01-24 | 2005-01-24 |  | 52d |
| 175 |  | Implementation | 1d? | 2005-01-25 | 2005-01-25 | 174 | 52d |
| 176 |  | Tuning | 1d? | 2005-01-26 | 2005-01-26 | 175 | 52d |
| 177 | 3.2.5 | **Anomalies/Spawns** | 3d? | 2005-01-24 | 2005-01-26 |  | 52d |
| 178 | 3.2.5.1 | **Stage 1** | 3d? | 2005-01-24 | 2005-01-26 |  | 52d |
| 179 |  | Design | 1d? | 2005-01-24 | 2005-01-24 |  | 52d |
| 180 |  | Implementation | 1d? | 2005-01-25 | 2005-01-25 | 179 | 52d |
| 181 |  | Tuning | 1d? | 2005-01-26 | 2005-01-26 | 180 | 52d |
| 182 | 3.2.6 | **Physicks** | 3d? | 2005-01-24 | 2005-01-26 |  | 52d |
| 183 | 3.2.6.1 | **Stage 1** | 3d? | 2005-01-24 | 2005-01-26 |  | 52d |
| 184 |  | Design | 1d? | 2005-01-24 | 2005-01-24 |  | 52d |
| 185 |  | Implementation | 1d? | 2005-01-25 | 2005-01-25 | 184 | 52d |
| 186 |  | Tuning | 1d? | 2005-01-26 | 2005-01-26 | 185 | 52d |
| 188 | 3.3 | **Scripts** | 5d? | 2005-01-24 | 2005-01-28 |  | 50d |
| 189 | 3.3.1 | **Script 1** | 5d? | 2005-01-24 | 2005-01-28 |  | 50d |
| 190 |  | Scenario(text) | 1d? | 2005-01-24 | 2005-01-24 |  | 50d |
| 191 |  | Постановка задач | 1d? | 2005-01-25 | 2005-01-25 | 190 | 50d |
| 192 |  | Implimentation | 1d? | 2005-01-26 | 2005-01-26 | 191 | 50d |
| 193 |  | Dilogs/VO/Icons/Objects/Animations | 1d? | 2005-01-27 | 2005-01-27 | 192 | 50d |
| 194 |  | Настройка | 1d? | 2005-01-28 | 2005-01-28 | 193 | 50d |
| 195 | 3.3.2 | **Script 2** | 5d? | 2005-01-24 | 2005-01-28 |  | 50d |
| 196 |  | Scenario(text) | 1d? | 2005-01-24 | 2005-01-24 |  | 50d |
| 197 |  | Постановка задач | 1d? | 2005-01-25 | 2005-01-25 | 196 | 50d |
| 198 |  | Implimentation | 1d? | 2005-01-26 | 2005-01-26 | 197 | 50d |
| 199 |  | Dilogs/VO/Icons/Objects/Animations | 1d? | 2005-01-27 | 2005-01-27 | 198 | 50d |
| 200 |  | Настройка | 1d? | 2005-01-28 | 2005-01-28 | 199 | 50d |
| 201 | 3.3.3 | **Script 3** | 5d? | 2005-01-24 | 2005-01-28 |  | 50d |
| 202 |  | Scenario(text) | 1d? | 2005-01-24 | 2005-01-24 |  | 50d |
| 203 |  | Постановка задач | 1d? | 2005-01-25 | 2005-01-25 | 202 | 50d |
| 204 |  | Implimentation | 1d? | 2005-01-26 | 2005-01-26 | 203 | 50d |
| 205 |  | Dilogs/VO/Icons/Objects/Animations | 1d? | 2005-01-27 | 2005-01-27 | 204 | 50d |
| 206 |  | Настройка | 1d? | 2005-01-28 | 2005-01-28 | 205 | 50d |
| 207 | 3.3.4 | **Script 4** | 5d? | 2005-01-24 | 2005-01-28 |  | 50d |
| 208 |  | Scenario(text) | 1d? | 2005-01-24 | 2005-01-24 |  | 50d |
| 209 |  | Постановка задач | 1d? | 2005-01-25 | 2005-01-25 | 208 | 50d |
| 210 |  | Implimentation | 1d? | 2005-01-26 | 2005-01-26 | 209 | 50d |
| 211 |  | Dilogs/VO/Icons/Objects/Animations | 1d? | 2005-01-27 | 2005-01-27 | 210 | 50d |
| 212 |  | Настройка | 1d? | 2005-01-28 | 2005-01-28 | 211 | 50d |
| 213 | 3.3.5 | **Script 5** | 5d? | 2005-01-24 | 2005-01-28 |  | 50d |
| 214 |  | Scenario(text) | 1d? | 2005-01-24 | 2005-01-24 |  | 50d |
| 215 |  | Постановка задач | 1d? | 2005-01-25 | 2005-01-25 | 214 | 50d |
| 216 |  | Implimentation | 1d? | 2005-01-26 | 2005-01-26 | 215 | 50d |
| 217 |  | Dilogs/VO/Icons/Objects/Animations | 1d? | 2005-01-27 | 2005-01-27 | 216 | 50d |
| 218 |  | Настройка | 1d? | 2005-01-28 | 2005-01-28 | 217 | 50d |
| 220 | 4 | **04_Agroprom_Underground** | 11d? | 2005-01-24 | 2005-02-04 |  | 44d |

| ID | WBS | Task | Duration | Start | Finish | Predecessors | Total float |
| --- | --- | --- | --- | --- | --- | --- | --- |
| 221 | 4.1 | **LevelDesign** | 11d? | 2005-01-24 | 2005-02-04 |  | 44d |
| 222 | 4.1.1 | **Stage 1** | 11d? | 2005-01-24 | 2005-02-04 |  | 44d |
| 223 |  | List of Changes | 2d | 2005-01-24 | 2005-01-25 |  | 44d |
| 224 |  | Changed Geometry | 1d? | 2005-01-26 | 2005-01-26 | 223 | 44d |
| 225 |  | Check List 1 | 1d? | 2005-01-27 | 2005-01-27 | 224 | 44d |
| 226 |  | Check List 2 | 1d? | 2005-01-28 | 2005-01-28 | 225 | 44d |
| 227 |  | Check List 3 | 1d? | 2005-01-29 | 2005-01-29 | 226 | 44d |
| 228 |  | Check List 4 | 1d? | 2005-01-31 | 2005-01-31 | 227 | 44d |
| 229 |  | Render Geometry | 1d? | 2005-02-01 | 2005-02-01 | 228 | 44d |
| 230 |  | Grass | 1d? | 2005-02-02 | 2005-02-02 | 229 | 44d |
| 231 |  | AI Maps | 1d? | 2005-02-03 | 2005-02-03 | 230 | 44d |
| 232 |  | Graphs | 1d? | 2005-02-04 | 2005-02-04 | 231 | 44d |
| 234 | 4.2 | **GameDesign** | 3d? | 2005-01-24 | 2005-01-26 |  | 52d |
| 235 | 4.2.1 | **Secrets** | 3d? | 2005-01-24 | 2005-01-26 |  | 52d |
| 236 | 4.2.1.1 | **Stage 1** | 3d? | 2005-01-24 | 2005-01-26 |  | 52d |
| 237 |  | Design | 1d? | 2005-01-24 | 2005-01-24 |  | 52d |
| 238 |  | Implementation | 1d? | 2005-01-25 | 2005-01-25 | 237 | 52d |
| 239 |  | Tuning | 1d? | 2005-01-26 | 2005-01-26 | 238 | 52d |
| 240 | 4.2.2 | **Smartterrains** | 3d? | 2005-01-24 | 2005-01-26 |  | 52d |
| 241 | 4.2.2.1 | **Stage 1** | 3d? | 2005-01-24 | 2005-01-26 |  | 52d |
| 242 |  | Design | 1d? | 2005-01-24 | 2005-01-24 |  | 52d |
| 243 |  | Implementation | 1d? | 2005-01-25 | 2005-01-25 | 242 | 52d |
| 244 |  | Tuning | 1d? | 2005-01-26 | 2005-01-26 | 243 | 52d |
| 245 | 4.2.3 | **Monsters/Spawns** | 3d? | 2005-01-24 | 2005-01-26 |  | 52d |
| 246 | 4.2.3.1 | **Stage 1** | 3d? | 2005-01-24 | 2005-01-26 |  | 52d |
| 247 |  | Design | 1d? | 2005-01-24 | 2005-01-24 |  | 52d |
| 248 |  | Implementation | 1d? | 2005-01-25 | 2005-01-25 | 247 | 52d |
| 249 |  | Tuning | 1d? | 2005-01-26 | 2005-01-26 | 248 | 52d |
| 250 | 4.2.4 | **Stalkers/Spawns** | 3d? | 2005-01-24 | 2005-01-26 |  | 52d |
| 251 | 4.2.4.1 | **Stage 1** | 3d? | 2005-01-24 | 2005-01-26 |  | 52d |
| 252 |  | Design | 1d? | 2005-01-24 | 2005-01-24 |  | 52d |
| 253 |  | Implementation | 1d? | 2005-01-25 | 2005-01-25 | 252 | 52d |
| 254 |  | Tuning | 1d? | 2005-01-26 | 2005-01-26 | 253 | 52d |
| 255 | 4.2.5 | **Anomalies/Spawns** | 3d? | 2005-01-24 | 2005-01-26 |  | 52d |
| 256 | 4.2.5.1 | **Stage 1** | 3d? | 2005-01-24 | 2005-01-26 |  | 52d |
| 257 |  | Design | 1d? | 2005-01-24 | 2005-01-24 |  | 52d |
| 258 |  | Implementation | 1d? | 2005-01-25 | 2005-01-25 | 257 | 52d |
| 259 |  | Tuning | 1d? | 2005-01-26 | 2005-01-26 | 258 | 52d |
| 260 | 4.2.6 | **Physicks** | 3d? | 2005-01-24 | 2005-01-26 |  | 52d |
| 261 | 4.2.6.1 | **Stage 1** | 3d? | 2005-01-24 | 2005-01-26 |  | 52d |
| 262 |  | Design | 1d? | 2005-01-24 | 2005-01-24 |  | 52d |
| 263 |  | Implementation | 1d? | 2005-01-25 | 2005-01-25 | 262 | 52d |
| 264 |  | Tuning | 1d? | 2005-01-26 | 2005-01-26 | 263 | 52d |
| 266 | 4.3 | **Scripts** | 5d? | 2005-01-24 | 2005-01-28 |  | 50d |
| 267 | 4.3.1 | **Script 1** | 5d? | 2005-01-24 | 2005-01-28 |  | 50d |
| 268 |  | Scenario(text) | 1d? | 2005-01-24 | 2005-01-24 |  | 50d |
| 269 |  | Постановка задач | 1d? | 2005-01-25 | 2005-01-25 | 268 | 50d |
| 270 |  | Implimentation | 1d? | 2005-01-26 | 2005-01-26 | 269 | 50d |
| 271 |  | Dilogs/VO/Icons/Objects/Animations | 1d? | 2005-01-27 | 2005-01-27 | 270 | 50d |
| 272 |  | Настройка | 1d? | 2005-01-28 | 2005-01-28 | 271 | 50d |
| 273 | 4.3.2 | **Script 2** | 5d? | 2005-01-24 | 2005-01-28 |  | 50d |
| 274 |  | Scenario(text) | 1d? | 2005-01-24 | 2005-01-24 |  | 50d |
| 275 |  | Постановка задач | 1d? | 2005-01-25 | 2005-01-25 | 274 | 50d |
| 276 |  | Implimentation | 1d? | 2005-01-26 | 2005-01-26 | 275 | 50d |
| 277 |  | Dilogs/VO/Icons/Objects/Animations | 1d? | 2005-01-27 | 2005-01-27 | 276 | 50d |
| 278 |  | Настройка | 1d? | 2005-01-28 | 2005-01-28 | 277 | 50d |
| 279 | 4.3.3 | **Script 3** | 5d? | 2005-01-24 | 2005-01-28 |  | 50d |
| 280 |  | Scenario(text) | 1d? | 2005-01-24 | 2005-01-24 |  | 50d |
| 281 |  | Постановка задач | 1d? | 2005-01-25 | 2005-01-25 | 280 | 50d |
| 282 |  | Implimentation | 1d? | 2005-01-26 | 2005-01-26 | 281 | 50d |
| 283 |  | Dilogs/VO/Icons/Objects/Animations | 1d? | 2005-01-27 | 2005-01-27 | 282 | 50d |
| 284 |  | Настройка | 1d? | 2005-01-28 | 2005-01-28 | 283 | 50d |
| 285 | 4.3.4 | **Script 4** | 5d? | 2005-01-24 | 2005-01-28 |  | 50d |
| 286 |  | Scenario(text) | 1d? | 2005-01-24 | 2005-01-24 |  | 50d |
| 287 |  | Постановка задач | 1d? | 2005-01-25 | 2005-01-25 | 286 | 50d |
| 288 |  | Implimentation | 1d? | 2005-01-26 | 2005-01-26 | 287 | 50d |
| 289 |  | Dilogs/VO/Icons/Objects/Animations | 1d? | 2005-01-27 | 2005-01-27 | 288 | 50d |
| 290 |  | Настройка | 1d? | 2005-01-28 | 2005-01-28 | 289 | 50d |
| 291 | 4.3.5 | **Script 5** | 5d? | 2005-01-24 | 2005-01-28 |  | 50d |
| 292 |  | Scenario(text) | 1d? | 2005-01-24 | 2005-01-24 |  | 50d |

| ID | WBS | Task | Duration | Start | Finish | Predecessors | Total float | Constraint |
| --- | --- | --- | --- | --- | --- | --- | --- | --- |
| 293 |  | Постановка задач | 1d? | 2005-01-25 | 2005-01-25 | 292 | 50d |  |
| 294 |  | Implimentation | 1d? | 2005-01-26 | 2005-01-26 | 293 | 50d |  |
| 295 |  | Dilogs/VO/Icons/Objects/Animations | 1d? | 2005-01-27 | 2005-01-27 | 294 | 50d |  |
| 296 |  | Настройка | 1d? | 2005-01-28 | 2005-01-28 | 295 | 50d |  |
| 302 | 5 | **05_Dark_Valley** | 11d? | 2005-01-24 | 2005-02-04 |  | 1.88d |  |
| 303 | 5.1 | **LevelDesign** | 11d? | 2005-01-24 | 2005-02-04 |  | 1.88d |  |
| 304 | 5.1.1 | **Stage 1** | 11d? | 2005-01-24 | 2005-02-04 |  | 1.88d |  |
| 305 |  | List of Changes | 2d | 2005-01-24 | 2005-01-25 |  | 1.88d | start no earlier than 2005-01-24 |
| 306 |  | Changed Geometry | 1d? | 2005-01-26 | 2005-01-26 | 305 | 1.88d |  |
| 307 |  | Check List 1 | 1d? | 2005-01-27 | 2005-01-27 | 306 | 1.88d |  |
| 308 |  | Check List 2 | 1d? | 2005-01-28 | 2005-01-28 | 307 | 1.88d |  |
| 309 |  | Check List 3 | 1d? | 2005-01-29 | 2005-01-29 | 308 | 1.88d |  |
| 310 |  | Check List 4 | 1d? | 2005-01-31 | 2005-01-31 | 309 | 1.88d |  |
| 311 |  | Render Geometry | 1d? | 2005-02-01 | 2005-02-01 | 310 | 1.88d |  |
| 312 |  | Grass | 1d? | 2005-02-02 | 2005-02-02 | 311 | 1.88d |  |
| 313 |  | AI Maps | 1d? | 2005-02-03 | 2005-02-03 | 312 | 1.88d |  |
| 314 |  | Graphs | 1d? | 2005-02-04 | 2005-02-04 | 313 | 1.88d |  |
| 316 | 5.2 | **GameDesign** | 3d? | 2005-01-24 | 2005-01-26 |  | 17.88d |  |
| 317 | 5.2.1 | **Secrets** | 3d? | 2005-01-24 | 2005-01-26 |  | 17.88d |  |
| 318 | 5.2.1.1 | **Stage 1** | 3d? | 2005-01-24 | 2005-01-26 |  | 17.88d |  |
| 319 |  | Design | 1d? | 2005-01-24 | 2005-01-24 |  | 17.88d |  |
| 320 |  | Implementation | 1d? | 2005-01-25 | 2005-01-25 | 319 | 17.88d |  |
| 321 |  | Tuning | 1d? | 2005-01-26 | 2005-01-26 | 320 | 17.88d |  |
| 322 | 5.2.2 | **Smartterrains** | 3d? | 2005-01-24 | 2005-01-26 |  | 17.88d |  |
| 323 | 5.2.2.1 | **Stage 1** | 3d? | 2005-01-24 | 2005-01-26 |  | 17.88d |  |
| 324 |  | Design | 1d? | 2005-01-24 | 2005-01-24 |  | 17.88d |  |
| 325 |  | Implementation | 1d? | 2005-01-25 | 2005-01-25 | 324 | 17.88d |  |
| 326 |  | Tuning | 1d? | 2005-01-26 | 2005-01-26 | 325 | 17.88d |  |
| 327 | 5.2.3 | **Monsters/Spawns** | 3d? | 2005-01-24 | 2005-01-26 |  | 17.88d |  |
| 328 | 5.2.3.1 | **Stage 1** | 3d? | 2005-01-24 | 2005-01-26 |  | 17.88d |  |
| 329 |  | Design | 1d? | 2005-01-24 | 2005-01-24 |  | 17.88d |  |
| 330 |  | Implementation | 1d? | 2005-01-25 | 2005-01-25 | 329 | 17.88d |  |
| 331 |  | Tuning | 1d? | 2005-01-26 | 2005-01-26 | 330 | 17.88d |  |
| 332 | 5.2.4 | **Stalkers/Spawns** | 3d? | 2005-01-24 | 2005-01-26 |  | 17.88d |  |
| 333 | 5.2.4.1 | **Stage 1** | 3d? | 2005-01-24 | 2005-01-26 |  | 17.88d |  |
| 334 |  | Design | 1d? | 2005-01-24 | 2005-01-24 |  | 17.88d |  |
| 335 |  | Implementation | 1d? | 2005-01-25 | 2005-01-25 | 334 | 17.88d |  |
| 336 |  | Tuning | 1d? | 2005-01-26 | 2005-01-26 | 335 | 17.88d |  |
| 337 | 5.2.5 | **Anomalies/Spawns** | 3d? | 2005-01-24 | 2005-01-26 |  | 17.88d |  |
| 338 | 5.2.5.1 | **Stage 1** | 3d? | 2005-01-24 | 2005-01-26 |  | 17.88d |  |
| 339 |  | Design | 1d? | 2005-01-24 | 2005-01-24 |  | 17.88d |  |
| 340 |  | Implementation | 1d? | 2005-01-25 | 2005-01-25 | 339 | 17.88d |  |
| 341 |  | Tuning | 1d? | 2005-01-26 | 2005-01-26 | 340 | 17.88d |  |
| 342 | 5.2.6 | **Physicks** | 3d? | 2005-01-24 | 2005-01-26 |  | 17.88d |  |
| 343 | 5.2.6.1 | **Stage 1** | 3d? | 2005-01-24 | 2005-01-26 |  | 17.88d |  |
| 344 |  | Design | 1d? | 2005-01-24 | 2005-01-24 |  | 17.88d |  |
| 345 |  | Implementation | 1d? | 2005-01-25 | 2005-01-25 | 344 | 17.88d |  |
| 346 |  | Tuning | 1d? | 2005-01-26 | 2005-01-26 | 345 | 17.88d |  |
| 348 | 5.3 | **Scripts** | 1d? | 2005-01-24 | 2005-01-24 |  | 19.88d |  |
| 349 |  | Сценарий (текст) | 1d? | 2005-01-24 | 2005-01-24 |  | 19.88d |  |
| 350 | 5.3.2 | **Сцена 1 - бандиты скармливают сталкера монстру в яме** | 1d? | 2005-01-24 | 2005-01-24 |  | 19.88d |  |
| 351 |  | Постановка задач | 1d? | 2005-01-24 | 2005-01-24 |  | 19.88d |  |
| 352 | 5.3.2.2 | **Реализация** | 1d? | 2005-01-24 | 2005-01-24 |  | 19.88d |  |
| 353 |  | Скрипт и диалоги общения пленника с игроком | 1d? | 2005-01-24 | 2005-01-24 |  | 19.88d |  |
| 354 |  | Сценка со сталкиванием в яму | 1d? | 2005-01-24 | 2005-01-24 |  | 19.88d |  |
| 355 | 5.3.2.3 | **Тестирование** | 1d? | 2005-01-24 | 2005-01-24 |  | 19.88d |  |
| 356 |  | Персонажи сцены не срываются по реакциям на звук и прочие раздражители | 1d? | 2005-01-24 | 2005-01-24 |  | 19.88d |  |
| 357 |  | Убедиться, что жертва упадет в яму даже в режиме с медленными апдейтами | 1d? | 2005-01-24 | 2005-01-24 |  | 19.88d |  |
| 359 | 6 | **18_Prypiat** | 11d? | 2005-02-05 | 2005-02-17 | 302 | 9.88d |  |
| 360 | 6.1 | **LevelDesign** | 11d? | 2005-02-05 | 2005-02-17 |  | 9.88d |  |
| 361 | 6.1.1 | **Stage 1** | 11d? | 2005-02-05 | 2005-02-17 |  | 9.88d |  |
| 362 |  | List of Changes | 2d | 2005-02-05 | 2005-02-07 |  | 9.88d |  |
| 363 |  | Changed Geometry | 1d? | 2005-02-08 | 2005-02-08 | 362 | 9.88d |  |
| 364 |  | Check List 1 | 1d? | 2005-02-09 | 2005-02-09 | 363 | 9.88d |  |
| 365 |  | Check List 2 | 1d? | 2005-02-10 | 2005-02-10 | 364 | 9.88d |  |
| 366 |  | Check List 3 | 1d? | 2005-02-11 | 2005-02-11 | 365 | 9.88d |  |
| 367 |  | Check List 4 | 1d? | 2005-02-12 | 2005-02-12 | 366 | 9.88d |  |
| 368 |  | Render Geometry | 1d? | 2005-02-14 | 2005-02-14 | 367 | 9.88d |  |
| 369 |  | Grass | 1d? | 2005-02-15 | 2005-02-15 | 368 | 9.88d |  |
| 370 |  | AI Maps | 1d? | 2005-02-16 | 2005-02-16 | 369 | 9.88d |  |

| ID | WBS | Task | Duration | Start | Finish | Predecessors | Total float |
| --- | --- | --- | --- | --- | --- | --- | --- |
| 371 |  | Graphs | 1d? | 2005-02-17 | 2005-02-17 | 370 | 9.88d |
| 373 | 6.2 | **GameDesign** | 3d? | 2005-02-05 | 2005-02-08 |  | 33.88d |
| 374 | 6.2.1 | **Secrets** | 3d? | 2005-02-05 | 2005-02-08 |  | 33.88d |
| 375 | 6.2.1.1 | **Stage 1** | 3d? | 2005-02-05 | 2005-02-08 |  | 33.88d |
| 376 |  | Design | 1d? | 2005-02-05 | 2005-02-05 |  | 33.88d |
| 377 |  | Implementation | 1d? | 2005-02-07 | 2005-02-07 | 376 | 33.88d |
| 378 |  | Tuning | 1d? | 2005-02-08 | 2005-02-08 | 377 | 33.88d |
| 379 | 6.2.2 | **Smartterrains** | 3d? | 2005-02-05 | 2005-02-08 |  | 33.88d |
| 380 | 6.2.2.1 | **Stage 1** | 3d? | 2005-02-05 | 2005-02-08 |  | 33.88d |
| 381 |  | Design | 1d? | 2005-02-05 | 2005-02-05 |  | 33.88d |
| 382 |  | Implementation | 1d? | 2005-02-07 | 2005-02-07 | 381 | 33.88d |
| 383 |  | Tuning | 1d? | 2005-02-08 | 2005-02-08 | 382 | 33.88d |
| 384 | 6.2.3 | **Monsters/Spawns** | 3d? | 2005-02-05 | 2005-02-08 |  | 33.88d |
| 385 | 6.2.3.1 | **Stage 1** | 3d? | 2005-02-05 | 2005-02-08 |  | 33.88d |
| 386 |  | Design | 1d? | 2005-02-05 | 2005-02-05 |  | 33.88d |
| 387 |  | Implementation | 1d? | 2005-02-07 | 2005-02-07 | 386 | 33.88d |
| 388 |  | Tuning | 1d? | 2005-02-08 | 2005-02-08 | 387 | 33.88d |
| 389 | 6.2.4 | **Stalkers/Spawns** | 3d? | 2005-02-05 | 2005-02-08 |  | 33.88d |
| 390 | 6.2.4.1 | **Stage 1** | 3d? | 2005-02-05 | 2005-02-08 |  | 33.88d |
| 391 |  | Design | 1d? | 2005-02-05 | 2005-02-05 |  | 33.88d |
| 392 |  | Implementation | 1d? | 2005-02-07 | 2005-02-07 | 391 | 33.88d |
| 393 |  | Tuning | 1d? | 2005-02-08 | 2005-02-08 | 392 | 33.88d |
| 394 | 6.2.5 | **Anomalies/Spawns** | 3d? | 2005-02-05 | 2005-02-08 |  | 33.88d |
| 395 | 6.2.5.1 | **Stage 1** | 3d? | 2005-02-05 | 2005-02-08 |  | 33.88d |
| 396 |  | Design | 1d? | 2005-02-05 | 2005-02-05 |  | 33.88d |
| 397 |  | Implementation | 1d? | 2005-02-07 | 2005-02-07 | 396 | 33.88d |
| 398 |  | Tuning | 1d? | 2005-02-08 | 2005-02-08 | 397 | 33.88d |
| 399 | 6.2.6 | **Physicks** | 3d? | 2005-02-05 | 2005-02-08 |  | 33.88d |
| 400 | 6.2.6.1 | **Stage 1** | 3d? | 2005-02-05 | 2005-02-08 |  | 33.88d |
| 401 |  | Design | 1d? | 2005-02-05 | 2005-02-05 |  | 33.88d |
| 402 |  | Implementation | 1d? | 2005-02-07 | 2005-02-07 | 401 | 33.88d |
| 403 |  | Tuning | 1d? | 2005-02-08 | 2005-02-08 | 402 | 33.88d |
| 405 | 6.3 | **Scripts** | 5d? | 2005-02-05 | 2005-02-10 |  | 31.88d |
| 406 | 6.3.1 | **Script 1** | 5d? | 2005-02-05 | 2005-02-10 |  | 31.88d |
| 407 |  | Scenario(text) | 1d? | 2005-02-05 | 2005-02-05 |  | 31.88d |
| 408 |  | Постановка задач | 1d? | 2005-02-07 | 2005-02-07 | 407 | 31.88d |
| 409 |  | Implimentation | 1d? | 2005-02-08 | 2005-02-08 | 408 | 31.88d |
| 410 |  | Dilogs/VO/Icons/Objects/Animations | 1d? | 2005-02-09 | 2005-02-09 | 409 | 31.88d |
| 411 |  | Настройка | 1d? | 2005-02-10 | 2005-02-10 | 410 | 31.88d |
| 412 | 6.3.2 | **Script 2** | 5d? | 2005-02-05 | 2005-02-10 |  | 31.88d |
| 413 |  | Scenario(text) | 1d? | 2005-02-05 | 2005-02-05 |  | 31.88d |
| 414 |  | Постановка задач | 1d? | 2005-02-07 | 2005-02-07 | 413 | 31.88d |
| 415 |  | Implimentation | 1d? | 2005-02-08 | 2005-02-08 | 414 | 31.88d |
| 416 |  | Dilogs/VO/Icons/Objects/Animations | 1d? | 2005-02-09 | 2005-02-09 | 415 | 31.88d |
| 417 |  | Настройка | 1d? | 2005-02-10 | 2005-02-10 | 416 | 31.88d |
| 418 | 6.3.3 | **Script 3** | 5d? | 2005-02-05 | 2005-02-10 |  | 31.88d |
| 419 |  | Scenario(text) | 1d? | 2005-02-05 | 2005-02-05 |  | 31.88d |
| 420 |  | Постановка задач | 1d? | 2005-02-07 | 2005-02-07 | 419 | 31.88d |
| 421 |  | Implimentation | 1d? | 2005-02-08 | 2005-02-08 | 420 | 31.88d |
| 422 |  | Dilogs/VO/Icons/Objects/Animations | 1d? | 2005-02-09 | 2005-02-09 | 421 | 31.88d |
| 423 |  | Настройка | 1d? | 2005-02-10 | 2005-02-10 | 422 | 31.88d |
| 424 | 6.3.4 | **Script 4** | 5d? | 2005-02-05 | 2005-02-10 |  | 31.88d |
| 425 |  | Scenario(text) | 1d? | 2005-02-05 | 2005-02-05 |  | 31.88d |
| 426 |  | Постановка задач | 1d? | 2005-02-07 | 2005-02-07 | 425 | 31.88d |
| 427 |  | Implimentation | 1d? | 2005-02-08 | 2005-02-08 | 426 | 31.88d |
| 428 |  | Dilogs/VO/Icons/Objects/Animations | 1d? | 2005-02-09 | 2005-02-09 | 427 | 31.88d |
| 429 |  | Настройка | 1d? | 2005-02-10 | 2005-02-10 | 428 | 31.88d |
| 430 | 6.3.5 | **Script 5** | 5d? | 2005-02-05 | 2005-02-10 |  | 31.88d |
| 431 |  | Scenario(text) | 1d? | 2005-02-05 | 2005-02-05 |  | 31.88d |
| 432 |  | Постановка задач | 1d? | 2005-02-07 | 2005-02-07 | 431 | 31.88d |
| 433 |  | Implimentation | 1d? | 2005-02-08 | 2005-02-08 | 432 | 31.88d |
| 434 |  | Dilogs/VO/Icons/Objects/Animations | 1d? | 2005-02-09 | 2005-02-09 | 433 | 31.88d |
| 435 |  | Настройка | 1d? | 2005-02-10 | 2005-02-10 | 434 | 31.88d |
| 437 | 7 | **13_Dead_City** | 11d? | 2005-02-18 | 2005-03-02 | 359 | 25.88d |
| 438 | 7.1 | **LevelDesign** | 11d? | 2005-02-18 | 2005-03-02 |  | 25.88d |
| 439 | 7.1.1 | **Stage 1** | 11d? | 2005-02-18 | 2005-03-02 |  | 25.88d |
| 440 |  | List of Changes | 2d | 2005-02-18 | 2005-02-19 |  | 25.88d |
| 441 |  | Changed Geometry | 1d? | 2005-02-21 | 2005-02-21 | 440 | 25.88d |
| 442 |  | Check List 1 | 1d? | 2005-02-22 | 2005-02-22 | 441 | 25.88d |
| 443 |  | Check List 2 | 1d? | 2005-02-23 | 2005-02-23 | 442 | 25.88d |

| ID | WBS | Task | Duration | Start | Finish | Predecessors | Total float |
| --- | --- | --- | --- | --- | --- | --- | --- |
| 444 |  | Check List 3 | 1d? | 2005-02-24 | 2005-02-24 | 443 | 25.88d |
| 445 |  | Check List 4 | 1d? | 2005-02-25 | 2005-02-25 | 444 | 25.88d |
| 446 |  | Render Geometry | 1d? | 2005-02-26 | 2005-02-26 | 445 | 25.88d |
| 447 |  | Grass | 1d? | 2005-02-28 | 2005-02-28 | 446 | 25.88d |
| 448 |  | AI Maps | 1d? | 2005-03-01 | 2005-03-01 | 447 | 25.88d |
| 449 |  | Graphs | 1d? | 2005-03-02 | 2005-03-02 | 448 | 25.88d |
| 451 | 7.2 | **GameDesign** | 3d? | 2005-02-18 | 2005-02-21 |  | 57.88d |
| 452 | 7.2.1 | **Secrets** | 3d? | 2005-02-18 | 2005-02-21 |  | 57.88d |
| 453 | 7.2.1.1 | **Stage 1** | 3d? | 2005-02-18 | 2005-02-21 |  | 57.88d |
| 454 |  | Design | 1d? | 2005-02-18 | 2005-02-18 |  | 57.88d |
| 455 |  | Implementation | 1d? | 2005-02-19 | 2005-02-19 | 454 | 57.88d |
| 456 |  | Tuning | 1d? | 2005-02-21 | 2005-02-21 | 455 | 57.88d |
| 457 | 7.2.2 | **Smartterrains** | 3d? | 2005-02-18 | 2005-02-21 |  | 57.88d |
| 458 | 7.2.2.1 | **Stage 1** | 3d? | 2005-02-18 | 2005-02-21 |  | 57.88d |
| 459 |  | Design | 1d? | 2005-02-18 | 2005-02-18 |  | 57.88d |
| 460 |  | Implementation | 1d? | 2005-02-19 | 2005-02-19 | 459 | 57.88d |
| 461 |  | Tuning | 1d? | 2005-02-21 | 2005-02-21 | 460 | 57.88d |
| 462 | 7.2.3 | **Monsters/Spawns** | 3d? | 2005-02-18 | 2005-02-21 |  | 57.88d |
| 463 | 7.2.3.1 | **Stage 1** | 3d? | 2005-02-18 | 2005-02-21 |  | 57.88d |
| 464 |  | Design | 1d? | 2005-02-18 | 2005-02-18 |  | 57.88d |
| 465 |  | Implementation | 1d? | 2005-02-19 | 2005-02-19 | 464 | 57.88d |
| 466 |  | Tuning | 1d? | 2005-02-21 | 2005-02-21 | 465 | 57.88d |
| 467 | 7.2.4 | **Stalkers/Spawns** | 3d? | 2005-02-18 | 2005-02-21 |  | 57.88d |
| 468 | 7.2.4.1 | **Stage 1** | 3d? | 2005-02-18 | 2005-02-21 |  | 57.88d |
| 469 |  | Design | 1d? | 2005-02-18 | 2005-02-18 |  | 57.88d |
| 470 |  | Implementation | 1d? | 2005-02-19 | 2005-02-19 | 469 | 57.88d |
| 471 |  | Tuning | 1d? | 2005-02-21 | 2005-02-21 | 470 | 57.88d |
| 472 | 7.2.5 | **Anomalies/Spawns** | 3d? | 2005-02-18 | 2005-02-21 |  | 57.88d |
| 473 | 7.2.5.1 | **Stage 1** | 3d? | 2005-02-18 | 2005-02-21 |  | 57.88d |
| 474 |  | Design | 1d? | 2005-02-18 | 2005-02-18 |  | 57.88d |
| 475 |  | Implementation | 1d? | 2005-02-19 | 2005-02-19 | 474 | 57.88d |
| 476 |  | Tuning | 1d? | 2005-02-21 | 2005-02-21 | 475 | 57.88d |
| 477 | 7.2.6 | **Physicks** | 3d? | 2005-02-18 | 2005-02-21 |  | 57.88d |
| 478 | 7.2.6.1 | **Stage 1** | 3d? | 2005-02-18 | 2005-02-21 |  | 57.88d |
| 479 |  | Design | 1d? | 2005-02-18 | 2005-02-18 |  | 57.88d |
| 480 |  | Implementation | 1d? | 2005-02-19 | 2005-02-19 | 479 | 57.88d |
| 481 |  | Tuning | 1d? | 2005-02-21 | 2005-02-21 | 480 | 57.88d |
| 483 | 7.3 | **Scripts** | 5d? | 2005-02-18 | 2005-02-23 |  | 55.88d |
| 484 | 7.3.1 | **Script 1** | 5d? | 2005-02-18 | 2005-02-23 |  | 55.88d |
| 485 |  | Scenario(text) | 1d? | 2005-02-18 | 2005-02-18 |  | 55.88d |
| 486 |  | Постановка задач | 1d? | 2005-02-19 | 2005-02-19 | 485 | 55.88d |
| 487 |  | Implimentation | 1d? | 2005-02-21 | 2005-02-21 | 486 | 55.88d |
| 488 |  | Dilogs/VO/Icons/Objects/Animations | 1d? | 2005-02-22 | 2005-02-22 | 487 | 55.88d |
| 489 |  | Настройка | 1d? | 2005-02-23 | 2005-02-23 | 488 | 55.88d |
| 490 | 7.3.2 | **Script 2** | 5d? | 2005-02-18 | 2005-02-23 |  | 55.88d |
| 491 |  | Scenario(text) | 1d? | 2005-02-18 | 2005-02-18 |  | 55.88d |
| 492 |  | Постановка задач | 1d? | 2005-02-19 | 2005-02-19 | 491 | 55.88d |
| 493 |  | Implimentation | 1d? | 2005-02-21 | 2005-02-21 | 492 | 55.88d |
| 494 |  | Dilogs/VO/Icons/Objects/Animations | 1d? | 2005-02-22 | 2005-02-22 | 493 | 55.88d |
| 495 |  | Настройка | 1d? | 2005-02-23 | 2005-02-23 | 494 | 55.88d |
| 496 | 7.3.3 | **Script 3** | 5d? | 2005-02-18 | 2005-02-23 |  | 55.88d |
| 497 |  | Scenario(text) | 1d? | 2005-02-18 | 2005-02-18 |  | 55.88d |
| 498 |  | Постановка задач | 1d? | 2005-02-19 | 2005-02-19 | 497 | 55.88d |
| 499 |  | Implimentation | 1d? | 2005-02-21 | 2005-02-21 | 498 | 55.88d |
| 500 |  | Dilogs/VO/Icons/Objects/Animations | 1d? | 2005-02-22 | 2005-02-22 | 499 | 55.88d |
| 501 |  | Настройка | 1d? | 2005-02-23 | 2005-02-23 | 500 | 55.88d |
| 502 | 7.3.4 | **Script 4** | 5d? | 2005-02-18 | 2005-02-23 |  | 55.88d |
| 503 |  | Scenario(text) | 1d? | 2005-02-18 | 2005-02-18 |  | 55.88d |
| 504 |  | Постановка задач | 1d? | 2005-02-19 | 2005-02-19 | 503 | 55.88d |
| 505 |  | Implimentation | 1d? | 2005-02-21 | 2005-02-21 | 504 | 55.88d |
| 506 |  | Dilogs/VO/Icons/Objects/Animations | 1d? | 2005-02-22 | 2005-02-22 | 505 | 55.88d |
| 507 |  | Настройка | 1d? | 2005-02-23 | 2005-02-23 | 506 | 55.88d |
| 508 | 7.3.5 | **Script 5** | 5d? | 2005-02-18 | 2005-02-23 |  | 55.88d |
| 509 |  | Scenario(text) | 1d? | 2005-02-18 | 2005-02-18 |  | 55.88d |
| 510 |  | Постановка задач | 1d? | 2005-02-19 | 2005-02-19 | 509 | 55.88d |
| 511 |  | Implimentation | 1d? | 2005-02-21 | 2005-02-21 | 510 | 55.88d |
| 512 |  | Dilogs/VO/Icons/Objects/Animations | 1d? | 2005-02-22 | 2005-02-22 | 511 | 55.88d |
| 513 |  | Настройка | 1d? | 2005-02-23 | 2005-02-23 | 512 | 55.88d |
| 517 | 8 | **06_Dark_Valley_Underground** | 11d? | 2005-01-24 | 2005-02-04 |  | 1.88d |
| 518 | 8.1 | **LevelDesign** | 11d? | 2005-01-24 | 2005-02-04 |  | 1.88d |

| ID | WBS | Task | Duration | Start | Finish | Predecessors | Total float |
| --- | --- | --- | --- | --- | --- | --- | --- |
| 519 | 8.1.1 | **Stage 1** | 11d? | 2005-01-24 | 2005-02-04 |  | 1.88d |
| 520 |  | List of Changes | 2d | 2005-01-24 | 2005-01-25 |  | 1.88d |
| 521 |  | Changed Geometry | 1d? | 2005-01-26 | 2005-01-26 | 520 | 1.88d |
| 522 |  | Check List 1 | 1d? | 2005-01-27 | 2005-01-27 | 521 | 1.88d |
| 523 |  | Check List 2 | 1d? | 2005-01-28 | 2005-01-28 | 522 | 1.88d |
| 524 |  | Check List 3 | 1d? | 2005-01-29 | 2005-01-29 | 523 | 1.88d |
| 525 |  | Check List 4 | 1d? | 2005-01-31 | 2005-01-31 | 524 | 1.88d |
| 526 |  | Render Geometry | 1d? | 2005-02-01 | 2005-02-01 | 525 | 1.88d |
| 527 |  | Grass | 1d? | 2005-02-02 | 2005-02-02 | 526 | 1.88d |
| 528 |  | AI Maps | 1d? | 2005-02-03 | 2005-02-03 | 527 | 1.88d |
| 529 |  | Graphs | 1d? | 2005-02-04 | 2005-02-04 | 528 | 1.88d |
| 531 | 8.2 | **GameDesign** | 3d? | 2005-01-24 | 2005-01-26 |  | 17.88d |
| 532 | 8.2.1 | **Secrets** | 3d? | 2005-01-24 | 2005-01-26 |  | 17.88d |
| 533 | 8.2.1.1 | **Stage 1** | 3d? | 2005-01-24 | 2005-01-26 |  | 17.88d |
| 534 |  | Design | 1d? | 2005-01-24 | 2005-01-24 |  | 17.88d |
| 535 |  | Implementation | 1d? | 2005-01-25 | 2005-01-25 | 534 | 17.88d |
| 536 |  | Tuning | 1d? | 2005-01-26 | 2005-01-26 | 535 | 17.88d |
| 537 | 8.2.2 | **Smartterrains** | 3d? | 2005-01-24 | 2005-01-26 |  | 17.88d |
| 538 | 8.2.2.1 | **Stage 1** | 3d? | 2005-01-24 | 2005-01-26 |  | 17.88d |
| 539 |  | Design | 1d? | 2005-01-24 | 2005-01-24 |  | 17.88d |
| 540 |  | Implementation | 1d? | 2005-01-25 | 2005-01-25 | 539 | 17.88d |
| 541 |  | Tuning | 1d? | 2005-01-26 | 2005-01-26 | 540 | 17.88d |
| 542 | 8.2.3 | **Monsters/Spawns** | 3d? | 2005-01-24 | 2005-01-26 |  | 17.88d |
| 543 | 8.2.3.1 | **Stage 1** | 3d? | 2005-01-24 | 2005-01-26 |  | 17.88d |
| 544 |  | Design | 1d? | 2005-01-24 | 2005-01-24 |  | 17.88d |
| 545 |  | Implementation | 1d? | 2005-01-25 | 2005-01-25 | 544 | 17.88d |
| 546 |  | Tuning | 1d? | 2005-01-26 | 2005-01-26 | 545 | 17.88d |
| 547 | 8.2.4 | **Stalkers/Spawns** | 3d? | 2005-01-24 | 2005-01-26 |  | 17.88d |
| 548 | 8.2.4.1 | **Stage 1** | 3d? | 2005-01-24 | 2005-01-26 |  | 17.88d |
| 549 |  | Design | 1d? | 2005-01-24 | 2005-01-24 |  | 17.88d |
| 550 |  | Implementation | 1d? | 2005-01-25 | 2005-01-25 | 549 | 17.88d |
| 551 |  | Tuning | 1d? | 2005-01-26 | 2005-01-26 | 550 | 17.88d |
| 552 | 8.2.5 | **Anomalies/Spawns** | 3d? | 2005-01-24 | 2005-01-26 |  | 17.88d |
| 553 | 8.2.5.1 | **Stage 1** | 3d? | 2005-01-24 | 2005-01-26 |  | 17.88d |
| 554 |  | Design | 1d? | 2005-01-24 | 2005-01-24 |  | 17.88d |
| 555 |  | Implementation | 1d? | 2005-01-25 | 2005-01-25 | 554 | 17.88d |
| 556 |  | Tuning | 1d? | 2005-01-26 | 2005-01-26 | 555 | 17.88d |
| 557 | 8.2.6 | **Physicks** | 3d? | 2005-01-24 | 2005-01-26 |  | 17.88d |
| 558 | 8.2.6.1 | **Stage 1** | 3d? | 2005-01-24 | 2005-01-26 |  | 17.88d |
| 559 |  | Design | 1d? | 2005-01-24 | 2005-01-24 |  | 17.88d |
| 560 |  | Implementation | 1d? | 2005-01-25 | 2005-01-25 | 559 | 17.88d |
| 561 |  | Tuning | 1d? | 2005-01-26 | 2005-01-26 | 560 | 17.88d |
| 563 | 8.3 | **Scripts** | 5d? | 2005-01-24 | 2005-01-28 |  | 15.88d |
| 564 | 8.3.1 | **Script 1** | 5d? | 2005-01-24 | 2005-01-28 |  | 15.88d |
| 565 |  | Scenario(text) | 1d? | 2005-01-24 | 2005-01-24 |  | 15.88d |
| 566 |  | Постановка задач | 1d? | 2005-01-25 | 2005-01-25 | 565 | 15.88d |
| 567 |  | Implimentation | 1d? | 2005-01-26 | 2005-01-26 | 566 | 15.88d |
| 568 |  | Dilogs/VO/Icons/Objects/Animations | 1d? | 2005-01-27 | 2005-01-27 | 567 | 15.88d |
| 569 |  | Настройка | 1d? | 2005-01-28 | 2005-01-28 | 568 | 15.88d |
| 570 | 8.3.2 | **Script 2** | 5d? | 2005-01-24 | 2005-01-28 |  | 15.88d |
| 571 |  | Scenario(text) | 1d? | 2005-01-24 | 2005-01-24 |  | 15.88d |
| 572 |  | Постановка задач | 1d? | 2005-01-25 | 2005-01-25 | 571 | 15.88d |
| 573 |  | Implimentation | 1d? | 2005-01-26 | 2005-01-26 | 572 | 15.88d |
| 574 |  | Dilogs/VO/Icons/Objects/Animations | 1d? | 2005-01-27 | 2005-01-27 | 573 | 15.88d |
| 575 |  | Настройка | 1d? | 2005-01-28 | 2005-01-28 | 574 | 15.88d |
| 576 | 8.3.3 | **Script 3** | 5d? | 2005-01-24 | 2005-01-28 |  | 15.88d |
| 577 |  | Scenario(text) | 1d? | 2005-01-24 | 2005-01-24 |  | 15.88d |
| 578 |  | Постановка задач | 1d? | 2005-01-25 | 2005-01-25 | 577 | 15.88d |
| 579 |  | Implimentation | 1d? | 2005-01-26 | 2005-01-26 | 578 | 15.88d |
| 580 |  | Dilogs/VO/Icons/Objects/Animations | 1d? | 2005-01-27 | 2005-01-27 | 579 | 15.88d |
| 581 |  | Настройка | 1d? | 2005-01-28 | 2005-01-28 | 580 | 15.88d |
| 582 | 8.3.4 | **Script 4** | 5d? | 2005-01-24 | 2005-01-28 |  | 15.88d |
| 583 |  | Scenario(text) | 1d? | 2005-01-24 | 2005-01-24 |  | 15.88d |
| 584 |  | Постановка задач | 1d? | 2005-01-25 | 2005-01-25 | 583 | 15.88d |
| 585 |  | Implimentation | 1d? | 2005-01-26 | 2005-01-26 | 584 | 15.88d |
| 586 |  | Dilogs/VO/Icons/Objects/Animations | 1d? | 2005-01-27 | 2005-01-27 | 585 | 15.88d |
| 587 |  | Настройка | 1d? | 2005-01-28 | 2005-01-28 | 586 | 15.88d |
| 588 | 8.3.5 | **Script 5** | 5d? | 2005-01-24 | 2005-01-28 |  | 15.88d |
| 589 |  | Scenario(text) | 1d? | 2005-01-24 | 2005-01-24 |  | 15.88d |
| 590 |  | Постановка задач | 1d? | 2005-01-25 | 2005-01-25 | 589 | 15.88d |

| ID | WBS | Task | Duration | Start | Finish | Predecessors | Total float |
| --- | --- | --- | --- | --- | --- | --- | --- |
| 591 |  | Implimentation | 1d? | 2005-01-26 | 2005-01-26 | 590 | 15.88d |
| 592 |  | Dilogs/VO/Icons/Objects/Animations | 1d? | 2005-01-27 | 2005-01-27 | 591 | 15.88d |
| 593 |  | Настройка | 1d? | 2005-01-28 | 2005-01-28 | 592 | 15.88d |
| 595 | 9 | **16_Radar_Antena_Control_Undergaround** | 11d? | 2005-02-05 | 2005-02-17 | 517 | 9.88d |
| 596 | 9.1 | **LevelDesign** | 11d? | 2005-02-05 | 2005-02-17 |  | 9.88d |
| 597 | 9.1.1 | **Stage 1** | 11d? | 2005-02-05 | 2005-02-17 |  | 9.88d |
| 598 |  | List of Changes | 2d | 2005-02-05 | 2005-02-07 |  | 9.88d |
| 599 |  | Changed Geometry | 1d? | 2005-02-08 | 2005-02-08 | 598 | 9.88d |
| 600 |  | Check List 1 | 1d? | 2005-02-09 | 2005-02-09 | 599 | 9.88d |
| 601 |  | Check List 2 | 1d? | 2005-02-10 | 2005-02-10 | 600 | 9.88d |
| 602 |  | Check List 3 | 1d? | 2005-02-11 | 2005-02-11 | 601 | 9.88d |
| 603 |  | Check List 4 | 1d? | 2005-02-12 | 2005-02-12 | 602 | 9.88d |
| 604 |  | Render Geometry | 1d? | 2005-02-14 | 2005-02-14 | 603 | 9.88d |
| 605 |  | Grass | 1d? | 2005-02-15 | 2005-02-15 | 604 | 9.88d |
| 606 |  | AI Maps | 1d? | 2005-02-16 | 2005-02-16 | 605 | 9.88d |
| 607 |  | Graphs | 1d? | 2005-02-17 | 2005-02-17 | 606 | 9.88d |
| 609 | 9.2 | **GameDesign** | 3d? | 2005-02-05 | 2005-02-08 |  | 33.88d |
| 610 | 9.2.1 | **Secrets** | 3d? | 2005-02-05 | 2005-02-08 |  | 33.88d |
| 611 | 9.2.1.1 | **Stage 1** | 3d? | 2005-02-05 | 2005-02-08 |  | 33.88d |
| 612 |  | Design | 1d? | 2005-02-05 | 2005-02-05 |  | 33.88d |
| 613 |  | Implementation | 1d? | 2005-02-07 | 2005-02-07 | 612 | 33.88d |
| 614 |  | Tuning | 1d? | 2005-02-08 | 2005-02-08 | 613 | 33.88d |
| 615 | 9.2.2 | **Smartterrains** | 3d? | 2005-02-05 | 2005-02-08 |  | 33.88d |
| 616 | 9.2.2.1 | **Stage 1** | 3d? | 2005-02-05 | 2005-02-08 |  | 33.88d |
| 617 |  | Design | 1d? | 2005-02-05 | 2005-02-05 |  | 33.88d |
| 618 |  | Implementation | 1d? | 2005-02-07 | 2005-02-07 | 617 | 33.88d |
| 619 |  | Tuning | 1d? | 2005-02-08 | 2005-02-08 | 618 | 33.88d |
| 620 | 9.2.3 | **Monsters/Spawns** | 3d? | 2005-02-05 | 2005-02-08 |  | 33.88d |
| 621 | 9.2.3.1 | **Stage 1** | 3d? | 2005-02-05 | 2005-02-08 |  | 33.88d |
| 622 |  | Design | 1d? | 2005-02-05 | 2005-02-05 |  | 33.88d |
| 623 |  | Implementation | 1d? | 2005-02-07 | 2005-02-07 | 622 | 33.88d |
| 624 |  | Tuning | 1d? | 2005-02-08 | 2005-02-08 | 623 | 33.88d |
| 625 | 9.2.4 | **Stalkers/Spawns** | 3d? | 2005-02-05 | 2005-02-08 |  | 33.88d |
| 626 | 9.2.4.1 | **Stage 1** | 3d? | 2005-02-05 | 2005-02-08 |  | 33.88d |
| 627 |  | Design | 1d? | 2005-02-05 | 2005-02-05 |  | 33.88d |
| 628 |  | Implementation | 1d? | 2005-02-07 | 2005-02-07 | 627 | 33.88d |
| 629 |  | Tuning | 1d? | 2005-02-08 | 2005-02-08 | 628 | 33.88d |
| 630 | 9.2.5 | **Anomalies/Spawns** | 3d? | 2005-02-05 | 2005-02-08 |  | 33.88d |
| 631 | 9.2.5.1 | **Stage 1** | 3d? | 2005-02-05 | 2005-02-08 |  | 33.88d |
| 632 |  | Design | 1d? | 2005-02-05 | 2005-02-05 |  | 33.88d |
| 633 |  | Implementation | 1d? | 2005-02-07 | 2005-02-07 | 632 | 33.88d |
| 634 |  | Tuning | 1d? | 2005-02-08 | 2005-02-08 | 633 | 33.88d |
| 635 | 9.2.6 | **Physicks** | 3d? | 2005-02-05 | 2005-02-08 |  | 33.88d |
| 636 | 9.2.6.1 | **Stage 1** | 3d? | 2005-02-05 | 2005-02-08 |  | 33.88d |
| 637 |  | Design | 1d? | 2005-02-05 | 2005-02-05 |  | 33.88d |
| 638 |  | Implementation | 1d? | 2005-02-07 | 2005-02-07 | 637 | 33.88d |
| 639 |  | Tuning | 1d? | 2005-02-08 | 2005-02-08 | 638 | 33.88d |
| 641 | 9.3 | **Scripts** | 5d? | 2005-02-05 | 2005-02-10 |  | 31.88d |
| 642 | 9.3.1 | **Script 1** | 5d? | 2005-02-05 | 2005-02-10 |  | 31.88d |
| 643 |  | Scenario(text) | 1d? | 2005-02-05 | 2005-02-05 |  | 31.88d |
| 644 |  | Постановка задач | 1d? | 2005-02-07 | 2005-02-07 | 643 | 31.88d |
| 645 |  | Implimentation | 1d? | 2005-02-08 | 2005-02-08 | 644 | 31.88d |
| 646 |  | Dilogs/VO/Icons/Objects/Animations | 1d? | 2005-02-09 | 2005-02-09 | 645 | 31.88d |
| 647 |  | Настройка | 1d? | 2005-02-10 | 2005-02-10 | 646 | 31.88d |
| 648 | 9.3.2 | **Script 2** | 5d? | 2005-02-05 | 2005-02-10 |  | 31.88d |
| 649 |  | Scenario(text) | 1d? | 2005-02-05 | 2005-02-05 |  | 31.88d |
| 650 |  | Постановка задач | 1d? | 2005-02-07 | 2005-02-07 | 649 | 31.88d |
| 651 |  | Implimentation | 1d? | 2005-02-08 | 2005-02-08 | 650 | 31.88d |
| 652 |  | Dilogs/VO/Icons/Objects/Animations | 1d? | 2005-02-09 | 2005-02-09 | 651 | 31.88d |
| 653 |  | Настройка | 1d? | 2005-02-10 | 2005-02-10 | 652 | 31.88d |
| 654 | 9.3.3 | **Script 3** | 5d? | 2005-02-05 | 2005-02-10 |  | 31.88d |
| 655 |  | Scenario(text) | 1d? | 2005-02-05 | 2005-02-05 |  | 31.88d |
| 656 |  | Постановка задач | 1d? | 2005-02-07 | 2005-02-07 | 655 | 31.88d |
| 657 |  | Implimentation | 1d? | 2005-02-08 | 2005-02-08 | 656 | 31.88d |
| 658 |  | Dilogs/VO/Icons/Objects/Animations | 1d? | 2005-02-09 | 2005-02-09 | 657 | 31.88d |
| 659 |  | Настройка | 1d? | 2005-02-10 | 2005-02-10 | 658 | 31.88d |
| 660 | 9.3.4 | **Script 4** | 5d? | 2005-02-05 | 2005-02-10 |  | 31.88d |
| 661 |  | Scenario(text) | 1d? | 2005-02-05 | 2005-02-05 |  | 31.88d |
| 662 |  | Постановка задач | 1d? | 2005-02-07 | 2005-02-07 | 661 | 31.88d |
| 663 |  | Implimentation | 1d? | 2005-02-08 | 2005-02-08 | 662 | 31.88d |

| ID | WBS | Task | Duration | Start | Finish | Predecessors | Total float |
| --- | --- | --- | --- | --- | --- | --- | --- |
| 664 |  | Dilogs/VO/Icons/Objects/Animations | 1d? | 2005-02-09 | 2005-02-09 | 663 | 31.88d |
| 665 |  | Настройка | 1d? | 2005-02-10 | 2005-02-10 | 664 | 31.88d |
| 666 | 9.3.5 | **Script 5** | 5d? | 2005-02-05 | 2005-02-10 |  | 31.88d |
| 667 |  | Scenario(text) | 1d? | 2005-02-05 | 2005-02-05 |  | 31.88d |
| 668 |  | Постановка задач | 1d? | 2005-02-07 | 2005-02-07 | 667 | 31.88d |
| 669 |  | Implimentation | 1d? | 2005-02-08 | 2005-02-08 | 668 | 31.88d |
| 670 |  | Dilogs/VO/Icons/Objects/Animations | 1d? | 2005-02-09 | 2005-02-09 | 669 | 31.88d |
| 671 |  | Настройка | 1d? | 2005-02-10 | 2005-02-10 | 670 | 31.88d |
| 673 | 10 | **17_Radar_Monolith_Control_Underground** | 11d? | 2005-02-18 | 2005-03-02 | 595 | 25.88d |
| 674 | 10.1 | **LevelDesign** | 11d? | 2005-02-18 | 2005-03-02 |  | 25.88d |
| 675 | 10.1.1 | **Stage 1** | 11d? | 2005-02-18 | 2005-03-02 |  | 25.88d |
| 676 |  | List of Changes | 2d | 2005-02-18 | 2005-02-19 |  | 25.88d |
| 677 |  | Changed Geometry | 1d? | 2005-02-21 | 2005-02-21 | 676 | 25.88d |
| 678 |  | Check List 1 | 1d? | 2005-02-22 | 2005-02-22 | 677 | 25.88d |
| 679 |  | Check List 2 | 1d? | 2005-02-23 | 2005-02-23 | 678 | 25.88d |
| 680 |  | Check List 3 | 1d? | 2005-02-24 | 2005-02-24 | 679 | 25.88d |
| 681 |  | Check List 4 | 1d? | 2005-02-25 | 2005-02-25 | 680 | 25.88d |
| 682 |  | Render Geometry | 1d? | 2005-02-26 | 2005-02-26 | 681 | 25.88d |
| 683 |  | Grass | 1d? | 2005-02-28 | 2005-02-28 | 682 | 25.88d |
| 684 |  | AI Maps | 1d? | 2005-03-01 | 2005-03-01 | 683 | 25.88d |
| 685 |  | Graphs | 1d? | 2005-03-02 | 2005-03-02 | 684 | 25.88d |
| 687 | 10.2 | **GameDesign** | 3d? | 2005-02-18 | 2005-02-21 |  | 57.88d |
| 688 | 10.2.1 | **Secrets** | 3d? | 2005-02-18 | 2005-02-21 |  | 57.88d |
| 689 | 10.2.1.1 | **Stage 1** | 3d? | 2005-02-18 | 2005-02-21 |  | 57.88d |
| 690 |  | Design | 1d? | 2005-02-18 | 2005-02-18 |  | 57.88d |
| 691 |  | Implementation | 1d? | 2005-02-19 | 2005-02-19 | 690 | 57.88d |
| 692 |  | Tuning | 1d? | 2005-02-21 | 2005-02-21 | 691 | 57.88d |
| 693 | 10.2.2 | **Smartterrains** | 3d? | 2005-02-18 | 2005-02-21 |  | 57.88d |
| 694 | 10.2.2.1 | **Stage 1** | 3d? | 2005-02-18 | 2005-02-21 |  | 57.88d |
| 695 |  | Design | 1d? | 2005-02-18 | 2005-02-18 |  | 57.88d |
| 696 |  | Implementation | 1d? | 2005-02-19 | 2005-02-19 | 695 | 57.88d |
| 697 |  | Tuning | 1d? | 2005-02-21 | 2005-02-21 | 696 | 57.88d |
| 698 | 10.2.3 | **Monsters/Spawns** | 3d? | 2005-02-18 | 2005-02-21 |  | 57.88d |
| 699 | 10.2.3.1 | **Stage 1** | 3d? | 2005-02-18 | 2005-02-21 |  | 57.88d |
| 700 |  | Design | 1d? | 2005-02-18 | 2005-02-18 |  | 57.88d |
| 701 |  | Implementation | 1d? | 2005-02-19 | 2005-02-19 | 700 | 57.88d |
| 702 |  | Tuning | 1d? | 2005-02-21 | 2005-02-21 | 701 | 57.88d |
| 703 | 10.2.4 | **Stalkers/Spawns** | 3d? | 2005-02-18 | 2005-02-21 |  | 57.88d |
| 704 | 10.2.4.1 | **Stage 1** | 3d? | 2005-02-18 | 2005-02-21 |  | 57.88d |
| 705 |  | Design | 1d? | 2005-02-18 | 2005-02-18 |  | 57.88d |
| 706 |  | Implementation | 1d? | 2005-02-19 | 2005-02-19 | 705 | 57.88d |
| 707 |  | Tuning | 1d? | 2005-02-21 | 2005-02-21 | 706 | 57.88d |
| 708 | 10.2.5 | **Anomalies/Spawns** | 3d? | 2005-02-18 | 2005-02-21 |  | 57.88d |
| 709 | 10.2.5.1 | **Stage 1** | 3d? | 2005-02-18 | 2005-02-21 |  | 57.88d |
| 710 |  | Design | 1d? | 2005-02-18 | 2005-02-18 |  | 57.88d |
| 711 |  | Implementation | 1d? | 2005-02-19 | 2005-02-19 | 710 | 57.88d |
| 712 |  | Tuning | 1d? | 2005-02-21 | 2005-02-21 | 711 | 57.88d |
| 713 | 10.2.6 | **Physicks** | 3d? | 2005-02-18 | 2005-02-21 |  | 57.88d |
| 714 | 10.2.6.1 | **Stage 1** | 3d? | 2005-02-18 | 2005-02-21 |  | 57.88d |
| 715 |  | Design | 1d? | 2005-02-18 | 2005-02-18 |  | 57.88d |
| 716 |  | Implementation | 1d? | 2005-02-19 | 2005-02-19 | 715 | 57.88d |
| 717 |  | Tuning | 1d? | 2005-02-21 | 2005-02-21 | 716 | 57.88d |
| 719 | 10.3 | **Scripts** | 5d? | 2005-02-18 | 2005-02-23 |  | 55.88d |
| 720 | 10.3.1 | **Script 1** | 5d? | 2005-02-18 | 2005-02-23 |  | 55.88d |
| 721 |  | Scenario(text) | 1d? | 2005-02-18 | 2005-02-18 |  | 55.88d |
| 722 |  | Постановка задач | 1d? | 2005-02-19 | 2005-02-19 | 721 | 55.88d |
| 723 |  | Implimentation | 1d? | 2005-02-21 | 2005-02-21 | 722 | 55.88d |
| 724 |  | Dilogs/VO/Icons/Objects/Animations | 1d? | 2005-02-22 | 2005-02-22 | 723 | 55.88d |
| 725 |  | Настройка | 1d? | 2005-02-23 | 2005-02-23 | 724 | 55.88d |
| 726 | 10.3.2 | **Script 2** | 5d? | 2005-02-18 | 2005-02-23 |  | 55.88d |
| 727 |  | Scenario(text) | 1d? | 2005-02-18 | 2005-02-18 |  | 55.88d |
| 728 |  | Постановка задач | 1d? | 2005-02-19 | 2005-02-19 | 727 | 55.88d |
| 729 |  | Implimentation | 1d? | 2005-02-21 | 2005-02-21 | 728 | 55.88d |
| 730 |  | Dilogs/VO/Icons/Objects/Animations | 1d? | 2005-02-22 | 2005-02-22 | 729 | 55.88d |
| 731 |  | Настройка | 1d? | 2005-02-23 | 2005-02-23 | 730 | 55.88d |
| 732 | 10.3.3 | **Script 3** | 5d? | 2005-02-18 | 2005-02-23 |  | 55.88d |
| 733 |  | Scenario(text) | 1d? | 2005-02-18 | 2005-02-18 |  | 55.88d |
| 734 |  | Постановка задач | 1d? | 2005-02-19 | 2005-02-19 | 733 | 55.88d |
| 735 |  | Implimentation | 1d? | 2005-02-21 | 2005-02-21 | 734 | 55.88d |
| 736 |  | Dilogs/VO/Icons/Objects/Animations | 1d? | 2005-02-22 | 2005-02-22 | 735 | 55.88d |

| ID | WBS | Task | Duration | Start | Finish | Predecessors | Total float |
| --- | --- | --- | --- | --- | --- | --- | --- |
| 737 |  | Настройка | 1d? | 2005-02-23 | 2005-02-23 | 736 | 55.88d |
| 738 | 10.3.4 | **Script 4** | 5d? | 2005-02-18 | 2005-02-23 |  | 55.88d |
| 739 |  | Scenario(text) | 1d? | 2005-02-18 | 2005-02-18 |  | 55.88d |
| 740 |  | Постановка задач | 1d? | 2005-02-19 | 2005-02-19 | 739 | 55.88d |
| 741 |  | Implimentation | 1d? | 2005-02-21 | 2005-02-21 | 740 | 55.88d |
| 742 |  | Dilogs/VO/Icons/Objects/Animations | 1d? | 2005-02-22 | 2005-02-22 | 741 | 55.88d |
| 743 |  | Настройка | 1d? | 2005-02-23 | 2005-02-23 | 742 | 55.88d |
| 744 | 10.3.5 | **Script 5** | 5d? | 2005-02-18 | 2005-02-23 |  | 55.88d |
| 745 |  | Scenario(text) | 1d? | 2005-02-18 | 2005-02-18 |  | 55.88d |
| 746 |  | Постановка задач | 1d? | 2005-02-19 | 2005-02-19 | 745 | 55.88d |
| 747 |  | Implimentation | 1d? | 2005-02-21 | 2005-02-21 | 746 | 55.88d |
| 748 |  | Dilogs/VO/Icons/Objects/Animations | 1d? | 2005-02-22 | 2005-02-22 | 747 | 55.88d |
| 749 |  | Настройка | 1d? | 2005-02-23 | 2005-02-23 | 748 | 55.88d |
| 755 | 11 | **08_Rostok_Bar** | 11d? | 2005-01-24 | 2005-02-04 |  | -20.12d |
| 756 | 11.1 | **LevelDesign** | 11d? | 2005-01-24 | 2005-02-04 |  | -20.12d |
| 757 | 11.1.1 | **Stage 1** | 11d? | 2005-01-24 | 2005-02-04 |  | -20.12d |
| 758 |  | List of Changes | 2d | 2005-01-24 | 2005-01-25 |  | -20.12d |
| 759 |  | Changed Geometry | 1d? | 2005-01-26 | 2005-01-26 | 758 | -20.12d |
| 760 |  | Check List 1 | 1d? | 2005-01-27 | 2005-01-27 | 759 | -20.12d |
| 761 |  | Check List 2 | 1d? | 2005-01-28 | 2005-01-28 | 760 | -20.12d |
| 762 |  | Check List 3 | 1d? | 2005-01-29 | 2005-01-29 | 761 | -20.12d |
| 763 |  | Check List 4 | 1d? | 2005-01-31 | 2005-01-31 | 762 | -20.12d |
| 764 |  | Render Geometry | 1d? | 2005-02-01 | 2005-02-01 | 763 | -20.12d |
| 765 |  | Grass | 1d? | 2005-02-02 | 2005-02-02 | 764 | -20.12d |
| 766 |  | AI Maps | 1d? | 2005-02-03 | 2005-02-03 | 765 | -20.12d |
| 767 |  | Graphs | 1d? | 2005-02-04 | 2005-02-04 | 766 | -20.12d |
| 769 | 11.2 | **GameDesign** | 3d? | 2005-01-24 | 2005-01-26 |  | -12.12d |
| 770 | 11.2.1 | **Secrets** | 3d? | 2005-01-24 | 2005-01-26 |  | -12.12d |
| 771 | 11.2.1.1 | **Stage 1** | 3d? | 2005-01-24 | 2005-01-26 |  | -12.12d |
| 772 |  | Design | 1d? | 2005-01-24 | 2005-01-24 |  | -12.12d |
| 773 |  | Implementation | 1d? | 2005-01-25 | 2005-01-25 | 772 | -12.12d |
| 774 |  | Tuning | 1d? | 2005-01-26 | 2005-01-26 | 773 | -12.12d |
| 775 | 11.2.2 | **Smartterrains** | 3d? | 2005-01-24 | 2005-01-26 |  | -12.12d |
| 776 | 11.2.2.1 | **Stage 1** | 3d? | 2005-01-24 | 2005-01-26 |  | -12.12d |
| 777 |  | Design | 1d? | 2005-01-24 | 2005-01-24 |  | -12.12d |
| 778 |  | Implementation | 1d? | 2005-01-25 | 2005-01-25 | 777 | -12.12d |
| 779 |  | Tuning | 1d? | 2005-01-26 | 2005-01-26 | 778 | -12.12d |
| 780 | 11.2.3 | **Monsters/Spawns** | 3d? | 2005-01-24 | 2005-01-26 |  | -12.12d |
| 781 | 11.2.3.1 | **Stage 1** | 3d? | 2005-01-24 | 2005-01-26 |  | -12.12d |
| 782 |  | Design | 1d? | 2005-01-24 | 2005-01-24 |  | -12.12d |
| 783 |  | Implementation | 1d? | 2005-01-25 | 2005-01-25 | 782 | -12.12d |
| 784 |  | Tuning | 1d? | 2005-01-26 | 2005-01-26 | 783 | -12.12d |
| 785 | 11.2.4 | **Stalkers/Spawns** | 3d? | 2005-01-24 | 2005-01-26 |  | -12.12d |
| 786 | 11.2.4.1 | **Stage 1** | 3d? | 2005-01-24 | 2005-01-26 |  | -12.12d |
| 787 |  | Design | 1d? | 2005-01-24 | 2005-01-24 |  | -12.12d |
| 788 |  | Implementation | 1d? | 2005-01-25 | 2005-01-25 | 787 | -12.12d |
| 789 |  | Tuning | 1d? | 2005-01-26 | 2005-01-26 | 788 | -12.12d |
| 790 | 11.2.5 | **Anomalies/Spawns** | 3d? | 2005-01-24 | 2005-01-26 |  | -12.12d |
| 791 | 11.2.5.1 | **Stage 1** | 3d? | 2005-01-24 | 2005-01-26 |  | -12.12d |
| 792 |  | Design | 1d? | 2005-01-24 | 2005-01-24 |  | -12.12d |
| 793 |  | Implementation | 1d? | 2005-01-25 | 2005-01-25 | 792 | -12.12d |
| 794 |  | Tuning | 1d? | 2005-01-26 | 2005-01-26 | 793 | -12.12d |
| 795 | 11.2.6 | **Physicks** | 3d? | 2005-01-24 | 2005-01-26 |  | -12.12d |
| 796 | 11.2.6.1 | **Stage 1** | 3d? | 2005-01-24 | 2005-01-26 |  | -12.12d |
| 797 |  | Design | 1d? | 2005-01-24 | 2005-01-24 |  | -12.12d |
| 798 |  | Implementation | 1d? | 2005-01-25 | 2005-01-25 | 797 | -12.12d |
| 799 |  | Tuning | 1d? | 2005-01-26 | 2005-01-26 | 798 | -12.12d |
| 801 | 11.3 | **Scripts** | 5d? | 2005-01-24 | 2005-01-28 |  | -14.12d |
| 802 | 11.3.1 | **Script 1** | 5d? | 2005-01-24 | 2005-01-28 |  | -14.12d |
| 803 |  | Scenario(text) | 1d? | 2005-01-24 | 2005-01-24 |  | -14.12d |
| 804 |  | Постановка задач | 1d? | 2005-01-25 | 2005-01-25 | 803 | -14.12d |
| 805 |  | Implimentation | 1d? | 2005-01-26 | 2005-01-26 | 804 | -14.12d |
| 806 |  | Dilogs/VO/Icons/Objects/Animations | 1d? | 2005-01-27 | 2005-01-27 | 805 | -14.12d |
| 807 |  | Настройка | 1d? | 2005-01-28 | 2005-01-28 | 806 | -14.12d |
| 808 | 11.3.2 | **Script 2** | 5d? | 2005-01-24 | 2005-01-28 |  | -14.12d |
| 809 |  | Scenario(text) | 1d? | 2005-01-24 | 2005-01-24 |  | -14.12d |
| 810 |  | Постановка задач | 1d? | 2005-01-25 | 2005-01-25 | 809 | -14.12d |
| 811 |  | Implimentation | 1d? | 2005-01-26 | 2005-01-26 | 810 | -14.12d |
| 812 |  | Dilogs/VO/Icons/Objects/Animations | 1d? | 2005-01-27 | 2005-01-27 | 811 | -14.12d |
| 813 |  | Настройка | 1d? | 2005-01-28 | 2005-01-28 | 812 | -14.12d |

| ID | WBS | Task | Duration | Start | Finish | Predecessors | Total float |
| --- | --- | --- | --- | --- | --- | --- | --- |
| 814 | 11.3.3 | **Script 3** | 5d? | 2005-01-24 | 2005-01-28 |  | -14.12d |
| 815 |  | Scenario(text) | 1d? | 2005-01-24 | 2005-01-24 |  | -14.12d |
| 816 |  | Постановка задач | 1d? | 2005-01-25 | 2005-01-25 | 815 | -14.12d |
| 817 |  | Implimentation | 1d? | 2005-01-26 | 2005-01-26 | 816 | -14.12d |
| 818 |  | Dilogs/VO/Icons/Objects/Animations | 1d? | 2005-01-27 | 2005-01-27 | 817 | -14.12d |
| 819 |  | Настройка | 1d? | 2005-01-28 | 2005-01-28 | 818 | -14.12d |
| 820 | 11.3.4 | **Script 4** | 5d? | 2005-01-24 | 2005-01-28 |  | -14.12d |
| 821 |  | Scenario(text) | 1d? | 2005-01-24 | 2005-01-24 |  | -14.12d |
| 822 |  | Постановка задач | 1d? | 2005-01-25 | 2005-01-25 | 821 | -14.12d |
| 823 |  | Implimentation | 1d? | 2005-01-26 | 2005-01-26 | 822 | -14.12d |
| 824 |  | Dilogs/VO/Icons/Objects/Animations | 1d? | 2005-01-27 | 2005-01-27 | 823 | -14.12d |
| 825 |  | Настройка | 1d? | 2005-01-28 | 2005-01-28 | 824 | -14.12d |
| 826 | 11.3.5 | **Script 5** | 5d? | 2005-01-24 | 2005-01-28 |  | -14.12d |
| 827 |  | Scenario(text) | 1d? | 2005-01-24 | 2005-01-24 |  | -14.12d |
| 828 |  | Постановка задач | 1d? | 2005-01-25 | 2005-01-25 | 827 | -14.12d |
| 829 |  | Implimentation | 1d? | 2005-01-26 | 2005-01-26 | 828 | -14.12d |
| 830 |  | Dilogs/VO/Icons/Objects/Animations | 1d? | 2005-01-27 | 2005-01-27 | 829 | -14.12d |
| 831 |  | Настройка | 1d? | 2005-01-28 | 2005-01-28 | 830 | -14.12d |
| 833 | 12 | **09_Rostok_Dolg** | 11d? | 2005-02-05 | 2005-02-17 | 755 | -20.12d |
| 834 | 12.1 | **LevelDesign** | 11d? | 2005-02-05 | 2005-02-17 |  | -20.12d |
| 835 | 12.1.1 | **Stage 1** | 11d? | 2005-02-05 | 2005-02-17 |  | -20.12d |
| 836 |  | List of Changes | 2d | 2005-02-05 | 2005-02-07 |  | -20.12d |
| 837 |  | Changed Geometry | 1d? | 2005-02-08 | 2005-02-08 | 836 | -20.12d |
| 838 |  | Check List 1 | 1d? | 2005-02-09 | 2005-02-09 | 837 | -20.12d |
| 839 |  | Check List 2 | 1d? | 2005-02-10 | 2005-02-10 | 838 | -20.12d |
| 840 |  | Check List 3 | 1d? | 2005-02-11 | 2005-02-11 | 839 | -20.12d |
| 841 |  | Check List 4 | 1d? | 2005-02-12 | 2005-02-12 | 840 | -20.12d |
| 842 |  | Render Geometry | 1d? | 2005-02-14 | 2005-02-14 | 841 | -20.12d |
| 843 |  | Grass | 1d? | 2005-02-15 | 2005-02-15 | 842 | -20.12d |
| 844 |  | AI Maps | 1d? | 2005-02-16 | 2005-02-16 | 843 | -20.12d |
| 845 |  | Graphs | 1d? | 2005-02-17 | 2005-02-17 | 844 | -20.12d |
| 847 | 12.2 | **GameDesign** | 3d? | 2005-02-05 | 2005-02-08 |  | -12.12d |
| 848 | 12.2.1 | **Secrets** | 3d? | 2005-02-05 | 2005-02-08 |  | -12.12d |
| 849 | 12.2.1.1 | **Stage 1** | 3d? | 2005-02-05 | 2005-02-08 |  | -12.12d |
| 850 |  | Design | 1d? | 2005-02-05 | 2005-02-05 |  | -12.12d |
| 851 |  | Implementation | 1d? | 2005-02-07 | 2005-02-07 | 850 | -12.12d |
| 852 |  | Tuning | 1d? | 2005-02-08 | 2005-02-08 | 851 | -12.12d |
| 853 | 12.2.2 | **Smartterrains** | 3d? | 2005-02-05 | 2005-02-08 |  | -12.12d |
| 854 | 12.2.2.1 | **Stage 1** | 3d? | 2005-02-05 | 2005-02-08 |  | -12.12d |
| 855 |  | Design | 1d? | 2005-02-05 | 2005-02-05 |  | -12.12d |
| 856 |  | Implementation | 1d? | 2005-02-07 | 2005-02-07 | 855 | -12.12d |
| 857 |  | Tuning | 1d? | 2005-02-08 | 2005-02-08 | 856 | -12.12d |
| 858 | 12.2.3 | **Monsters/Spawns** | 3d? | 2005-02-05 | 2005-02-08 |  | -12.12d |
| 859 | 12.2.3.1 | **Stage 1** | 3d? | 2005-02-05 | 2005-02-08 |  | -12.12d |
| 860 |  | Design | 1d? | 2005-02-05 | 2005-02-05 |  | -12.12d |
| 861 |  | Implementation | 1d? | 2005-02-07 | 2005-02-07 | 860 | -12.12d |
| 862 |  | Tuning | 1d? | 2005-02-08 | 2005-02-08 | 861 | -12.12d |
| 863 | 12.2.4 | **Stalkers/Spawns** | 3d? | 2005-02-05 | 2005-02-08 |  | -12.12d |
| 864 | 12.2.4.1 | **Stage 1** | 3d? | 2005-02-05 | 2005-02-08 |  | -12.12d |
| 865 |  | Design | 1d? | 2005-02-05 | 2005-02-05 |  | -12.12d |
| 866 |  | Implementation | 1d? | 2005-02-07 | 2005-02-07 | 865 | -12.12d |
| 867 |  | Tuning | 1d? | 2005-02-08 | 2005-02-08 | 866 | -12.12d |
| 868 | 12.2.5 | **Anomalies/Spawns** | 3d? | 2005-02-05 | 2005-02-08 |  | -12.12d |
| 869 | 12.2.5.1 | **Stage 1** | 3d? | 2005-02-05 | 2005-02-08 |  | -12.12d |
| 870 |  | Design | 1d? | 2005-02-05 | 2005-02-05 |  | -12.12d |
| 871 |  | Implementation | 1d? | 2005-02-07 | 2005-02-07 | 870 | -12.12d |
| 872 |  | Tuning | 1d? | 2005-02-08 | 2005-02-08 | 871 | -12.12d |
| 873 | 12.2.6 | **Physicks** | 3d? | 2005-02-05 | 2005-02-08 |  | -12.12d |
| 874 | 12.2.6.1 | **Stage 1** | 3d? | 2005-02-05 | 2005-02-08 |  | -12.12d |
| 875 |  | Design | 1d? | 2005-02-05 | 2005-02-05 |  | -12.12d |
| 876 |  | Implementation | 1d? | 2005-02-07 | 2005-02-07 | 875 | -12.12d |
| 877 |  | Tuning | 1d? | 2005-02-08 | 2005-02-08 | 876 | -12.12d |
| 879 | 12.3 | **Scripts** | 5d? | 2005-02-05 | 2005-02-10 |  | -14.12d |
| 880 | 12.3.1 | **Script 1** | 5d? | 2005-02-05 | 2005-02-10 |  | -14.12d |
| 881 |  | Scenario(text) | 1d? | 2005-02-05 | 2005-02-05 |  | -14.12d |
| 882 |  | Постановка задач | 1d? | 2005-02-07 | 2005-02-07 | 881 | -14.12d |
| 883 |  | Implimentation | 1d? | 2005-02-08 | 2005-02-08 | 882 | -14.12d |
| 884 |  | Dilogs/VO/Icons/Objects/Animations | 1d? | 2005-02-09 | 2005-02-09 | 883 | -14.12d |
| 885 |  | Настройка | 1d? | 2005-02-10 | 2005-02-10 | 884 | -14.12d |
| 886 | 12.3.2 | **Script 2** | 5d? | 2005-02-05 | 2005-02-10 |  | -14.12d |

| ID | WBS | Task | Duration | Start | Finish | Predecessors | Total float |
| --- | --- | --- | --- | --- | --- | --- | --- |
| 887 |  | Scenario(text) | 1d? | 2005-02-05 | 2005-02-05 |  | -14.12d |
| 888 |  | Постановка задач | 1d? | 2005-02-07 | 2005-02-07 | 887 | -14.12d |
| 889 |  | Implimentation | 1d? | 2005-02-08 | 2005-02-08 | 888 | -14.12d |
| 890 |  | Dilogs/VO/Icons/Objects/Animations | 1d? | 2005-02-09 | 2005-02-09 | 889 | -14.12d |
| 891 |  | Настройка | 1d? | 2005-02-10 | 2005-02-10 | 890 | -14.12d |
| 892 | 12.3.3 | **Script 3** | 5d? | 2005-02-05 | 2005-02-10 |  | -14.12d |
| 893 |  | Scenario(text) | 1d? | 2005-02-05 | 2005-02-05 |  | -14.12d |
| 894 |  | Постановка задач | 1d? | 2005-02-07 | 2005-02-07 | 893 | -14.12d |
| 895 |  | Implimentation | 1d? | 2005-02-08 | 2005-02-08 | 894 | -14.12d |
| 896 |  | Dilogs/VO/Icons/Objects/Animations | 1d? | 2005-02-09 | 2005-02-09 | 895 | -14.12d |
| 897 |  | Настройка | 1d? | 2005-02-10 | 2005-02-10 | 896 | -14.12d |
| 898 | 12.3.4 | **Script 4** | 5d? | 2005-02-05 | 2005-02-10 |  | -14.12d |
| 899 |  | Scenario(text) | 1d? | 2005-02-05 | 2005-02-05 |  | -14.12d |
| 900 |  | Постановка задач | 1d? | 2005-02-07 | 2005-02-07 | 899 | -14.12d |
| 901 |  | Implimentation | 1d? | 2005-02-08 | 2005-02-08 | 900 | -14.12d |
| 902 |  | Dilogs/VO/Icons/Objects/Animations | 1d? | 2005-02-09 | 2005-02-09 | 901 | -14.12d |
| 903 |  | Настройка | 1d? | 2005-02-10 | 2005-02-10 | 902 | -14.12d |
| 904 | 12.3.5 | **Script 5** | 5d? | 2005-02-05 | 2005-02-10 |  | -14.12d |
| 905 |  | Scenario(text) | 1d? | 2005-02-05 | 2005-02-05 |  | -14.12d |
| 906 |  | Постановка задач | 1d? | 2005-02-07 | 2005-02-07 | 905 | -14.12d |
| 907 |  | Implimentation | 1d? | 2005-02-08 | 2005-02-08 | 906 | -14.12d |
| 908 |  | Dilogs/VO/Icons/Objects/Animations | 1d? | 2005-02-09 | 2005-02-09 | 907 | -14.12d |
| 909 |  | Настройка | 1d? | 2005-02-10 | 2005-02-10 | 908 | -14.12d |
| 912 | 13 | **07_Rostok** | 11d? | 2005-02-18 | 2005-03-02 | 833 | -20.12d |
| 913 | 13.1 | **LevelDesign** | 11d? | 2005-02-18 | 2005-03-02 |  | -20.12d |
| 914 | 13.1.1 | **Stage 1** | 11d? | 2005-02-18 | 2005-03-02 |  | -20.12d |
| 915 |  | List of Changes | 2d | 2005-02-18 | 2005-02-19 |  | -20.12d |
| 916 |  | Changed Geometry | 1d? | 2005-02-21 | 2005-02-21 | 915 | -20.12d |
| 917 |  | Check List 1 | 1d? | 2005-02-22 | 2005-02-22 | 916 | -20.12d |
| 918 |  | Check List 2 | 1d? | 2005-02-23 | 2005-02-23 | 917 | -20.12d |
| 919 |  | Check List 3 | 1d? | 2005-02-24 | 2005-02-24 | 918 | -20.12d |
| 920 |  | Check List 4 | 1d? | 2005-02-25 | 2005-02-25 | 919 | -20.12d |
| 921 |  | Render Geometry | 1d? | 2005-02-26 | 2005-02-26 | 920 | -20.12d |
| 922 |  | Grass | 1d? | 2005-02-28 | 2005-02-28 | 921 | -20.12d |
| 923 |  | AI Maps | 1d? | 2005-03-01 | 2005-03-01 | 922 | -20.12d |
| 924 |  | Graphs | 1d? | 2005-03-02 | 2005-03-02 | 923 | -20.12d |
| 926 | 13.2 | **GameDesign** | 3d? | 2005-02-18 | 2005-02-21 |  | 7.88d |
| 927 | 13.2.1 | **Secrets** | 3d? | 2005-02-18 | 2005-02-21 |  | 7.88d |
| 928 | 13.2.1.1 | **Stage 1** | 3d? | 2005-02-18 | 2005-02-21 |  | 7.88d |
| 929 |  | Design | 1d? | 2005-02-18 | 2005-02-18 |  | 7.88d |
| 930 |  | Implementation | 1d? | 2005-02-19 | 2005-02-19 | 929 | 7.88d |
| 931 |  | Tuning | 1d? | 2005-02-21 | 2005-02-21 | 930 | 7.88d |
| 932 | 13.2.2 | **Smartterrains** | 3d? | 2005-02-18 | 2005-02-21 |  | 7.88d |
| 933 | 13.2.2.1 | **Stage 1** | 3d? | 2005-02-18 | 2005-02-21 |  | 7.88d |
| 934 |  | Design | 1d? | 2005-02-18 | 2005-02-18 |  | 7.88d |
| 935 |  | Implementation | 1d? | 2005-02-19 | 2005-02-19 | 934 | 7.88d |
| 936 |  | Tuning | 1d? | 2005-02-21 | 2005-02-21 | 935 | 7.88d |
| 937 | 13.2.3 | **Monsters/Spawns** | 3d? | 2005-02-18 | 2005-02-21 |  | 7.88d |
| 938 | 13.2.3.1 | **Stage 1** | 3d? | 2005-02-18 | 2005-02-21 |  | 7.88d |
| 939 |  | Design | 1d? | 2005-02-18 | 2005-02-18 |  | 7.88d |
| 940 |  | Implementation | 1d? | 2005-02-19 | 2005-02-19 | 939 | 7.88d |
| 941 |  | Tuning | 1d? | 2005-02-21 | 2005-02-21 | 940 | 7.88d |
| 942 | 13.2.4 | **Stalkers/Spawns** | 3d? | 2005-02-18 | 2005-02-21 |  | 7.88d |
| 943 | 13.2.4.1 | **Stage 1** | 3d? | 2005-02-18 | 2005-02-21 |  | 7.88d |
| 944 |  | Design | 1d? | 2005-02-18 | 2005-02-18 |  | 7.88d |
| 945 |  | Implementation | 1d? | 2005-02-19 | 2005-02-19 | 944 | 7.88d |
| 946 |  | Tuning | 1d? | 2005-02-21 | 2005-02-21 | 945 | 7.88d |
| 947 | 13.2.5 | **Anomalies/Spawns** | 3d? | 2005-02-18 | 2005-02-21 |  | 7.88d |
| 948 | 13.2.5.1 | **Stage 1** | 3d? | 2005-02-18 | 2005-02-21 |  | 7.88d |
| 949 |  | Design | 1d? | 2005-02-18 | 2005-02-18 |  | 7.88d |
| 950 |  | Implementation | 1d? | 2005-02-19 | 2005-02-19 | 949 | 7.88d |
| 951 |  | Tuning | 1d? | 2005-02-21 | 2005-02-21 | 950 | 7.88d |
| 952 | 13.2.6 | **Physicks** | 3d? | 2005-02-18 | 2005-02-21 |  | 7.88d |
| 953 | 13.2.6.1 | **Stage 1** | 3d? | 2005-02-18 | 2005-02-21 |  | 7.88d |
| 954 |  | Design | 1d? | 2005-02-18 | 2005-02-18 |  | 7.88d |
| 955 |  | Implementation | 1d? | 2005-02-19 | 2005-02-19 | 954 | 7.88d |
| 956 |  | Tuning | 1d? | 2005-02-21 | 2005-02-21 | 955 | 7.88d |
| 958 | 13.3 | **Scripts** | 5d? | 2005-02-18 | 2005-02-23 |  | 5.88d |
| 959 | 13.3.1 | **Script 1** | 5d? | 2005-02-18 | 2005-02-23 |  | 5.88d |
| 960 |  | Scenario(text) | 1d? | 2005-02-18 | 2005-02-18 |  | 5.88d |

| ID | WBS | Task | Duration | Start | Finish | Predecessors | Total float |
| --- | --- | --- | --- | --- | --- | --- | --- |
| 961 |  | Постановка задач | 1d? | 2005-02-19 | 2005-02-19 | 960 | 5.88d |
| 962 |  | Implimentation | 1d? | 2005-02-21 | 2005-02-21 | 961 | 5.88d |
| 963 |  | Dilogs/VO/Icons/Objects/Animations | 1d? | 2005-02-22 | 2005-02-22 | 962 | 5.88d |
| 964 |  | Настройка | 1d? | 2005-02-23 | 2005-02-23 | 963 | 5.88d |
| 965 | 13.3.2 | **Script 2** | 5d? | 2005-02-18 | 2005-02-23 |  | 5.88d |
| 966 |  | Scenario(text) | 1d? | 2005-02-18 | 2005-02-18 |  | 5.88d |
| 967 |  | Постановка задач | 1d? | 2005-02-19 | 2005-02-19 | 966 | 5.88d |
| 968 |  | Implimentation | 1d? | 2005-02-21 | 2005-02-21 | 967 | 5.88d |
| 969 |  | Dilogs/VO/Icons/Objects/Animations | 1d? | 2005-02-22 | 2005-02-22 | 968 | 5.88d |
| 970 |  | Настройка | 1d? | 2005-02-23 | 2005-02-23 | 969 | 5.88d |
| 971 | 13.3.3 | **Script 3** | 5d? | 2005-02-18 | 2005-02-23 |  | 5.88d |
| 972 |  | Scenario(text) | 1d? | 2005-02-18 | 2005-02-18 |  | 5.88d |
| 973 |  | Постановка задач | 1d? | 2005-02-19 | 2005-02-19 | 972 | 5.88d |
| 974 |  | Implimentation | 1d? | 2005-02-21 | 2005-02-21 | 973 | 5.88d |
| 975 |  | Dilogs/VO/Icons/Objects/Animations | 1d? | 2005-02-22 | 2005-02-22 | 974 | 5.88d |
| 976 |  | Настройка | 1d? | 2005-02-23 | 2005-02-23 | 975 | 5.88d |
| 977 | 13.3.4 | **Script 4** | 5d? | 2005-02-18 | 2005-02-23 |  | 5.88d |
| 978 |  | Scenario(text) | 1d? | 2005-02-18 | 2005-02-18 |  | 5.88d |
| 979 |  | Постановка задач | 1d? | 2005-02-19 | 2005-02-19 | 978 | 5.88d |
| 980 |  | Implimentation | 1d? | 2005-02-21 | 2005-02-21 | 979 | 5.88d |
| 981 |  | Dilogs/VO/Icons/Objects/Animations | 1d? | 2005-02-22 | 2005-02-22 | 980 | 5.88d |
| 982 |  | Настройка | 1d? | 2005-02-23 | 2005-02-23 | 981 | 5.88d |
| 983 | 13.3.5 | **Script 5** | 5d? | 2005-02-18 | 2005-02-23 |  | 5.88d |
| 984 |  | Scenario(text) | 1d? | 2005-02-18 | 2005-02-18 |  | 5.88d |
| 985 |  | Постановка задач | 1d? | 2005-02-19 | 2005-02-19 | 984 | 5.88d |
| 986 |  | Implimentation | 1d? | 2005-02-21 | 2005-02-21 | 985 | 5.88d |
| 987 |  | Dilogs/VO/Icons/Objects/Animations | 1d? | 2005-02-22 | 2005-02-22 | 986 | 5.88d |
| 988 |  | Настройка | 1d? | 2005-02-23 | 2005-02-23 | 987 | 5.88d |
| 990 | 14 | **11_Yantar** | 11d? | 2005-03-03 | 2005-03-15 | 912 | -0.12d |
| 991 | 14.1 | **LevelDesign** | 11d? | 2005-03-03 | 2005-03-15 |  | -0.12d |
| 992 | 14.1.1 | **Stage 1** | 11d? | 2005-03-03 | 2005-03-15 |  | -0.12d |
| 993 |  | List of Changes | 2d | 2005-03-03 | 2005-03-04 |  | -0.12d |
| 994 |  | Changed Geometry | 1d? | 2005-03-05 | 2005-03-05 | 993 | -0.12d |
| 995 |  | Check List 1 | 1d? | 2005-03-07 | 2005-03-07 | 994 | -0.12d |
| 996 |  | Check List 2 | 1d? | 2005-03-08 | 2005-03-08 | 995 | -0.12d |
| 997 |  | Check List 3 | 1d? | 2005-03-09 | 2005-03-09 | 996 | -0.12d |
| 998 |  | Check List 4 | 1d? | 2005-03-10 | 2005-03-10 | 997 | -0.12d |
| 999 |  | Render Geometry | 1d? | 2005-03-11 | 2005-03-11 | 998 | -0.12d |
| 1000 |  | Grass | 1d? | 2005-03-12 | 2005-03-12 | 999 | -0.12d |
| 1001 |  | AI Maps | 1d? | 2005-03-14 | 2005-03-14 | 1000 | -0.12d |
| 1002 |  | Graphs | 1d? | 2005-03-15 | 2005-03-15 | 1001 | -0.12d |
| 1004 | 14.2 | **GameDesign** | 3d? | 2005-03-03 | 2005-03-05 |  | 23.88d |
| 1005 | 14.2.1 | **Secrets** | 3d? | 2005-03-03 | 2005-03-05 |  | 23.88d |
| 1006 | 14.2.1.1 | **Stage 1** | 3d? | 2005-03-03 | 2005-03-05 |  | 23.88d |
| 1007 |  | Design | 1d? | 2005-03-03 | 2005-03-03 |  | 23.88d |
| 1008 |  | Implementation | 1d? | 2005-03-04 | 2005-03-04 | 1007 | 23.88d |
| 1009 |  | Tuning | 1d? | 2005-03-05 | 2005-03-05 | 1008 | 23.88d |
| 1010 | 14.2.2 | **Smartterrains** | 3d? | 2005-03-03 | 2005-03-05 |  | 23.88d |
| 1011 | 14.2.2.1 | **Stage 1** | 3d? | 2005-03-03 | 2005-03-05 |  | 23.88d |
| 1012 |  | Design | 1d? | 2005-03-03 | 2005-03-03 |  | 23.88d |
| 1013 |  | Implementation | 1d? | 2005-03-04 | 2005-03-04 | 1012 | 23.88d |
| 1014 |  | Tuning | 1d? | 2005-03-05 | 2005-03-05 | 1013 | 23.88d |
| 1015 | 14.2.3 | **Monsters/Spawns** | 3d? | 2005-03-03 | 2005-03-05 |  | 23.88d |
| 1016 | 14.2.3.1 | **Stage 1** | 3d? | 2005-03-03 | 2005-03-05 |  | 23.88d |
| 1017 |  | Design | 1d? | 2005-03-03 | 2005-03-03 |  | 23.88d |
| 1018 |  | Implementation | 1d? | 2005-03-04 | 2005-03-04 | 1017 | 23.88d |
| 1019 |  | Tuning | 1d? | 2005-03-05 | 2005-03-05 | 1018 | 23.88d |
| 1020 | 14.2.4 | **Stalkers/Spawns** | 3d? | 2005-03-03 | 2005-03-05 |  | 23.88d |
| 1021 | 14.2.4.1 | **Stage 1** | 3d? | 2005-03-03 | 2005-03-05 |  | 23.88d |
| 1022 |  | Design | 1d? | 2005-03-03 | 2005-03-03 |  | 23.88d |
| 1023 |  | Implementation | 1d? | 2005-03-04 | 2005-03-04 | 1022 | 23.88d |
| 1024 |  | Tuning | 1d? | 2005-03-05 | 2005-03-05 | 1023 | 23.88d |
| 1025 | 14.2.5 | **Anomalies/Spawns** | 3d? | 2005-03-03 | 2005-03-05 |  | 23.88d |
| 1026 | 14.2.5.1 | **Stage 1** | 3d? | 2005-03-03 | 2005-03-05 |  | 23.88d |
| 1027 |  | Design | 1d? | 2005-03-03 | 2005-03-03 |  | 23.88d |
| 1028 |  | Implementation | 1d? | 2005-03-04 | 2005-03-04 | 1027 | 23.88d |
| 1029 |  | Tuning | 1d? | 2005-03-05 | 2005-03-05 | 1028 | 23.88d |
| 1030 | 14.2.6 | **Physicks** | 3d? | 2005-03-03 | 2005-03-05 |  | 23.88d |
| 1031 | 14.2.6.1 | **Stage 1** | 3d? | 2005-03-03 | 2005-03-05 |  | 23.88d |
| 1032 |  | Design | 1d? | 2005-03-03 | 2005-03-03 |  | 23.88d |

| ID | WBS | Task | Duration | Start | Finish | Predecessors | Total float |
| --- | --- | --- | --- | --- | --- | --- | --- |
| 1033 |  | Implementation | 1d? | 2005-03-04 | 2005-03-04 | 1032 | 23.88d |
| 1034 |  | Tuning | 1d? | 2005-03-05 | 2005-03-05 | 1033 | 23.88d |
| 1036 | 14.3 | **Scripts** | 5d? | 2005-03-03 | 2005-03-08 |  | 21.88d |
| 1037 | 14.3.1 | **Script 1** | 5d? | 2005-03-03 | 2005-03-08 |  | 21.88d |
| 1038 |  | Scenario(text) | 1d? | 2005-03-03 | 2005-03-03 |  | 21.88d |
| 1039 |  | Постановка задач | 1d? | 2005-03-04 | 2005-03-04 | 1038 | 21.88d |
| 1040 |  | Implimentation | 1d? | 2005-03-05 | 2005-03-05 | 1039 | 21.88d |
| 1041 |  | Dilogs/VO/Icons/Objects/Animations | 1d? | 2005-03-07 | 2005-03-07 | 1040 | 21.88d |
| 1042 |  | Настройка | 1d? | 2005-03-08 | 2005-03-08 | 1041 | 21.88d |
| 1043 | 14.3.2 | **Script 2** | 5d? | 2005-03-03 | 2005-03-08 |  | 21.88d |
| 1044 |  | Scenario(text) | 1d? | 2005-03-03 | 2005-03-03 |  | 21.88d |
| 1045 |  | Постановка задач | 1d? | 2005-03-04 | 2005-03-04 | 1044 | 21.88d |
| 1046 |  | Implimentation | 1d? | 2005-03-05 | 2005-03-05 | 1045 | 21.88d |
| 1047 |  | Dilogs/VO/Icons/Objects/Animations | 1d? | 2005-03-07 | 2005-03-07 | 1046 | 21.88d |
| 1048 |  | Настройка | 1d? | 2005-03-08 | 2005-03-08 | 1047 | 21.88d |
| 1049 | 14.3.3 | **Script 3** | 5d? | 2005-03-03 | 2005-03-08 |  | 21.88d |
| 1050 |  | Scenario(text) | 1d? | 2005-03-03 | 2005-03-03 |  | 21.88d |
| 1051 |  | Постановка задач | 1d? | 2005-03-04 | 2005-03-04 | 1050 | 21.88d |
| 1052 |  | Implimentation | 1d? | 2005-03-05 | 2005-03-05 | 1051 | 21.88d |
| 1053 |  | Dilogs/VO/Icons/Objects/Animations | 1d? | 2005-03-07 | 2005-03-07 | 1052 | 21.88d |
| 1054 |  | Настройка | 1d? | 2005-03-08 | 2005-03-08 | 1053 | 21.88d |
| 1055 | 14.3.4 | **Script 4** | 5d? | 2005-03-03 | 2005-03-08 |  | 21.88d |
| 1056 |  | Scenario(text) | 1d? | 2005-03-03 | 2005-03-03 |  | 21.88d |
| 1057 |  | Постановка задач | 1d? | 2005-03-04 | 2005-03-04 | 1056 | 21.88d |
| 1058 |  | Implimentation | 1d? | 2005-03-05 | 2005-03-05 | 1057 | 21.88d |
| 1059 |  | Dilogs/VO/Icons/Objects/Animations | 1d? | 2005-03-07 | 2005-03-07 | 1058 | 21.88d |
| 1060 |  | Настройка | 1d? | 2005-03-08 | 2005-03-08 | 1059 | 21.88d |
| 1061 | 14.3.5 | **Script 5** | 5d? | 2005-03-03 | 2005-03-08 |  | 21.88d |
| 1062 |  | Scenario(text) | 1d? | 2005-03-03 | 2005-03-03 |  | 21.88d |
| 1063 |  | Постановка задач | 1d? | 2005-03-04 | 2005-03-04 | 1062 | 21.88d |
| 1064 |  | Implimentation | 1d? | 2005-03-05 | 2005-03-05 | 1063 | 21.88d |
| 1065 |  | Dilogs/VO/Icons/Objects/Animations | 1d? | 2005-03-07 | 2005-03-07 | 1064 | 21.88d |
| 1066 |  | Настройка | 1d? | 2005-03-08 | 2005-03-08 | 1065 | 21.88d |
| 1068 | 15 | **22_Warlab** | 11d? | 2005-03-16 | 2005-03-28 | 990 | 15.88d |
| 1069 | 15.1 | **LevelDesign** | 11d? | 2005-03-16 | 2005-03-28 |  | 15.88d |
| 1070 | 15.1.1 | **Stage 1** | 11d? | 2005-03-16 | 2005-03-28 |  | 15.88d |
| 1071 |  | List of Changes | 2d | 2005-03-16 | 2005-03-17 |  | 15.88d |
| 1072 |  | Changed Geometry | 1d? | 2005-03-18 | 2005-03-18 | 1071 | 15.88d |
| 1073 |  | Check List 1 | 1d? | 2005-03-19 | 2005-03-19 | 1072 | 15.88d |
| 1074 |  | Check List 2 | 1d? | 2005-03-21 | 2005-03-21 | 1073 | 15.88d |
| 1075 |  | Check List 3 | 1d? | 2005-03-22 | 2005-03-22 | 1074 | 15.88d |
| 1076 |  | Check List 4 | 1d? | 2005-03-23 | 2005-03-23 | 1075 | 15.88d |
| 1077 |  | Render Geometry | 1d? | 2005-03-24 | 2005-03-24 | 1076 | 15.88d |
| 1078 |  | Grass | 1d? | 2005-03-25 | 2005-03-25 | 1077 | 15.88d |
| 1079 |  | AI Maps | 1d? | 2005-03-26 | 2005-03-26 | 1078 | 15.88d |
| 1080 |  | Graphs | 1d? | 2005-03-28 | 2005-03-28 | 1079 | 15.88d |
| 1082 | 15.2 | **GameDesign** | 3d? | 2005-03-16 | 2005-03-18 |  | 47.88d |
| 1083 | 15.2.1 | **Secrets** | 3d? | 2005-03-16 | 2005-03-18 |  | 47.88d |
| 1084 | 15.2.1.1 | **Stage 1** | 3d? | 2005-03-16 | 2005-03-18 |  | 47.88d |
| 1085 |  | Design | 1d? | 2005-03-16 | 2005-03-16 |  | 47.88d |
| 1086 |  | Implementation | 1d? | 2005-03-17 | 2005-03-17 | 1085 | 47.88d |
| 1087 |  | Tuning | 1d? | 2005-03-18 | 2005-03-18 | 1086 | 47.88d |
| 1088 | 15.2.2 | **Smartterrains** | 3d? | 2005-03-16 | 2005-03-18 |  | 47.88d |
| 1089 | 15.2.2.1 | **Stage 1** | 3d? | 2005-03-16 | 2005-03-18 |  | 47.88d |
| 1090 |  | Design | 1d? | 2005-03-16 | 2005-03-16 |  | 47.88d |
| 1091 |  | Implementation | 1d? | 2005-03-17 | 2005-03-17 | 1090 | 47.88d |
| 1092 |  | Tuning | 1d? | 2005-03-18 | 2005-03-18 | 1091 | 47.88d |
| 1093 | 15.2.3 | **Monsters/Spawns** | 3d? | 2005-03-16 | 2005-03-18 |  | 47.88d |
| 1094 | 15.2.3.1 | **Stage 1** | 3d? | 2005-03-16 | 2005-03-18 |  | 47.88d |
| 1095 |  | Design | 1d? | 2005-03-16 | 2005-03-16 |  | 47.88d |
| 1096 |  | Implementation | 1d? | 2005-03-17 | 2005-03-17 | 1095 | 47.88d |
| 1097 |  | Tuning | 1d? | 2005-03-18 | 2005-03-18 | 1096 | 47.88d |
| 1098 | 15.2.4 | **Stalkers/Spawns** | 3d? | 2005-03-16 | 2005-03-18 |  | 47.88d |
| 1099 | 15.2.4.1 | **Stage 1** | 3d? | 2005-03-16 | 2005-03-18 |  | 47.88d |
| 1100 |  | Design | 1d? | 2005-03-16 | 2005-03-16 |  | 47.88d |
| 1101 |  | Implementation | 1d? | 2005-03-17 | 2005-03-17 | 1100 | 47.88d |
| 1102 |  | Tuning | 1d? | 2005-03-18 | 2005-03-18 | 1101 | 47.88d |
| 1103 | 15.2.5 | **Anomalies/Spawns** | 3d? | 2005-03-16 | 2005-03-18 |  | 47.88d |
| 1104 | 15.2.5.1 | **Stage 1** | 3d? | 2005-03-16 | 2005-03-18 |  | 47.88d |
| 1105 |  | Design | 1d? | 2005-03-16 | 2005-03-16 |  | 47.88d |

| ID | WBS | Task | Duration | Start | Finish | Predecessors | Total float |
| --- | --- | --- | --- | --- | --- | --- | --- |
| 1106 |  | Implementation | 1d? | 2005-03-17 | 2005-03-17 | 1105 | 47.88d |
| 1107 |  | Tuning | 1d? | 2005-03-18 | 2005-03-18 | 1106 | 47.88d |
| 1108 | 15.2.6 | **Physicks** | 3d? | 2005-03-16 | 2005-03-18 |  | 47.88d |
| 1109 | 15.2.6.1 | **Stage 1** | 3d? | 2005-03-16 | 2005-03-18 |  | 47.88d |
| 1110 |  | Design | 1d? | 2005-03-16 | 2005-03-16 |  | 47.88d |
| 1111 |  | Implementation | 1d? | 2005-03-17 | 2005-03-17 | 1110 | 47.88d |
| 1112 |  | Tuning | 1d? | 2005-03-18 | 2005-03-18 | 1111 | 47.88d |
| 1114 | 15.3 | **Scripts** | 5d? | 2005-03-16 | 2005-03-21 |  | 45.88d |
| 1115 | 15.3.1 | **Script 1** | 5d? | 2005-03-16 | 2005-03-21 |  | 45.88d |
| 1116 |  | Scenario(text) | 1d? | 2005-03-16 | 2005-03-16 |  | 45.88d |
| 1117 |  | Постановка задач | 1d? | 2005-03-17 | 2005-03-17 | 1116 | 45.88d |
| 1118 |  | Implimentation | 1d? | 2005-03-18 | 2005-03-18 | 1117 | 45.88d |
| 1119 |  | Dilogs/VO/Icons/Objects/Animations | 1d? | 2005-03-19 | 2005-03-19 | 1118 | 45.88d |
| 1120 |  | Настройка | 1d? | 2005-03-21 | 2005-03-21 | 1119 | 45.88d |
| 1121 | 15.3.2 | **Script 2** | 5d? | 2005-03-16 | 2005-03-21 |  | 45.88d |
| 1122 |  | Scenario(text) | 1d? | 2005-03-16 | 2005-03-16 |  | 45.88d |
| 1123 |  | Постановка задач | 1d? | 2005-03-17 | 2005-03-17 | 1122 | 45.88d |
| 1124 |  | Implimentation | 1d? | 2005-03-18 | 2005-03-18 | 1123 | 45.88d |
| 1125 |  | Dilogs/VO/Icons/Objects/Animations | 1d? | 2005-03-19 | 2005-03-19 | 1124 | 45.88d |
| 1126 |  | Настройка | 1d? | 2005-03-21 | 2005-03-21 | 1125 | 45.88d |
| 1127 | 15.3.3 | **Script 3** | 5d? | 2005-03-16 | 2005-03-21 |  | 45.88d |
| 1128 |  | Scenario(text) | 1d? | 2005-03-16 | 2005-03-16 |  | 45.88d |
| 1129 |  | Постановка задач | 1d? | 2005-03-17 | 2005-03-17 | 1128 | 45.88d |
| 1130 |  | Implimentation | 1d? | 2005-03-18 | 2005-03-18 | 1129 | 45.88d |
| 1131 |  | Dilogs/VO/Icons/Objects/Animations | 1d? | 2005-03-19 | 2005-03-19 | 1130 | 45.88d |
| 1132 |  | Настройка | 1d? | 2005-03-21 | 2005-03-21 | 1131 | 45.88d |
| 1133 | 15.3.4 | **Script 4** | 5d? | 2005-03-16 | 2005-03-21 |  | 45.88d |
| 1134 |  | Scenario(text) | 1d? | 2005-03-16 | 2005-03-16 |  | 45.88d |
| 1135 |  | Постановка задач | 1d? | 2005-03-17 | 2005-03-17 | 1134 | 45.88d |
| 1136 |  | Implimentation | 1d? | 2005-03-18 | 2005-03-18 | 1135 | 45.88d |
| 1137 |  | Dilogs/VO/Icons/Objects/Animations | 1d? | 2005-03-19 | 2005-03-19 | 1136 | 45.88d |
| 1138 |  | Настройка | 1d? | 2005-03-21 | 2005-03-21 | 1137 | 45.88d |
| 1139 | 15.3.5 | **Script 5** | 5d? | 2005-03-16 | 2005-03-21 |  | 45.88d |
| 1140 |  | Scenario(text) | 1d? | 2005-03-16 | 2005-03-16 |  | 45.88d |
| 1141 |  | Постановка задач | 1d? | 2005-03-17 | 2005-03-17 | 1140 | 45.88d |
| 1142 |  | Implimentation | 1d? | 2005-03-18 | 2005-03-18 | 1141 | 45.88d |
| 1143 |  | Dilogs/VO/Icons/Objects/Animations | 1d? | 2005-03-19 | 2005-03-19 | 1142 | 45.88d |
| 1144 |  | Настройка | 1d? | 2005-03-21 | 2005-03-21 | 1143 | 45.88d |
| 1153 | 16 | **10_Military_Base** | 11d? | 2005-01-24 | 2005-02-04 |  | -29.12d |
| 1154 | 16.1 | **LevelDesign** | 11d? | 2005-01-24 | 2005-02-04 |  | -29.12d |
| 1155 | 16.1.1 | **Stage 1** | 11d? | 2005-01-24 | 2005-02-04 |  | -29.12d |
| 1156 |  | List of Changes | 2d | 2005-01-24 | 2005-01-25 |  | -29.12d |
| 1157 |  | Changed Geometry | 1d? | 2005-01-26 | 2005-01-26 | 1156 | -29.12d |
| 1158 |  | Check List 1 | 1d? | 2005-01-27 | 2005-01-27 | 1157 | -29.12d |
| 1159 |  | Check List 2 | 1d? | 2005-01-28 | 2005-01-28 | 1158 | -29.12d |
| 1160 |  | Check List 3 | 1d? | 2005-01-29 | 2005-01-29 | 1159 | -29.12d |
| 1161 |  | Check List 4 | 1d? | 2005-01-31 | 2005-01-31 | 1160 | -29.12d |
| 1162 |  | Render Geometry | 1d? | 2005-02-01 | 2005-02-01 | 1161 | -29.12d |
| 1163 |  | Grass | 1d? | 2005-02-02 | 2005-02-02 | 1162 | -29.12d |
| 1164 |  | AI Maps | 1d? | 2005-02-03 | 2005-02-03 | 1163 | -29.12d |
| 1165 |  | Graphs | 1d? | 2005-02-04 | 2005-02-04 | 1164 | -29.12d |
| 1167 | 16.2 | **GameDesign** | 3d? | 2005-01-24 | 2005-01-26 |  | -21.12d |
| 1168 | 16.2.1 | **Secrets** | 3d? | 2005-01-24 | 2005-01-26 |  | -21.12d |
| 1169 | 16.2.1.1 | **Stage 1** | 3d? | 2005-01-24 | 2005-01-26 |  | -21.12d |
| 1170 |  | Design | 1d? | 2005-01-24 | 2005-01-24 |  | -21.12d |
| 1171 |  | Implementation | 1d? | 2005-01-25 | 2005-01-25 | 1170 | -21.12d |
| 1172 |  | Tuning | 1d? | 2005-01-26 | 2005-01-26 | 1171 | -21.12d |
| 1173 | 16.2.2 | **Smartterrains** | 3d? | 2005-01-24 | 2005-01-26 |  | -21.12d |
| 1174 | 16.2.2.1 | **Stage 1** | 3d? | 2005-01-24 | 2005-01-26 |  | -21.12d |
| 1175 |  | Design | 1d? | 2005-01-24 | 2005-01-24 |  | -21.12d |
| 1176 |  | Implementation | 1d? | 2005-01-25 | 2005-01-25 | 1175 | -21.12d |
| 1177 |  | Tuning | 1d? | 2005-01-26 | 2005-01-26 | 1176 | -21.12d |
| 1178 | 16.2.3 | **Monsters/Spawns** | 3d? | 2005-01-24 | 2005-01-26 |  | -21.12d |
| 1179 | 16.2.3.1 | **Stage 1** | 3d? | 2005-01-24 | 2005-01-26 |  | -21.12d |
| 1180 |  | Design | 1d? | 2005-01-24 | 2005-01-24 |  | -21.12d |
| 1181 |  | Implementation | 1d? | 2005-01-25 | 2005-01-25 | 1180 | -21.12d |
| 1182 |  | Tuning | 1d? | 2005-01-26 | 2005-01-26 | 1181 | -21.12d |
| 1183 | 16.2.4 | **Stalkers/Spawns** | 3d? | 2005-01-24 | 2005-01-26 |  | -21.12d |
| 1184 | 16.2.4.1 | **Stage 1** | 3d? | 2005-01-24 | 2005-01-26 |  | -21.12d |
| 1185 |  | Design | 1d? | 2005-01-24 | 2005-01-24 |  | -21.12d |

| ID | WBS | Task | Duration | Start | Finish | Predecessors | Total float |
| --- | --- | --- | --- | --- | --- | --- | --- |
| 1186 |  | Implementation | 1d? | 2005-01-25 | 2005-01-25 | 1185 | -21.12d |
| 1187 |  | Tuning | 1d? | 2005-01-26 | 2005-01-26 | 1186 | -21.12d |
| 1188 | 16.2.5 | **Anomalies/Spawns** | 3d? | 2005-01-24 | 2005-01-26 |  | -21.12d |
| 1189 | 16.2.5.1 | **Stage 1** | 3d? | 2005-01-24 | 2005-01-26 |  | -21.12d |
| 1190 |  | Design | 1d? | 2005-01-24 | 2005-01-24 |  | -21.12d |
| 1191 |  | Implementation | 1d? | 2005-01-25 | 2005-01-25 | 1190 | -21.12d |
| 1192 |  | Tuning | 1d? | 2005-01-26 | 2005-01-26 | 1191 | -21.12d |
| 1193 | 16.2.6 | **Physicks** | 3d? | 2005-01-24 | 2005-01-26 |  | -21.12d |
| 1194 | 16.2.6.1 | **Stage 1** | 3d? | 2005-01-24 | 2005-01-26 |  | -21.12d |
| 1195 |  | Design | 1d? | 2005-01-24 | 2005-01-24 |  | -21.12d |
| 1196 |  | Implementation | 1d? | 2005-01-25 | 2005-01-25 | 1195 | -21.12d |
| 1197 |  | Tuning | 1d? | 2005-01-26 | 2005-01-26 | 1196 | -21.12d |
| 1199 | 16.3 | **Scripts** | 5d? | 2005-01-24 | 2005-01-28 |  | -23.12d |
| 1200 | 16.3.1 | **Script 1** | 5d? | 2005-01-24 | 2005-01-28 |  | -23.12d |
| 1201 |  | Scenario(text) | 1d? | 2005-01-24 | 2005-01-24 |  | -23.12d |
| 1202 |  | Постановка задач | 1d? | 2005-01-25 | 2005-01-25 | 1201 | -23.12d |
| 1203 |  | Implimentation | 1d? | 2005-01-26 | 2005-01-26 | 1202 | -23.12d |
| 1204 |  | Dilogs/VO/Icons/Objects/Animations | 1d? | 2005-01-27 | 2005-01-27 | 1203 | -23.12d |
| 1205 |  | Настройка | 1d? | 2005-01-28 | 2005-01-28 | 1204 | -23.12d |
| 1206 | 16.3.2 | **Script 2** | 5d? | 2005-01-24 | 2005-01-28 |  | -23.12d |
| 1207 |  | Scenario(text) | 1d? | 2005-01-24 | 2005-01-24 |  | -23.12d |
| 1208 |  | Постановка задач | 1d? | 2005-01-25 | 2005-01-25 | 1207 | -23.12d |
| 1209 |  | Implimentation | 1d? | 2005-01-26 | 2005-01-26 | 1208 | -23.12d |
| 1210 |  | Dilogs/VO/Icons/Objects/Animations | 1d? | 2005-01-27 | 2005-01-27 | 1209 | -23.12d |
| 1211 |  | Настройка | 1d? | 2005-01-28 | 2005-01-28 | 1210 | -23.12d |
| 1212 | 16.3.3 | **Script 3** | 5d? | 2005-01-24 | 2005-01-28 |  | -23.12d |
| 1213 |  | Scenario(text) | 1d? | 2005-01-24 | 2005-01-24 |  | -23.12d |
| 1214 |  | Постановка задач | 1d? | 2005-01-25 | 2005-01-25 | 1213 | -23.12d |
| 1215 |  | Implimentation | 1d? | 2005-01-26 | 2005-01-26 | 1214 | -23.12d |
| 1216 |  | Dilogs/VO/Icons/Objects/Animations | 1d? | 2005-01-27 | 2005-01-27 | 1215 | -23.12d |
| 1217 |  | Настройка | 1d? | 2005-01-28 | 2005-01-28 | 1216 | -23.12d |
| 1218 | 16.3.4 | **Script 4** | 5d? | 2005-01-24 | 2005-01-28 |  | -23.12d |
| 1219 |  | Scenario(text) | 1d? | 2005-01-24 | 2005-01-24 |  | -23.12d |
| 1220 |  | Постановка задач | 1d? | 2005-01-25 | 2005-01-25 | 1219 | -23.12d |
| 1221 |  | Implimentation | 1d? | 2005-01-26 | 2005-01-26 | 1220 | -23.12d |
| 1222 |  | Dilogs/VO/Icons/Objects/Animations | 1d? | 2005-01-27 | 2005-01-27 | 1221 | -23.12d |
| 1223 |  | Настройка | 1d? | 2005-01-28 | 2005-01-28 | 1222 | -23.12d |
| 1224 | 16.3.5 | **Script 5** | 5d? | 2005-01-24 | 2005-01-28 |  | -23.12d |
| 1225 |  | Scenario(text) | 1d? | 2005-01-24 | 2005-01-24 |  | -23.12d |
| 1226 |  | Постановка задач | 1d? | 2005-01-25 | 2005-01-25 | 1225 | -23.12d |
| 1227 |  | Implimentation | 1d? | 2005-01-26 | 2005-01-26 | 1226 | -23.12d |
| 1228 |  | Dilogs/VO/Icons/Objects/Animations | 1d? | 2005-01-27 | 2005-01-27 | 1227 | -23.12d |
| 1229 |  | Настройка | 1d? | 2005-01-28 | 2005-01-28 | 1228 | -23.12d |
| 1232 | 17 | **20_Sarcofag** | 11d? | 2005-02-05 | 2005-02-17 | 1153 | -29.12d |
| 1233 | 17.1 | **LevelDesign** | 11d? | 2005-02-05 | 2005-02-17 |  | -29.12d |
| 1234 | 17.1.1 | **Stage 1** | 11d? | 2005-02-05 | 2005-02-17 |  | -29.12d |
| 1235 |  | List of Changes | 2d | 2005-02-05 | 2005-02-07 |  | -29.12d |
| 1236 |  | Changed Geometry | 1d? | 2005-02-08 | 2005-02-08 | 1235 | -29.12d |
| 1237 |  | Check List 1 | 1d? | 2005-02-09 | 2005-02-09 | 1236 | -29.12d |
| 1238 |  | Check List 2 | 1d? | 2005-02-10 | 2005-02-10 | 1237 | -29.12d |
| 1239 |  | Check List 3 | 1d? | 2005-02-11 | 2005-02-11 | 1238 | -29.12d |
| 1240 |  | Check List 4 | 1d? | 2005-02-12 | 2005-02-12 | 1239 | -29.12d |
| 1241 |  | Render Geometry | 1d? | 2005-02-14 | 2005-02-14 | 1240 | -29.12d |
| 1242 |  | Grass | 1d? | 2005-02-15 | 2005-02-15 | 1241 | -29.12d |
| 1243 |  | AI Maps | 1d? | 2005-02-16 | 2005-02-16 | 1242 | -29.12d |
| 1244 |  | Graphs | 1d? | 2005-02-17 | 2005-02-17 | 1243 | -29.12d |
| 1246 | 17.2 | **GameDesign** | 3d? | 2005-02-05 | 2005-02-08 |  | -21.12d |
| 1247 | 17.2.1 | **Secrets** | 3d? | 2005-02-05 | 2005-02-08 |  | -21.12d |
| 1248 | 17.2.1.1 | **Stage 1** | 3d? | 2005-02-05 | 2005-02-08 |  | -21.12d |
| 1249 |  | Design | 1d? | 2005-02-05 | 2005-02-05 |  | -21.12d |
| 1250 |  | Implementation | 1d? | 2005-02-07 | 2005-02-07 | 1249 | -21.12d |
| 1251 |  | Tuning | 1d? | 2005-02-08 | 2005-02-08 | 1250 | -21.12d |
| 1252 | 17.2.2 | **Smartterrains** | 3d? | 2005-02-05 | 2005-02-08 |  | -21.12d |
| 1253 | 17.2.2.1 | **Stage 1** | 3d? | 2005-02-05 | 2005-02-08 |  | -21.12d |
| 1254 |  | Design | 1d? | 2005-02-05 | 2005-02-05 |  | -21.12d |
| 1255 |  | Implementation | 1d? | 2005-02-07 | 2005-02-07 | 1254 | -21.12d |
| 1256 |  | Tuning | 1d? | 2005-02-08 | 2005-02-08 | 1255 | -21.12d |
| 1257 | 17.2.3 | **Monsters/Spawns** | 3d? | 2005-02-05 | 2005-02-08 |  | -21.12d |
| 1258 | 17.2.3.1 | **Stage 1** | 3d? | 2005-02-05 | 2005-02-08 |  | -21.12d |
| 1259 |  | Design | 1d? | 2005-02-05 | 2005-02-05 |  | -21.12d |

| ID | WBS | Task | Duration | Start | Finish | Predecessors | Total float |
| --- | --- | --- | --- | --- | --- | --- | --- |
| 1260 |  | Implementation | 1d? | 2005-02-07 | 2005-02-07 | 1259 | -21.12d |
| 1261 |  | Tuning | 1d? | 2005-02-08 | 2005-02-08 | 1260 | -21.12d |
| 1262 | 17.2.4 | **Stalkers/Spawns** | 3d? | 2005-02-05 | 2005-02-08 |  | -21.12d |
| 1263 | 17.2.4.1 | **Stage 1** | 3d? | 2005-02-05 | 2005-02-08 |  | -21.12d |
| 1264 |  | Design | 1d? | 2005-02-05 | 2005-02-05 |  | -21.12d |
| 1265 |  | Implementation | 1d? | 2005-02-07 | 2005-02-07 | 1264 | -21.12d |
| 1266 |  | Tuning | 1d? | 2005-02-08 | 2005-02-08 | 1265 | -21.12d |
| 1267 | 17.2.5 | **Anomalies/Spawns** | 3d? | 2005-02-05 | 2005-02-08 |  | -21.12d |
| 1268 | 17.2.5.1 | **Stage 1** | 3d? | 2005-02-05 | 2005-02-08 |  | -21.12d |
| 1269 |  | Design | 1d? | 2005-02-05 | 2005-02-05 |  | -21.12d |
| 1270 |  | Implementation | 1d? | 2005-02-07 | 2005-02-07 | 1269 | -21.12d |
| 1271 |  | Tuning | 1d? | 2005-02-08 | 2005-02-08 | 1270 | -21.12d |
| 1272 | 17.2.6 | **Physicks** | 3d? | 2005-02-05 | 2005-02-08 |  | -21.12d |
| 1273 | 17.2.6.1 | **Stage 1** | 3d? | 2005-02-05 | 2005-02-08 |  | -21.12d |
| 1274 |  | Design | 1d? | 2005-02-05 | 2005-02-05 |  | -21.12d |
| 1275 |  | Implementation | 1d? | 2005-02-07 | 2005-02-07 | 1274 | -21.12d |
| 1276 |  | Tuning | 1d? | 2005-02-08 | 2005-02-08 | 1275 | -21.12d |
| 1278 | 17.3 | **Scripts** | 5d? | 2005-02-05 | 2005-02-10 |  | -23.12d |
| 1279 | 17.3.1 | **Script 1** | 5d? | 2005-02-05 | 2005-02-10 |  | -23.12d |
| 1280 |  | Scenario(text) | 1d? | 2005-02-05 | 2005-02-05 |  | -23.12d |
| 1281 |  | Постановка задач | 1d? | 2005-02-07 | 2005-02-07 | 1280 | -23.12d |
| 1282 |  | Implimentation | 1d? | 2005-02-08 | 2005-02-08 | 1281 | -23.12d |
| 1283 |  | Dilogs/VO/Icons/Objects/Animations | 1d? | 2005-02-09 | 2005-02-09 | 1282 | -23.12d |
| 1284 |  | Настройка | 1d? | 2005-02-10 | 2005-02-10 | 1283 | -23.12d |
| 1285 | 17.3.2 | **Script 2** | 5d? | 2005-02-05 | 2005-02-10 |  | -23.12d |
| 1286 |  | Scenario(text) | 1d? | 2005-02-05 | 2005-02-05 |  | -23.12d |
| 1287 |  | Постановка задач | 1d? | 2005-02-07 | 2005-02-07 | 1286 | -23.12d |
| 1288 |  | Implimentation | 1d? | 2005-02-08 | 2005-02-08 | 1287 | -23.12d |
| 1289 |  | Dilogs/VO/Icons/Objects/Animations | 1d? | 2005-02-09 | 2005-02-09 | 1288 | -23.12d |
| 1290 |  | Настройка | 1d? | 2005-02-10 | 2005-02-10 | 1289 | -23.12d |
| 1291 | 17.3.3 | **Script 3** | 5d? | 2005-02-05 | 2005-02-10 |  | -23.12d |
| 1292 |  | Scenario(text) | 1d? | 2005-02-05 | 2005-02-05 |  | -23.12d |
| 1293 |  | Постановка задач | 1d? | 2005-02-07 | 2005-02-07 | 1292 | -23.12d |
| 1294 |  | Implimentation | 1d? | 2005-02-08 | 2005-02-08 | 1293 | -23.12d |
| 1295 |  | Dilogs/VO/Icons/Objects/Animations | 1d? | 2005-02-09 | 2005-02-09 | 1294 | -23.12d |
| 1296 |  | Настройка | 1d? | 2005-02-10 | 2005-02-10 | 1295 | -23.12d |
| 1297 | 17.3.4 | **Script 4** | 5d? | 2005-02-05 | 2005-02-10 |  | -23.12d |
| 1298 |  | Scenario(text) | 1d? | 2005-02-05 | 2005-02-05 |  | -23.12d |
| 1299 |  | Постановка задач | 1d? | 2005-02-07 | 2005-02-07 | 1298 | -23.12d |
| 1300 |  | Implimentation | 1d? | 2005-02-08 | 2005-02-08 | 1299 | -23.12d |
| 1301 |  | Dilogs/VO/Icons/Objects/Animations | 1d? | 2005-02-09 | 2005-02-09 | 1300 | -23.12d |
| 1302 |  | Настройка | 1d? | 2005-02-10 | 2005-02-10 | 1301 | -23.12d |
| 1303 | 17.3.5 | **Script 5** | 5d? | 2005-02-05 | 2005-02-10 |  | -23.12d |
| 1304 |  | Scenario(text) | 1d? | 2005-02-05 | 2005-02-05 |  | -23.12d |
| 1305 |  | Постановка задач | 1d? | 2005-02-07 | 2005-02-07 | 1304 | -23.12d |
| 1306 |  | Implimentation | 1d? | 2005-02-08 | 2005-02-08 | 1305 | -23.12d |
| 1307 |  | Dilogs/VO/Icons/Objects/Animations | 1d? | 2005-02-09 | 2005-02-09 | 1306 | -23.12d |
| 1308 |  | Настройка | 1d? | 2005-02-10 | 2005-02-10 | 1307 | -23.12d |
| 1310 | 18 | **19_Stancia** | 11d? | 2005-02-18 | 2005-03-02 | 1232 | -29.12d |
| 1311 | 18.1 | **LevelDesign** | 11d? | 2005-02-18 | 2005-03-02 |  | -29.12d |
| 1312 | 18.1.1 | **Stage 1** | 11d? | 2005-02-18 | 2005-03-02 |  | -29.12d |
| 1313 |  | List of Changes | 2d | 2005-02-18 | 2005-02-19 |  | -29.12d |
| 1314 |  | Changed Geometry | 1d? | 2005-02-21 | 2005-02-21 | 1313 | -29.12d |
| 1315 |  | Check List 1 | 1d? | 2005-02-22 | 2005-02-22 | 1314 | -29.12d |
| 1316 |  | Check List 2 | 1d? | 2005-02-23 | 2005-02-23 | 1315 | -29.12d |
| 1317 |  | Check List 3 | 1d? | 2005-02-24 | 2005-02-24 | 1316 | -29.12d |
| 1318 |  | Check List 4 | 1d? | 2005-02-25 | 2005-02-25 | 1317 | -29.12d |
| 1319 |  | Render Geometry | 1d? | 2005-02-26 | 2005-02-26 | 1318 | -29.12d |
| 1320 |  | Grass | 1d? | 2005-02-28 | 2005-02-28 | 1319 | -29.12d |
| 1321 |  | AI Maps | 1d? | 2005-03-01 | 2005-03-01 | 1320 | -29.12d |
| 1322 |  | Graphs | 1d? | 2005-03-02 | 2005-03-02 | 1321 | -29.12d |
| 1324 | 18.2 | **GameDesign** | 3d? | 2005-02-18 | 2005-02-21 |  | 57.88d |
| 1325 | 18.2.1 | **Secrets** | 3d? | 2005-02-18 | 2005-02-21 |  | 57.88d |
| 1326 | 18.2.1.1 | **Stage 1** | 3d? | 2005-02-18 | 2005-02-21 |  | 57.88d |
| 1327 |  | Design | 1d? | 2005-02-18 | 2005-02-18 |  | 57.88d |
| 1328 |  | Implementation | 1d? | 2005-02-19 | 2005-02-19 | 1327 | 57.88d |
| 1329 |  | Tuning | 1d? | 2005-02-21 | 2005-02-21 | 1328 | 57.88d |
| 1330 | 18.2.2 | **Smartterrains** | 3d? | 2005-02-18 | 2005-02-21 |  | 57.88d |
| 1331 | 18.2.2.1 | **Stage 1** | 3d? | 2005-02-18 | 2005-02-21 |  | 57.88d |
| 1332 |  | Design | 1d? | 2005-02-18 | 2005-02-18 |  | 57.88d |

| ID | WBS | Task | Duration | Start | Finish | Predecessors | Total float |
| --- | --- | --- | --- | --- | --- | --- | --- |
| 1333 |  | Implementation | 1d? | 2005-02-19 | 2005-02-19 | 1332 | 57.88d |
| 1334 |  | Tuning | 1d? | 2005-02-21 | 2005-02-21 | 1333 | 57.88d |
| 1335 | 18.2.3 | **Monsters/Spawns** | 3d? | 2005-02-18 | 2005-02-21 |  | 57.88d |
| 1336 | 18.2.3.1 | **Stage 1** | 3d? | 2005-02-18 | 2005-02-21 |  | 57.88d |
| 1337 |  | Design | 1d? | 2005-02-18 | 2005-02-18 |  | 57.88d |
| 1338 |  | Implementation | 1d? | 2005-02-19 | 2005-02-19 | 1337 | 57.88d |
| 1339 |  | Tuning | 1d? | 2005-02-21 | 2005-02-21 | 1338 | 57.88d |
| 1340 | 18.2.4 | **Stalkers/Spawns** | 3d? | 2005-02-18 | 2005-02-21 |  | 57.88d |
| 1341 | 18.2.4.1 | **Stage 1** | 3d? | 2005-02-18 | 2005-02-21 |  | 57.88d |
| 1342 |  | Design | 1d? | 2005-02-18 | 2005-02-18 |  | 57.88d |
| 1343 |  | Implementation | 1d? | 2005-02-19 | 2005-02-19 | 1342 | 57.88d |
| 1344 |  | Tuning | 1d? | 2005-02-21 | 2005-02-21 | 1343 | 57.88d |
| 1345 | 18.2.5 | **Anomalies/Spawns** | 3d? | 2005-02-18 | 2005-02-21 |  | 57.88d |
| 1346 | 18.2.5.1 | **Stage 1** | 3d? | 2005-02-18 | 2005-02-21 |  | 57.88d |
| 1347 |  | Design | 1d? | 2005-02-18 | 2005-02-18 |  | 57.88d |
| 1348 |  | Implementation | 1d? | 2005-02-19 | 2005-02-19 | 1347 | 57.88d |
| 1349 |  | Tuning | 1d? | 2005-02-21 | 2005-02-21 | 1348 | 57.88d |
| 1350 | 18.2.6 | **Physicks** | 3d? | 2005-02-18 | 2005-02-21 |  | 57.88d |
| 1351 | 18.2.6.1 | **Stage 1** | 3d? | 2005-02-18 | 2005-02-21 |  | 57.88d |
| 1352 |  | Design | 1d? | 2005-02-18 | 2005-02-18 |  | 57.88d |
| 1353 |  | Implementation | 1d? | 2005-02-19 | 2005-02-19 | 1352 | 57.88d |
| 1354 |  | Tuning | 1d? | 2005-02-21 | 2005-02-21 | 1353 | 57.88d |
| 1356 | 18.3 | **Scripts** | 5d? | 2005-02-18 | 2005-02-23 |  | 55.88d |
| 1357 | 18.3.1 | **Script 1** | 5d? | 2005-02-18 | 2005-02-23 |  | 55.88d |
| 1358 |  | Scenario(text) | 1d? | 2005-02-18 | 2005-02-18 |  | 55.88d |
| 1359 |  | Постановка задач | 1d? | 2005-02-19 | 2005-02-19 | 1358 | 55.88d |
| 1360 |  | Implimentation | 1d? | 2005-02-21 | 2005-02-21 | 1359 | 55.88d |
| 1361 |  | Dilogs/VO/Icons/Objects/Animations | 1d? | 2005-02-22 | 2005-02-22 | 1360 | 55.88d |
| 1362 |  | Настройка | 1d? | 2005-02-23 | 2005-02-23 | 1361 | 55.88d |
| 1363 | 18.3.2 | **Script 2** | 5d? | 2005-02-18 | 2005-02-23 |  | 55.88d |
| 1364 |  | Scenario(text) | 1d? | 2005-02-18 | 2005-02-18 |  | 55.88d |
| 1365 |  | Постановка задач | 1d? | 2005-02-19 | 2005-02-19 | 1364 | 55.88d |
| 1366 |  | Implimentation | 1d? | 2005-02-21 | 2005-02-21 | 1365 | 55.88d |
| 1367 |  | Dilogs/VO/Icons/Objects/Animations | 1d? | 2005-02-22 | 2005-02-22 | 1366 | 55.88d |
| 1368 |  | Настройка | 1d? | 2005-02-23 | 2005-02-23 | 1367 | 55.88d |
| 1369 | 18.3.3 | **Script 3** | 5d? | 2005-02-18 | 2005-02-23 |  | 55.88d |
| 1370 |  | Scenario(text) | 1d? | 2005-02-18 | 2005-02-18 |  | 55.88d |
| 1371 |  | Постановка задач | 1d? | 2005-02-19 | 2005-02-19 | 1370 | 55.88d |
| 1372 |  | Implimentation | 1d? | 2005-02-21 | 2005-02-21 | 1371 | 55.88d |
| 1373 |  | Dilogs/VO/Icons/Objects/Animations | 1d? | 2005-02-22 | 2005-02-22 | 1372 | 55.88d |
| 1374 |  | Настройка | 1d? | 2005-02-23 | 2005-02-23 | 1373 | 55.88d |
| 1375 | 18.3.4 | **Script 4** | 5d? | 2005-02-18 | 2005-02-23 |  | 55.88d |
| 1376 |  | Scenario(text) | 1d? | 2005-02-18 | 2005-02-18 |  | 55.88d |
| 1377 |  | Постановка задач | 1d? | 2005-02-19 | 2005-02-19 | 1376 | 55.88d |
| 1378 |  | Implimentation | 1d? | 2005-02-21 | 2005-02-21 | 1377 | 55.88d |
| 1379 |  | Dilogs/VO/Icons/Objects/Animations | 1d? | 2005-02-22 | 2005-02-22 | 1378 | 55.88d |
| 1380 |  | Настройка | 1d? | 2005-02-23 | 2005-02-23 | 1379 | 55.88d |
| 1381 | 18.3.5 | **Script 5** | 5d? | 2005-02-18 | 2005-02-23 |  | 55.88d |
| 1382 |  | Scenario(text) | 1d? | 2005-02-18 | 2005-02-18 |  | 55.88d |
| 1383 |  | Постановка задач | 1d? | 2005-02-19 | 2005-02-19 | 1382 | 55.88d |
| 1384 |  | Implimentation | 1d? | 2005-02-21 | 2005-02-21 | 1383 | 55.88d |
| 1385 |  | Dilogs/VO/Icons/Objects/Animations | 1d? | 2005-02-22 | 2005-02-22 | 1384 | 55.88d |
| 1386 |  | Настройка | 1d? | 2005-02-23 | 2005-02-23 | 1385 | 55.88d |
| 1391 | 19 | **15_Radar** | 11d? | 2005-01-24 | 2005-02-04 |  | 1.88d |
| 1392 | 19.1 | **LevelDesign** | 11d? | 2005-01-24 | 2005-02-04 |  | 1.88d |
| 1393 | 19.1.1 | **Stage 1** | 11d? | 2005-01-24 | 2005-02-04 |  | 1.88d |
| 1394 |  | List of Changes | 2d | 2005-01-24 | 2005-01-25 |  | 1.88d |
| 1395 |  | Changed Geometry | 1d? | 2005-01-26 | 2005-01-26 | 1394 | 1.88d |
| 1396 |  | Check List 1 | 1d? | 2005-01-27 | 2005-01-27 | 1395 | 1.88d |
| 1397 |  | Check List 2 | 1d? | 2005-01-28 | 2005-01-28 | 1396 | 1.88d |
| 1398 |  | Check List 3 | 1d? | 2005-01-29 | 2005-01-29 | 1397 | 1.88d |
| 1399 |  | Check List 4 | 1d? | 2005-01-31 | 2005-01-31 | 1398 | 1.88d |
| 1400 |  | Render Geometry | 1d? | 2005-02-01 | 2005-02-01 | 1399 | 1.88d |
| 1401 |  | Grass | 1d? | 2005-02-02 | 2005-02-02 | 1400 | 1.88d |
| 1402 |  | AI Maps | 1d? | 2005-02-03 | 2005-02-03 | 1401 | 1.88d |
| 1403 |  | Graphs | 1d? | 2005-02-04 | 2005-02-04 | 1402 | 1.88d |
| 1405 | 19.2 | **GameDesign** | 3d? | 2005-01-24 | 2005-01-26 |  | 17.88d |
| 1406 | 19.2.1 | **Secrets** | 3d? | 2005-01-24 | 2005-01-26 |  | 17.88d |
| 1407 | 19.2.1.1 | **Stage 1** | 3d? | 2005-01-24 | 2005-01-26 |  | 17.88d |
| 1408 |  | Design | 1d? | 2005-01-24 | 2005-01-24 |  | 17.88d |

| ID | WBS | Task | Duration | Start | Finish | Predecessors | Total float |
| --- | --- | --- | --- | --- | --- | --- | --- |
| 1409 |  | Implementation | 1d? | 2005-01-25 | 2005-01-25 | 1408 | 17.88d |
| 1410 |  | Tuning | 1d? | 2005-01-26 | 2005-01-26 | 1409 | 17.88d |
| 1411 | 19.2.2 | **Smartterrains** | 3d? | 2005-01-24 | 2005-01-26 |  | 17.88d |
| 1412 | 19.2.2.1 | **Stage 1** | 3d? | 2005-01-24 | 2005-01-26 |  | 17.88d |
| 1413 |  | Design | 1d? | 2005-01-24 | 2005-01-24 |  | 17.88d |
| 1414 |  | Implementation | 1d? | 2005-01-25 | 2005-01-25 | 1413 | 17.88d |
| 1415 |  | Tuning | 1d? | 2005-01-26 | 2005-01-26 | 1414 | 17.88d |
| 1416 | 19.2.3 | **Monsters/Spawns** | 3d? | 2005-01-24 | 2005-01-26 |  | 17.88d |
| 1417 | 19.2.3.1 | **Stage 1** | 3d? | 2005-01-24 | 2005-01-26 |  | 17.88d |
| 1418 |  | Design | 1d? | 2005-01-24 | 2005-01-24 |  | 17.88d |
| 1419 |  | Implementation | 1d? | 2005-01-25 | 2005-01-25 | 1418 | 17.88d |
| 1420 |  | Tuning | 1d? | 2005-01-26 | 2005-01-26 | 1419 | 17.88d |
| 1421 | 19.2.4 | **Stalkers/Spawns** | 3d? | 2005-01-24 | 2005-01-26 |  | 17.88d |
| 1422 | 19.2.4.1 | **Stage 1** | 3d? | 2005-01-24 | 2005-01-26 |  | 17.88d |
| 1423 |  | Design | 1d? | 2005-01-24 | 2005-01-24 |  | 17.88d |
| 1424 |  | Implementation | 1d? | 2005-01-25 | 2005-01-25 | 1423 | 17.88d |
| 1425 |  | Tuning | 1d? | 2005-01-26 | 2005-01-26 | 1424 | 17.88d |
| 1426 | 19.2.5 | **Anomalies/Spawns** | 3d? | 2005-01-24 | 2005-01-26 |  | 17.88d |
| 1427 | 19.2.5.1 | **Stage 1** | 3d? | 2005-01-24 | 2005-01-26 |  | 17.88d |
| 1428 |  | Design | 1d? | 2005-01-24 | 2005-01-24 |  | 17.88d |
| 1429 |  | Implementation | 1d? | 2005-01-25 | 2005-01-25 | 1428 | 17.88d |
| 1430 |  | Tuning | 1d? | 2005-01-26 | 2005-01-26 | 1429 | 17.88d |
| 1431 | 19.2.6 | **Physicks** | 3d? | 2005-01-24 | 2005-01-26 |  | 17.88d |
| 1432 | 19.2.6.1 | **Stage 1** | 3d? | 2005-01-24 | 2005-01-26 |  | 17.88d |
| 1433 |  | Design | 1d? | 2005-01-24 | 2005-01-24 |  | 17.88d |
| 1434 |  | Implementation | 1d? | 2005-01-25 | 2005-01-25 | 1433 | 17.88d |
| 1435 |  | Tuning | 1d? | 2005-01-26 | 2005-01-26 | 1434 | 17.88d |
| 1437 | 19.3 | **Scripts** | 5d? | 2005-01-24 | 2005-01-28 |  | 15.88d |
| 1438 | 19.3.1 | **Script 1** | 5d? | 2005-01-24 | 2005-01-28 |  | 15.88d |
| 1439 |  | Scenario(text) | 1d? | 2005-01-24 | 2005-01-24 |  | 15.88d |
| 1440 |  | Постановка задач | 1d? | 2005-01-25 | 2005-01-25 | 1439 | 15.88d |
| 1441 |  | Implimentation | 1d? | 2005-01-26 | 2005-01-26 | 1440 | 15.88d |
| 1442 |  | Dilogs/VO/Icons/Objects/Animations | 1d? | 2005-01-27 | 2005-01-27 | 1441 | 15.88d |
| 1443 |  | Настройка | 1d? | 2005-01-28 | 2005-01-28 | 1442 | 15.88d |
| 1444 | 19.3.2 | **Script 2** | 5d? | 2005-01-24 | 2005-01-28 |  | 15.88d |
| 1445 |  | Scenario(text) | 1d? | 2005-01-24 | 2005-01-24 |  | 15.88d |
| 1446 |  | Постановка задач | 1d? | 2005-01-25 | 2005-01-25 | 1445 | 15.88d |
| 1447 |  | Implimentation | 1d? | 2005-01-26 | 2005-01-26 | 1446 | 15.88d |
| 1448 |  | Dilogs/VO/Icons/Objects/Animations | 1d? | 2005-01-27 | 2005-01-27 | 1447 | 15.88d |
| 1449 |  | Настройка | 1d? | 2005-01-28 | 2005-01-28 | 1448 | 15.88d |
| 1450 | 19.3.3 | **Script 3** | 5d? | 2005-01-24 | 2005-01-28 |  | 15.88d |
| 1451 |  | Scenario(text) | 1d? | 2005-01-24 | 2005-01-24 |  | 15.88d |
| 1452 |  | Постановка задач | 1d? | 2005-01-25 | 2005-01-25 | 1451 | 15.88d |
| 1453 |  | Implimentation | 1d? | 2005-01-26 | 2005-01-26 | 1452 | 15.88d |
| 1454 |  | Dilogs/VO/Icons/Objects/Animations | 1d? | 2005-01-27 | 2005-01-27 | 1453 | 15.88d |
| 1455 |  | Настройка | 1d? | 2005-01-28 | 2005-01-28 | 1454 | 15.88d |
| 1456 | 19.3.4 | **Script 4** | 5d? | 2005-01-24 | 2005-01-28 |  | 15.88d |
| 1457 |  | Scenario(text) | 1d? | 2005-01-24 | 2005-01-24 |  | 15.88d |
| 1458 |  | Постановка задач | 1d? | 2005-01-25 | 2005-01-25 | 1457 | 15.88d |
| 1459 |  | Implimentation | 1d? | 2005-01-26 | 2005-01-26 | 1458 | 15.88d |
| 1460 |  | Dilogs/VO/Icons/Objects/Animations | 1d? | 2005-01-27 | 2005-01-27 | 1459 | 15.88d |
| 1461 |  | Настройка | 1d? | 2005-01-28 | 2005-01-28 | 1460 | 15.88d |
| 1462 | 19.3.5 | **Script 5** | 5d? | 2005-01-24 | 2005-01-28 |  | 15.88d |
| 1463 |  | Scenario(text) | 1d? | 2005-01-24 | 2005-01-24 |  | 15.88d |
| 1464 |  | Постановка задач | 1d? | 2005-01-25 | 2005-01-25 | 1463 | 15.88d |
| 1465 |  | Implimentation | 1d? | 2005-01-26 | 2005-01-26 | 1464 | 15.88d |
| 1466 |  | Dilogs/VO/Icons/Objects/Animations | 1d? | 2005-01-27 | 2005-01-27 | 1465 | 15.88d |
| 1467 |  | Настройка | 1d? | 2005-01-28 | 2005-01-28 | 1466 | 15.88d |
| 1470 | 20 | **12_Yantar_Underground** | 11d? | 2005-02-05 | 2005-02-17 | 1391 | 9.88d |
| 1471 | 20.1 | **LevelDesign** | 11d? | 2005-02-05 | 2005-02-17 |  | 9.88d |
| 1472 | 20.1.1 | **Stage 1** | 11d? | 2005-02-05 | 2005-02-17 |  | 9.88d |
| 1473 |  | List of Changes | 2d | 2005-02-05 | 2005-02-07 |  | 9.88d |
| 1474 |  | Changed Geometry | 1d? | 2005-02-08 | 2005-02-08 | 1473 | 9.88d |
| 1475 |  | Check List 1 | 1d? | 2005-02-09 | 2005-02-09 | 1474 | 9.88d |
| 1476 |  | Check List 2 | 1d? | 2005-02-10 | 2005-02-10 | 1475 | 9.88d |
| 1477 |  | Check List 3 | 1d? | 2005-02-11 | 2005-02-11 | 1476 | 9.88d |
| 1478 |  | Check List 4 | 1d? | 2005-02-12 | 2005-02-12 | 1477 | 9.88d |
| 1479 |  | Render Geometry | 1d? | 2005-02-14 | 2005-02-14 | 1478 | 9.88d |
| 1480 |  | Grass | 1d? | 2005-02-15 | 2005-02-15 | 1479 | 9.88d |
| 1481 |  | AI Maps | 1d? | 2005-02-16 | 2005-02-16 | 1480 | 9.88d |

| ID | WBS | Task | Duration | Start | Finish | Predecessors | Total float |
| --- | --- | --- | --- | --- | --- | --- | --- |
| 1482 |  | Graphs | 1d? | 2005-02-17 | 2005-02-17 | 1481 | 9.88d |
| 1484 | 20.2 | **GameDesign** | 3d? | 2005-02-05 | 2005-02-08 |  | 18.88d |
| 1485 | 20.2.1 | **Secrets** | 3d? | 2005-02-05 | 2005-02-08 |  | 18.88d |
| 1486 | 20.2.1.1 | **Stage 1** | 3d? | 2005-02-05 | 2005-02-08 |  | 18.88d |
| 1487 |  | Design | 1d? | 2005-02-05 | 2005-02-05 |  | 18.88d |
| 1488 |  | Implementation | 1d? | 2005-02-07 | 2005-02-07 | 1487 | 18.88d |
| 1489 |  | Tuning | 1d? | 2005-02-08 | 2005-02-08 | 1488 | 18.88d |
| 1490 | 20.2.2 | **Smartterrains** | 3d? | 2005-02-05 | 2005-02-08 |  | 18.88d |
| 1491 | 20.2.2.1 | **Stage 1** | 3d? | 2005-02-05 | 2005-02-08 |  | 18.88d |
| 1492 |  | Design | 1d? | 2005-02-05 | 2005-02-05 |  | 18.88d |
| 1493 |  | Implementation | 1d? | 2005-02-07 | 2005-02-07 | 1492 | 18.88d |
| 1494 |  | Tuning | 1d? | 2005-02-08 | 2005-02-08 | 1493 | 18.88d |
| 1495 | 20.2.3 | **Monsters/Spawns** | 3d? | 2005-02-05 | 2005-02-08 |  | 18.88d |
| 1496 | 20.2.3.1 | **Stage 1** | 3d? | 2005-02-05 | 2005-02-08 |  | 18.88d |
| 1497 |  | Design | 1d? | 2005-02-05 | 2005-02-05 |  | 18.88d |
| 1498 |  | Implementation | 1d? | 2005-02-07 | 2005-02-07 | 1497 | 18.88d |
| 1499 |  | Tuning | 1d? | 2005-02-08 | 2005-02-08 | 1498 | 18.88d |
| 1500 | 20.2.4 | **Stalkers/Spawns** | 3d? | 2005-02-05 | 2005-02-08 |  | 18.88d |
| 1501 | 20.2.4.1 | **Stage 1** | 3d? | 2005-02-05 | 2005-02-08 |  | 18.88d |
| 1502 |  | Design | 1d? | 2005-02-05 | 2005-02-05 |  | 18.88d |
| 1503 |  | Implementation | 1d? | 2005-02-07 | 2005-02-07 | 1502 | 18.88d |
| 1504 |  | Tuning | 1d? | 2005-02-08 | 2005-02-08 | 1503 | 18.88d |
| 1505 | 20.2.5 | **Anomalies/Spawns** | 3d? | 2005-02-05 | 2005-02-08 |  | 18.88d |
| 1506 | 20.2.5.1 | **Stage 1** | 3d? | 2005-02-05 | 2005-02-08 |  | 18.88d |
| 1507 |  | Design | 1d? | 2005-02-05 | 2005-02-05 |  | 18.88d |
| 1508 |  | Implementation | 1d? | 2005-02-07 | 2005-02-07 | 1507 | 18.88d |
| 1509 |  | Tuning | 1d? | 2005-02-08 | 2005-02-08 | 1508 | 18.88d |
| 1510 | 20.2.6 | **Physicks** | 3d? | 2005-02-05 | 2005-02-08 |  | 18.88d |
| 1511 | 20.2.6.1 | **Stage 1** | 3d? | 2005-02-05 | 2005-02-08 |  | 18.88d |
| 1512 |  | Design | 1d? | 2005-02-05 | 2005-02-05 |  | 18.88d |
| 1513 |  | Implementation | 1d? | 2005-02-07 | 2005-02-07 | 1512 | 18.88d |
| 1514 |  | Tuning | 1d? | 2005-02-08 | 2005-02-08 | 1513 | 18.88d |
| 1516 | 20.3 | **Scripts** | 5d? | 2005-02-05 | 2005-02-10 |  | 16.88d |
| 1517 | 20.3.1 | **Script 1** | 5d? | 2005-02-05 | 2005-02-10 |  | 16.88d |
| 1518 |  | Scenario(text) | 1d? | 2005-02-05 | 2005-02-05 |  | 16.88d |
| 1519 |  | Постановка задач | 1d? | 2005-02-07 | 2005-02-07 | 1518 | 16.88d |
| 1520 |  | Implimentation | 1d? | 2005-02-08 | 2005-02-08 | 1519 | 16.88d |
| 1521 |  | Dilogs/VO/Icons/Objects/Animations | 1d? | 2005-02-09 | 2005-02-09 | 1520 | 16.88d |
| 1522 |  | Настройка | 1d? | 2005-02-10 | 2005-02-10 | 1521 | 16.88d |
| 1523 | 20.3.2 | **Script 2** | 5d? | 2005-02-05 | 2005-02-10 |  | 16.88d |
| 1524 |  | Scenario(text) | 1d? | 2005-02-05 | 2005-02-05 |  | 16.88d |
| 1525 |  | Постановка задач | 1d? | 2005-02-07 | 2005-02-07 | 1524 | 16.88d |
| 1526 |  | Implimentation | 1d? | 2005-02-08 | 2005-02-08 | 1525 | 16.88d |
| 1527 |  | Dilogs/VO/Icons/Objects/Animations | 1d? | 2005-02-09 | 2005-02-09 | 1526 | 16.88d |
| 1528 |  | Настройка | 1d? | 2005-02-10 | 2005-02-10 | 1527 | 16.88d |
| 1529 | 20.3.3 | **Script 3** | 5d? | 2005-02-05 | 2005-02-10 |  | 16.88d |
| 1530 |  | Scenario(text) | 1d? | 2005-02-05 | 2005-02-05 |  | 16.88d |
| 1531 |  | Постановка задач | 1d? | 2005-02-07 | 2005-02-07 | 1530 | 16.88d |
| 1532 |  | Implimentation | 1d? | 2005-02-08 | 2005-02-08 | 1531 | 16.88d |
| 1533 |  | Dilogs/VO/Icons/Objects/Animations | 1d? | 2005-02-09 | 2005-02-09 | 1532 | 16.88d |
| 1534 |  | Настройка | 1d? | 2005-02-10 | 2005-02-10 | 1533 | 16.88d |
| 1535 | 20.3.4 | **Script 4** | 5d? | 2005-02-05 | 2005-02-10 |  | 16.88d |
| 1536 |  | Scenario(text) | 1d? | 2005-02-05 | 2005-02-05 |  | 16.88d |
| 1537 |  | Постановка задач | 1d? | 2005-02-07 | 2005-02-07 | 1536 | 16.88d |
| 1538 |  | Implimentation | 1d? | 2005-02-08 | 2005-02-08 | 1537 | 16.88d |
| 1539 |  | Dilogs/VO/Icons/Objects/Animations | 1d? | 2005-02-09 | 2005-02-09 | 1538 | 16.88d |
| 1540 |  | Настройка | 1d? | 2005-02-10 | 2005-02-10 | 1539 | 16.88d |
| 1541 | 20.3.5 | **Script 5** | 5d? | 2005-02-05 | 2005-02-10 |  | 16.88d |
| 1542 |  | Scenario(text) | 1d? | 2005-02-05 | 2005-02-05 |  | 16.88d |
| 1543 |  | Постановка задач | 1d? | 2005-02-07 | 2005-02-07 | 1542 | 16.88d |
| 1544 |  | Implimentation | 1d? | 2005-02-08 | 2005-02-08 | 1543 | 16.88d |
| 1545 |  | Dilogs/VO/Icons/Objects/Animations | 1d? | 2005-02-09 | 2005-02-09 | 1544 | 16.88d |
| 1546 |  | Настройка | 1d? | 2005-02-10 | 2005-02-10 | 1545 | 16.88d |
| 1549 | 21 | **14_Swamp** | 11d? | 2005-02-18 | 2005-03-02 | 1470 | 10.88d |
| 1550 | 21.1 | **LevelDesign** | 11d? | 2005-02-18 | 2005-03-02 |  | 10.88d |
| 1551 | 21.1.1 | **Stage 1** | 11d? | 2005-02-18 | 2005-03-02 |  | 10.88d |
| 1552 |  | List of Changes | 2d | 2005-02-18 | 2005-02-19 |  | 10.88d |
| 1553 |  | Changed Geometry | 1d? | 2005-02-21 | 2005-02-21 | 1552 | 10.88d |
| 1554 |  | Check List 1 | 1d? | 2005-02-22 | 2005-02-22 | 1553 | 10.88d |
| 1555 |  | Check List 2 | 1d? | 2005-02-23 | 2005-02-23 | 1554 | 10.88d |

| ID | WBS | Task | Duration | Start | Finish | Predecessors | Total float |
| --- | --- | --- | --- | --- | --- | --- | --- |
| 1556 |  | Check List 3 | 1d? | 2005-02-24 | 2005-02-24 | 1555 | 10.88d |
| 1557 |  | Check List 4 | 1d? | 2005-02-25 | 2005-02-25 | 1556 | 10.88d |
| 1558 |  | Render Geometry | 1d? | 2005-02-26 | 2005-02-26 | 1557 | 10.88d |
| 1559 |  | Grass | 1d? | 2005-02-28 | 2005-02-28 | 1558 | 10.88d |
| 1560 |  | AI Maps | 1d? | 2005-03-01 | 2005-03-01 | 1559 | 10.88d |
| 1561 |  | Graphs | 1d? | 2005-03-02 | 2005-03-02 | 1560 | 10.88d |
| 1563 | 21.2 | **GameDesign** | 3d? | 2005-02-18 | 2005-02-21 |  | 45.88d |
| 1564 | 21.2.1 | **Secrets** | 3d? | 2005-02-18 | 2005-02-21 |  | 45.88d |
| 1565 | 21.2.1.1 | **Stage 1** | 3d? | 2005-02-18 | 2005-02-21 |  | 45.88d |
| 1566 |  | Design | 1d? | 2005-02-18 | 2005-02-18 |  | 45.88d |
| 1567 |  | Implementation | 1d? | 2005-02-19 | 2005-02-19 | 1566 | 45.88d |
| 1568 |  | Tuning | 1d? | 2005-02-21 | 2005-02-21 | 1567 | 45.88d |
| 1569 | 21.2.2 | **Smartterrains** | 3d? | 2005-02-18 | 2005-02-21 |  | 45.88d |
| 1570 | 21.2.2.1 | **Stage 1** | 3d? | 2005-02-18 | 2005-02-21 |  | 45.88d |
| 1571 |  | Design | 1d? | 2005-02-18 | 2005-02-18 |  | 45.88d |
| 1572 |  | Implementation | 1d? | 2005-02-19 | 2005-02-19 | 1571 | 45.88d |
| 1573 |  | Tuning | 1d? | 2005-02-21 | 2005-02-21 | 1572 | 45.88d |
| 1574 | 21.2.3 | **Monsters/Spawns** | 3d? | 2005-02-18 | 2005-02-21 |  | 45.88d |
| 1575 | 21.2.3.1 | **Stage 1** | 3d? | 2005-02-18 | 2005-02-21 |  | 45.88d |
| 1576 |  | Design | 1d? | 2005-02-18 | 2005-02-18 |  | 45.88d |
| 1577 |  | Implementation | 1d? | 2005-02-19 | 2005-02-19 | 1576 | 45.88d |
| 1578 |  | Tuning | 1d? | 2005-02-21 | 2005-02-21 | 1577 | 45.88d |
| 1579 | 21.2.4 | **Stalkers/Spawns** | 3d? | 2005-02-18 | 2005-02-21 |  | 45.88d |
| 1580 | 21.2.4.1 | **Stage 1** | 3d? | 2005-02-18 | 2005-02-21 |  | 45.88d |
| 1581 |  | Design | 1d? | 2005-02-18 | 2005-02-18 |  | 45.88d |
| 1582 |  | Implementation | 1d? | 2005-02-19 | 2005-02-19 | 1581 | 45.88d |
| 1583 |  | Tuning | 1d? | 2005-02-21 | 2005-02-21 | 1582 | 45.88d |
| 1584 | 21.2.5 | **Anomalies/Spawns** | 3d? | 2005-02-18 | 2005-02-21 |  | 45.88d |
| 1585 | 21.2.5.1 | **Stage 1** | 3d? | 2005-02-18 | 2005-02-21 |  | 45.88d |
| 1586 |  | Design | 1d? | 2005-02-18 | 2005-02-18 |  | 45.88d |
| 1587 |  | Implementation | 1d? | 2005-02-19 | 2005-02-19 | 1586 | 45.88d |
| 1588 |  | Tuning | 1d? | 2005-02-21 | 2005-02-21 | 1587 | 45.88d |
| 1589 | 21.2.6 | **Physicks** | 3d? | 2005-02-18 | 2005-02-21 |  | 45.88d |
| 1590 | 21.2.6.1 | **Stage 1** | 3d? | 2005-02-18 | 2005-02-21 |  | 45.88d |
| 1591 |  | Design | 1d? | 2005-02-18 | 2005-02-18 |  | 45.88d |
| 1592 |  | Implementation | 1d? | 2005-02-19 | 2005-02-19 | 1591 | 45.88d |
| 1593 |  | Tuning | 1d? | 2005-02-21 | 2005-02-21 | 1592 | 45.88d |
| 1595 | 21.3 | **Scripts** | 5d? | 2005-02-18 | 2005-02-23 |  | 43.88d |
| 1596 | 21.3.1 | **Script 1** | 5d? | 2005-02-18 | 2005-02-23 |  | 43.88d |
| 1597 |  | Scenario(text) | 1d? | 2005-02-18 | 2005-02-18 |  | 43.88d |
| 1598 |  | Постановка задач | 1d? | 2005-02-19 | 2005-02-19 | 1597 | 43.88d |
| 1599 |  | Implimentation | 1d? | 2005-02-21 | 2005-02-21 | 1598 | 43.88d |
| 1600 |  | Dilogs/VO/Icons/Objects/Animations | 1d? | 2005-02-22 | 2005-02-22 | 1599 | 43.88d |
| 1601 |  | Настройка | 1d? | 2005-02-23 | 2005-02-23 | 1600 | 43.88d |
| 1602 | 21.3.2 | **Script 2** | 5d? | 2005-02-18 | 2005-02-23 |  | 43.88d |
| 1603 |  | Scenario(text) | 1d? | 2005-02-18 | 2005-02-18 |  | 43.88d |
| 1604 |  | Постановка задач | 1d? | 2005-02-19 | 2005-02-19 | 1603 | 43.88d |
| 1605 |  | Implimentation | 1d? | 2005-02-21 | 2005-02-21 | 1604 | 43.88d |
| 1606 |  | Dilogs/VO/Icons/Objects/Animations | 1d? | 2005-02-22 | 2005-02-22 | 1605 | 43.88d |
| 1607 |  | Настройка | 1d? | 2005-02-23 | 2005-02-23 | 1606 | 43.88d |
| 1608 | 21.3.3 | **Script 3** | 5d? | 2005-02-18 | 2005-02-23 |  | 43.88d |
| 1609 |  | Scenario(text) | 1d? | 2005-02-18 | 2005-02-18 |  | 43.88d |
| 1610 |  | Постановка задач | 1d? | 2005-02-19 | 2005-02-19 | 1609 | 43.88d |
| 1611 |  | Implimentation | 1d? | 2005-02-21 | 2005-02-21 | 1610 | 43.88d |
| 1612 |  | Dilogs/VO/Icons/Objects/Animations | 1d? | 2005-02-22 | 2005-02-22 | 1611 | 43.88d |
| 1613 |  | Настройка | 1d? | 2005-02-23 | 2005-02-23 | 1612 | 43.88d |
| 1614 | 21.3.4 | **Script 4** | 5d? | 2005-02-18 | 2005-02-23 |  | 43.88d |
| 1615 |  | Scenario(text) | 1d? | 2005-02-18 | 2005-02-18 |  | 43.88d |
| 1616 |  | Постановка задач | 1d? | 2005-02-19 | 2005-02-19 | 1615 | 43.88d |
| 1617 |  | Implimentation | 1d? | 2005-02-21 | 2005-02-21 | 1616 | 43.88d |
| 1618 |  | Dilogs/VO/Icons/Objects/Animations | 1d? | 2005-02-22 | 2005-02-22 | 1617 | 43.88d |
| 1619 |  | Настройка | 1d? | 2005-02-23 | 2005-02-23 | 1618 | 43.88d |
| 1620 | 21.3.5 | **Script 5** | 5d? | 2005-02-18 | 2005-02-23 |  | 43.88d |
| 1621 |  | Scenario(text) | 1d? | 2005-02-18 | 2005-02-18 |  | 43.88d |
| 1622 |  | Постановка задач | 1d? | 2005-02-19 | 2005-02-19 | 1621 | 43.88d |
| 1623 |  | Implimentation | 1d? | 2005-02-21 | 2005-02-21 | 1622 | 43.88d |
| 1624 |  | Dilogs/VO/Icons/Objects/Animations | 1d? | 2005-02-22 | 2005-02-22 | 1623 | 43.88d |
| 1625 |  | Настройка | 1d? | 2005-02-23 | 2005-02-23 | 1624 | 43.88d |
| 1640 | 22 | **21_Generators** | 11d? | 2005-01-24 | 2005-02-04 |  | 44d |
| 1641 | 22.1 | **LevelDesign** | 11d? | 2005-01-24 | 2005-02-04 |  | 44d |

| ID | WBS | Task | Duration | Start | Finish | Predecessors | Total float |
| --- | --- | --- | --- | --- | --- | --- | --- |
| 1642 | 22.1.1 | **Stage 1** | 11d? | 2005-01-24 | 2005-02-04 |  | 44d |
| 1643 |  | List of Changes | 2d | 2005-01-24 | 2005-01-25 |  | 44d |
| 1644 |  | Changed Geometry | 1d? | 2005-01-26 | 2005-01-26 | 1643 | 44d |
| 1645 |  | Check List 1 | 1d? | 2005-01-27 | 2005-01-27 | 1644 | 44d |
| 1646 |  | Check List 2 | 1d? | 2005-01-28 | 2005-01-28 | 1645 | 44d |
| 1647 |  | Check List 3 | 1d? | 2005-01-29 | 2005-01-29 | 1646 | 44d |
| 1648 |  | Check List 4 | 1d? | 2005-01-31 | 2005-01-31 | 1647 | 44d |
| 1649 |  | Render Geometry | 1d? | 2005-02-01 | 2005-02-01 | 1648 | 44d |
| 1650 |  | Grass | 1d? | 2005-02-02 | 2005-02-02 | 1649 | 44d |
| 1651 |  | AI Maps | 1d? | 2005-02-03 | 2005-02-03 | 1650 | 44d |
| 1652 |  | Graphs | 1d? | 2005-02-04 | 2005-02-04 | 1651 | 44d |
| 1654 | 22.2 | **GameDesign** | 3d? | 2005-01-24 | 2005-01-26 |  | 52d |
| 1655 | 22.2.1 | **Secrets** | 3d? | 2005-01-24 | 2005-01-26 |  | 52d |
| 1656 | 22.2.1.1 | **Stage 1** | 3d? | 2005-01-24 | 2005-01-26 |  | 52d |
| 1657 |  | Design | 1d? | 2005-01-24 | 2005-01-24 |  | 52d |
| 1658 |  | Implementation | 1d? | 2005-01-25 | 2005-01-25 | 1657 | 52d |
| 1659 |  | Tuning | 1d? | 2005-01-26 | 2005-01-26 | 1658 | 52d |
| 1660 | 22.2.2 | **Smartterrains** | 3d? | 2005-01-24 | 2005-01-26 |  | 52d |
| 1661 | 22.2.2.1 | **Stage 1** | 3d? | 2005-01-24 | 2005-01-26 |  | 52d |
| 1662 |  | Design | 1d? | 2005-01-24 | 2005-01-24 |  | 52d |
| 1663 |  | Implementation | 1d? | 2005-01-25 | 2005-01-25 | 1662 | 52d |
| 1664 |  | Tuning | 1d? | 2005-01-26 | 2005-01-26 | 1663 | 52d |
| 1665 | 22.2.3 | **Monsters/Spawns** | 3d? | 2005-01-24 | 2005-01-26 |  | 52d |
| 1666 | 22.2.3.1 | **Stage 1** | 3d? | 2005-01-24 | 2005-01-26 |  | 52d |
| 1667 |  | Design | 1d? | 2005-01-24 | 2005-01-24 |  | 52d |
| 1668 |  | Implementation | 1d? | 2005-01-25 | 2005-01-25 | 1667 | 52d |
| 1669 |  | Tuning | 1d? | 2005-01-26 | 2005-01-26 | 1668 | 52d |
| 1670 | 22.2.4 | **Stalkers/Spawns** | 3d? | 2005-01-24 | 2005-01-26 |  | 52d |
| 1671 | 22.2.4.1 | **Stage 1** | 3d? | 2005-01-24 | 2005-01-26 |  | 52d |
| 1672 |  | Design | 1d? | 2005-01-24 | 2005-01-24 |  | 52d |
| 1673 |  | Implementation | 1d? | 2005-01-25 | 2005-01-25 | 1672 | 52d |
| 1674 |  | Tuning | 1d? | 2005-01-26 | 2005-01-26 | 1673 | 52d |
| 1675 | 22.2.5 | **Anomalies/Spawns** | 3d? | 2005-01-24 | 2005-01-26 |  | 52d |
| 1676 | 22.2.5.1 | **Stage 1** | 3d? | 2005-01-24 | 2005-01-26 |  | 52d |
| 1677 |  | Design | 1d? | 2005-01-24 | 2005-01-24 |  | 52d |
| 1678 |  | Implementation | 1d? | 2005-01-25 | 2005-01-25 | 1677 | 52d |
| 1679 |  | Tuning | 1d? | 2005-01-26 | 2005-01-26 | 1678 | 52d |
| 1680 | 22.2.6 | **Physicks** | 3d? | 2005-01-24 | 2005-01-26 |  | 52d |
| 1681 | 22.2.6.1 | **Stage 1** | 3d? | 2005-01-24 | 2005-01-26 |  | 52d |
| 1682 |  | Design | 1d? | 2005-01-24 | 2005-01-24 |  | 52d |
| 1683 |  | Implementation | 1d? | 2005-01-25 | 2005-01-25 | 1682 | 52d |
| 1684 |  | Tuning | 1d? | 2005-01-26 | 2005-01-26 | 1683 | 52d |
| 1686 | 22.3 | **Scripts** | 5d? | 2005-01-24 | 2005-01-28 |  | 50d |
| 1687 | 22.3.1 | **Script 1** | 5d? | 2005-01-24 | 2005-01-28 |  | 50d |
| 1688 |  | Scenario(text) | 1d? | 2005-01-24 | 2005-01-24 |  | 50d |
| 1689 |  | Постановка задач | 1d? | 2005-01-25 | 2005-01-25 | 1688 | 50d |
| 1690 |  | Implimentation | 1d? | 2005-01-26 | 2005-01-26 | 1689 | 50d |
| 1691 |  | Dilogs/VO/Icons/Objects/Animations | 1d? | 2005-01-27 | 2005-01-27 | 1690 | 50d |
| 1692 |  | Настройка | 1d? | 2005-01-28 | 2005-01-28 | 1691 | 50d |
| 1693 | 22.3.2 | **Script 2** | 5d? | 2005-01-24 | 2005-01-28 |  | 50d |
| 1694 |  | Scenario(text) | 1d? | 2005-01-24 | 2005-01-24 |  | 50d |
| 1695 |  | Постановка задач | 1d? | 2005-01-25 | 2005-01-25 | 1694 | 50d |
| 1696 |  | Implimentation | 1d? | 2005-01-26 | 2005-01-26 | 1695 | 50d |
| 1697 |  | Dilogs/VO/Icons/Objects/Animations | 1d? | 2005-01-27 | 2005-01-27 | 1696 | 50d |
| 1698 |  | Настройка | 1d? | 2005-01-28 | 2005-01-28 | 1697 | 50d |
| 1699 | 22.3.3 | **Script 3** | 5d? | 2005-01-24 | 2005-01-28 |  | 50d |
| 1700 |  | Scenario(text) | 1d? | 2005-01-24 | 2005-01-24 |  | 50d |
| 1701 |  | Постановка задач | 1d? | 2005-01-25 | 2005-01-25 | 1700 | 50d |
| 1702 |  | Implimentation | 1d? | 2005-01-26 | 2005-01-26 | 1701 | 50d |
| 1703 |  | Dilogs/VO/Icons/Objects/Animations | 1d? | 2005-01-27 | 2005-01-27 | 1702 | 50d |
| 1704 |  | Настройка | 1d? | 2005-01-28 | 2005-01-28 | 1703 | 50d |
| 1705 | 22.3.4 | **Script 4** | 5d? | 2005-01-24 | 2005-01-28 |  | 50d |
| 1706 |  | Scenario(text) | 1d? | 2005-01-24 | 2005-01-24 |  | 50d |
| 1707 |  | Постановка задач | 1d? | 2005-01-25 | 2005-01-25 | 1706 | 50d |
| 1708 |  | Implimentation | 1d? | 2005-01-26 | 2005-01-26 | 1707 | 50d |
| 1709 |  | Dilogs/VO/Icons/Objects/Animations | 1d? | 2005-01-27 | 2005-01-27 | 1708 | 50d |
| 1710 |  | Настройка | 1d? | 2005-01-28 | 2005-01-28 | 1709 | 50d |
| 1711 | 22.3.5 | **Script 5** | 5d? | 2005-01-24 | 2005-01-28 |  | 50d |
| 1712 |  | Scenario(text) | 1d? | 2005-01-24 | 2005-01-24 |  | 50d |
| 1713 |  | Постановка задач | 1d? | 2005-01-25 | 2005-01-25 | 1712 | 50d |

| ID | Task | Duration | Start | Finish | Predecessors | Total float |
| --- | --- | --- | --- | --- | --- | --- |
| 1714 | Implimentation | 1d? | 2005-01-26 | 2005-01-26 | 1713 | 50d |
| 1715 | Dilogs/VO/Icons/Objects/Animations | 1d? | 2005-01-27 | 2005-01-27 | 1714 | 50d |
| 1716 | Настройка | 1d? | 2005-01-28 | 2005-01-28 | 1715 | 50d |

## Version 2 (saved 2005-01-31)

Last finish stays 2005-03-28. Complete tasks 0 → 1.

Added:

| ID | Task | Duration | Start | Finish | Predecessors | Constraint | Resources |
| --- | --- | --- | --- | --- | --- | --- | --- |
| 15 | AI Maps/Graphs | 1d? | 2005-01-24 | 2005-01-24 |  |  |  |
| 1199 | Сценарий (текст) | 1d | 2005-01-24 A | 2005-01-24 A |  |  | Mustdie |
| 1200 | **Сцена 1 - База свободы (ГУЛАГ)** | 14d? | 2005-02-01 | 2005-02-16 |  |  |  |
| 1202 | **Реализация** | 8d? | 2005-02-02 | 2005-02-10 | 1201 |  |  |
| 1203 | Реализация | 8d | 2005-02-02 | 2005-02-10 | 1201 | start no earlier than 2005-02-01 | Сидорович |
| 1204 | Доработка X в движке | 1d? | 2005-02-02 | 2005-02-02 |  |  | Dima |
| 1205 | Расстановка | 4d | 2005-02-02 | 2005-02-05 | 1199 | start no earlier than 2005-02-02 | Mustdie |
| 1206 | Тексты, Диалоги, Задания, Отметки на карте, новости, профили персонажей (продумать) | 4d | 2005-02-11 | 2005-02-15 |  | start no earlier than 2005-02-11 | Mustdie |
| 1207 | **Тестирование** | 12d? | 2005-02-03 | 2005-02-16 | 1204 |  |  |
| 1208 | Тестирование | 1d | 2005-02-16 | 2005-02-16 |  | start no earlier than 2005-02-16 |  |
| 1209 | Проверить расстановку AI нод вокруг дерева | 1d? | 2005-02-03 | 2005-02-03 |  |  | Partizan |
| 1210 | **Сцена 2 - Группировка Долга** | 4d? | 2005-02-16 | 2005-02-19 |  |  |  |
| 1212 | **Реализация** | 2d? | 2005-02-17 | 2005-02-18 | 1211 |  |  |
| 1213 | Реализация | 2d | 2005-02-17 | 2005-02-18 | 1211 | start no earlier than 2005-02-16 | Сидорович |
| 1214 | Доработка X в движке | 1d? | 2005-02-17 | 2005-02-17 |  |  | Dima |
| 1215 | Расстановка | 1d | 2005-02-17 | 2005-02-17 |  | start no earlier than 2005-02-17 | Mustdie |
| 1216 | Тексты, Диалоги, Задания, Отметки на карте, новости, профили персонажей (продумать) | 2d | 2005-02-18 | 2005-02-19 | 1215 |  | Mustdie |
| 1217 | **Тестирование** | 1d? | 2005-02-18 | 2005-02-18 | 1214 |  |  |
| 1218 | Тестирование | 1d | 2005-02-18 | 2005-02-18 |  | start no earlier than 2005-02-18 |  |
| 1219 | Проверить расстановку AI нод вокруг дерева | 1d? | 2005-02-18 | 2005-02-18 |  |  | Partizan |
| 1220 | **Сцена 3 - Сумасшедший сталкер** | 2.25d? | 2005-02-18 | 2005-02-21 |  |  |  |
| 1222 | **Реализация** | 1d? | 2005-02-21 | 2005-02-21 |  |  |  |
| 1223 | Реализация | 1d | 2005-02-21 | 2005-02-21 |  | start no earlier than 2005-02-21 | Сидорович |
| 1224 | Доработка X в движке | 1d? | 2005-02-21 | 2005-02-21 |  | start no earlier than 2005-02-21 |  |
| 1225 | Расстановка | 1d | 2005-02-21 | 2005-02-21 |  | start no earlier than 2005-02-21 | Mustdie |
| 1226 | Тексты, Диалоги, Задания, Отметки на карте, новости, профили персонажей (продумать) | 1d | 2005-02-21 | 2005-02-21 |  | start no earlier than 2005-02-21 | Mustdie |
| 1227 | **Тестирование** | 1d? | 2005-02-21 | 2005-02-21 |  |  |  |
| 1228 | Тестирование | 1d | 2005-02-21 | 2005-02-21 |  | start no earlier than 2005-02-21 |  |
| 1229 | Проверить расстановку AI нод вокруг дерева | 1d? | 2005-02-21 | 2005-02-21 |  | start no earlier than 2005-02-21 |  |
| 1230 | **Сцена 4 - Бой - Киллеры и Бандтиты** | 1d? | 2005-02-22 | 2005-02-22 |  |  |  |
| 1232 | **Реализация** | 1d? | 2005-02-22 | 2005-02-22 |  |  |  |
| 1233 | Реализация | 1d | 2005-02-22 | 2005-02-22 |  | start no earlier than 2005-02-22 | Сидорович |
| 1234 | Доработка X в движке | 1d? | 2005-02-22 | 2005-02-22 |  | start no earlier than 2005-02-22 |  |
| 1235 | Расстановка | 1d? | 2005-02-22 | 2005-02-22 |  | start no earlier than 2005-02-22 | Mustdie |
| 1236 | Тексты, Диалоги, Задания, Отметки на карте, новости, профили персонажей (продумать) | 1d? | 2005-02-22 | 2005-02-22 |  | start no earlier than 2005-02-22 | Mustdie |
| 1237 | **Тестирование** | 1d? | 2005-02-22 | 2005-02-22 |  |  |  |
| 1238 | Тестирование | 1d? | 2005-02-22 | 2005-02-22 |  | start no earlier than 2005-02-22 |  |
| 1239 | Проверить расстановку AI нод вокруг дерева | 1d? | 2005-02-22 | 2005-02-22 |  | start no earlier than 2005-02-22 |  |
| 1240 | **Сцена 5 - Деревня** | 3d? | 2005-02-23 | 2005-02-25 |  |  |  |
| 1242 | **Реализация** | 2d? | 2005-02-24 | 2005-02-25 |  |  |  |
| 1243 | Реализация | 2d | 2005-02-24 | 2005-02-25 |  | start no earlier than 2005-02-24 | Сидорович |
| 1244 | Доработка X в движке | 1d? | 2005-02-24 | 2005-02-24 |  | start no earlier than 2005-02-24 |  |
| 1245 | Расстановка | 2d | 2005-02-24 | 2005-02-25 |  | start no earlier than 2005-02-24 | Mustdie |
| 1246 | Тексты, Диалоги, Задания, Отметки на карте, новости, профили персонажей (продумать) | 1d? | 2005-02-24 | 2005-02-24 |  | start no earlier than 2005-02-24 | Mustdie |
| 1247 | **Тестирование** | 1d? | 2005-02-24 | 2005-02-24 |  |  |  |
| 1248 | Тестирование | 1d? | 2005-02-24 | 2005-02-24 |  | start no earlier than 2005-02-24 |  |
| 1249 | Проверить расстановку AI нод вокруг дерева | 1d? | 2005-02-24 | 2005-02-24 |  | start no earlier than 2005-02-24 |  |

Removed: 13 AI Maps; 14 Graphs; 1200 Script 1; 1201 Scenario(text); 1203 Implimentation; 1204 Dilogs/VO/Icons/Objects/Animations; 1205 Настройка; 1206 Script 2; 1207 Scenario(text); 1209 Implimentation; 1210 Dilogs/VO/Icons/Objects/Animations; 1211 Настройка; 1212 Script 3; 1213 Scenario(text); 1215 Implimentation; 1216 Dilogs/VO/Icons/Objects/Animations; 1217 Настройка; 1218 Script 4; 1219 Scenario(text); 1221 Implimentation; 1222 Dilogs/VO/Icons/Objects/Animations; 1223 Настройка; 1224 Script 5; 1225 Scenario(text); 1227 Implimentation; 1228 Dilogs/VO/Icons/Objects/Animations; 1229 Настройка

Changed:

| ID | Task | Start | Finish | Duration | Complete | Total float | Predecessors | Other |
| --- | --- | --- | --- | --- | --- | --- | --- | --- |
| 2 | **01_Escape** |  | 2005-02-04 → 2005-02-02 (-2d) | 11d? → 9d? |  | 44d → 46d |  |  |
| 3 | **LevelDesign** |  | 2005-02-04 → 2005-02-02 (-2d) | 11d? → 9d? |  | 44d → 46d |  |  |
| 4 | **Stage 1** |  | 2005-02-04 → 2005-02-02 (-2d) | 11d? → 9d? |  | 44d → 46d |  |  |
| 1152 | **10_Military_Base** | 2005-01-24 A | 2005-02-04 → 2005-03-01 (+25d) | 11d? → 31.88d? | 0% → 1% | -29.12d → -30.88d |  |  |
| 1166 | **GameDesign** |  | 2005-01-26 → 2005-03-01 (+34d) | 3d? → 31.88d? |  | -21.12d → -50d |  |  |
| 1167 | **Secrets** | 2005-01-24 → 2005-02-25 (+32d) | 2005-01-26 → 2005-03-01 (+34d) | 3d? → 3.88d? |  | -21.12d → -50d |  |  |
| 1168 | **Stage 1** | 2005-01-24 → 2005-02-25 (+32d) | 2005-01-26 → 2005-03-01 (+34d) | 3d? → 3.88d? |  | -21.12d → -50d |  |  |
| 1169 | Design | 2005-01-24 → 2005-02-25 (+32d) | 2005-01-24 → 2005-02-26 (+33d) | 1d? → 1.88d? |  | -21.12d → -50d |  | constraint none → start no earlier than 2005-02-25; resources none → Mustdie |
| 1170 | Implementation | 2005-01-25 → 2005-02-26 (+32d) | 2005-01-25 → 2005-02-28 (+34d) |  |  | -21.12d → -50d |  | resources none → Mustdie |
| 1171 | Tuning | 2005-01-26 → 2005-02-28 (+33d) | 2005-01-26 → 2005-03-01 (+34d) |  |  | -21.12d → -50d |  |  |
| 1172 | **Smartterrains** | 2005-01-24 → 2005-02-25 (+32d) | 2005-01-26 → 2005-03-01 (+34d) | 3d? → 3.88d? |  | -21.12d → -50d |  |  |
| 1173 | **Stage 1** | 2005-01-24 → 2005-02-25 (+32d) | 2005-01-26 → 2005-03-01 (+34d) | 3d? → 3.88d? |  | -21.12d → -50d |  |  |
| 1174 | Design | 2005-01-24 → 2005-02-25 (+32d) | 2005-01-24 → 2005-02-26 (+33d) | 1d? → 1.88d? |  | -21.12d → -50d |  | constraint none → start no earlier than 2005-02-25; resources none → Mustdie |
| 1175 | Implementation | 2005-01-25 → 2005-02-26 (+32d) | 2005-01-25 → 2005-02-28 (+34d) |  |  | -21.12d → -50d |  |  |
| 1176 | Tuning | 2005-01-26 → 2005-02-28 (+33d) | 2005-01-26 → 2005-03-01 (+34d) |  |  | -21.12d → -50d |  |  |
| 1177 | **Monsters/Spawns** | 2005-01-24 → 2005-02-25 (+32d) | 2005-01-26 → 2005-03-01 (+34d) | 3d? → 3.88d? |  | -21.12d → -50d |  |  |
| 1178 | **Stage 1** | 2005-01-24 → 2005-02-25 (+32d) | 2005-01-26 → 2005-03-01 (+34d) | 3d? → 3.88d? |  | -21.12d → -50d |  |  |
| 1179 | Design | 2005-01-24 → 2005-02-25 (+32d) | 2005-01-24 → 2005-02-26 (+33d) | 1d? → 1.88d? |  | -21.12d → -50d |  | constraint none → start no earlier than 2005-02-25; resources none → Маст Дай, Сидорович |
| 1180 | Implementation | 2005-01-25 → 2005-02-26 (+32d) | 2005-01-25 → 2005-02-28 (+34d) |  |  | -21.12d → -50d |  |  |
| 1181 | Tuning | 2005-01-26 → 2005-02-28 (+33d) | 2005-01-26 → 2005-03-01 (+34d) |  |  | -21.12d → -50d |  |  |
| 1182 | **Stalkers/Spawns** | 2005-01-24 → 2005-02-25 (+32d) | 2005-01-26 → 2005-03-01 (+34d) | 3d? → 3.88d? |  | -21.12d → -50d |  |  |
| 1183 | **Stage 1** | 2005-01-24 → 2005-02-25 (+32d) | 2005-01-26 → 2005-03-01 (+34d) | 3d? → 3.88d? |  | -21.12d → -50d |  |  |
| 1184 | Design | 2005-01-24 → 2005-02-25 (+32d) | 2005-01-24 → 2005-02-26 (+33d) | 1d? → 1.88d? |  | -21.12d → -50d |  | constraint none → start no earlier than 2005-02-25; resources none → Сидорович, Маст Дай |
| 1185 | Implementation | 2005-01-25 → 2005-02-26 (+32d) | 2005-01-25 → 2005-02-28 (+34d) |  |  | -21.12d → -50d |  |  |
| 1186 | Tuning | 2005-01-26 → 2005-02-28 (+33d) | 2005-01-26 → 2005-03-01 (+34d) |  |  | -21.12d → -50d |  |  |
| 1187 | **Anomalies/Spawns** | 2005-01-24 → 2005-02-25 (+32d) | 2005-01-26 → 2005-03-01 (+34d) | 3d? → 3.88d? |  | -21.12d → -50d |  |  |
| 1188 | **Stage 1** | 2005-01-24 → 2005-02-25 (+32d) | 2005-01-26 → 2005-03-01 (+34d) | 3d? → 3.88d? |  | -21.12d → -50d |  |  |
| 1189 | Design | 2005-01-24 → 2005-02-25 (+32d) | 2005-01-24 → 2005-02-26 (+33d) | 1d? → 1.88d? |  | -21.12d → -50d |  | constraint none → start no earlier than 2005-02-25; resources none → Сидорович, Маст Дай |
| 1190 | Implementation | 2005-01-25 → 2005-02-26 (+32d) | 2005-01-25 → 2005-02-28 (+34d) |  |  | -21.12d → -50d |  |  |
| 1191 | Tuning | 2005-01-26 → 2005-02-28 (+33d) | 2005-01-26 → 2005-03-01 (+34d) |  |  | -21.12d → -50d |  |  |
| 1198 | **Scripts** | 2005-01-24 A | 2005-01-28 → 2005-02-25 (+28d) | 5d? → 29d? | 0% → 2% | -23.12d → -28d |  | constraint none → finish no later than 2005-02-25 |
| 1201 | Постановка задач | 2005-01-25 → 2005-02-01 (+7d) | 2005-01-25 → 2005-02-01 (+7d) |  |  | -23.12d → -34.12d | Scenario(text) → none | constraint none → start no earlier than 2005-02-01; resources none → Сидорович |
| 1211 | Постановка задач | 2005-01-25 → 2005-02-16 (+22d) | 2005-01-25 → 2005-02-16 (+22d) | 1d? → 1d |  | -23.12d → -41.12d | Scenario(text) → none | constraint none → start no earlier than 2005-02-16; resources none → Сидорович |
| 1221 | Постановка задач | 2005-01-25 → 2005-02-18 (+24d) | 2005-01-25 → 2005-02-19 (+25d) | 1d? → 1d |  | -23.12d → -41.88d | Scenario(text) → none | constraint none → finish no earlier than 2005-02-19; resources none → Сидорович |
| 1231 | Постановка задач | 2005-01-25 → 2005-02-22 (+28d) | 2005-01-25 → 2005-02-22 (+28d) |  |  | -23.12d → -44.12d | Scenario(text) → none | constraint none → start no earlier than 2005-02-22; resources none → Сидорович |
| 1241 | Постановка задач | 2005-01-25 → 2005-02-23 (+29d) | 2005-01-25 → 2005-02-23 (+29d) |  |  | -23.12d → -45.12d | Scenario(text) → none | constraint none → start no earlier than 2005-02-23; resources none → Сидорович |
| 1257 | **20_Sarcofag** | 2005-02-05 → 2005-03-01 (+24d) | 2005-02-17 → 2005-03-14 (+25d) |  |  | -29.12d → -50d |  |  |
| 1258 | **LevelDesign** | 2005-02-05 → 2005-03-01 (+24d) | 2005-02-17 → 2005-03-14 (+25d) |  |  | -29.12d → -50d |  |  |
| 1259 | **Stage 1** | 2005-02-05 → 2005-03-01 (+24d) | 2005-02-17 → 2005-03-14 (+25d) |  |  | -29.12d → -50d |  |  |
| 1260 | List of Changes | 2005-02-05 → 2005-03-01 (+24d) | 2005-02-07 → 2005-03-03 (+24d) |  |  | -29.12d → -50d |  |  |
| 1261 | Changed Geometry | 2005-02-08 → 2005-03-03 (+23d) | 2005-02-08 → 2005-03-04 (+24d) |  |  | -29.12d → -50d |  |  |
| 1262 | Check List 1 | 2005-02-09 → 2005-03-04 (+23d) | 2005-02-09 → 2005-03-05 (+24d) |  |  | -29.12d → -50d |  |  |
| 1263 | Check List 2 | 2005-02-10 → 2005-03-05 (+23d) | 2005-02-10 → 2005-03-07 (+25d) |  |  | -29.12d → -50d |  |  |
| 1264 | Check List 3 | 2005-02-11 → 2005-03-07 (+24d) | 2005-02-11 → 2005-03-08 (+25d) |  |  | -29.12d → -50d |  |  |
| 1265 | Check List 4 | 2005-02-12 → 2005-03-08 (+24d) | 2005-02-12 → 2005-03-09 (+25d) |  |  | -29.12d → -50d |  |  |
| 1266 | Render Geometry | 2005-02-14 → 2005-03-09 (+23d) | 2005-02-14 → 2005-03-10 (+24d) |  |  | -29.12d → -50d |  |  |
| 1267 | Grass | 2005-02-15 → 2005-03-10 (+23d) | 2005-02-15 → 2005-03-11 (+24d) |  |  | -29.12d → -50d |  |  |
| 1268 | AI Maps | 2005-02-16 → 2005-03-11 (+23d) | 2005-02-16 → 2005-03-12 (+24d) |  |  | -29.12d → -50d |  |  |
| 1269 | Graphs | 2005-02-17 → 2005-03-12 (+23d) | 2005-02-17 → 2005-03-14 (+25d) |  |  | -29.12d → -50d |  |  |
| 1271 | **GameDesign** | 2005-02-05 → 2005-03-01 (+24d) | 2005-02-08 → 2005-03-04 (+24d) |  |  | -21.12d → -42d |  |  |
| 1272 | **Secrets** | 2005-02-05 → 2005-03-01 (+24d) | 2005-02-08 → 2005-03-04 (+24d) |  |  | -21.12d → -42d |  |  |
| 1273 | **Stage 1** | 2005-02-05 → 2005-03-01 (+24d) | 2005-02-08 → 2005-03-04 (+24d) |  |  | -21.12d → -42d |  |  |
| 1274 | Design | 2005-02-05 → 2005-03-01 (+24d) | 2005-02-05 → 2005-03-02 (+25d) |  |  | -21.12d → -42d |  |  |
| 1275 | Implementation | 2005-02-07 → 2005-03-02 (+23d) | 2005-02-07 → 2005-03-03 (+24d) |  |  | -21.12d → -42d |  |  |
| 1276 | Tuning | 2005-02-08 → 2005-03-03 (+23d) | 2005-02-08 → 2005-03-04 (+24d) |  |  | -21.12d → -42d |  |  |
| 1277 | **Smartterrains** | 2005-02-05 → 2005-03-01 (+24d) | 2005-02-08 → 2005-03-04 (+24d) |  |  | -21.12d → -42d |  |  |
| 1278 | **Stage 1** | 2005-02-05 → 2005-03-01 (+24d) | 2005-02-08 → 2005-03-04 (+24d) |  |  | -21.12d → -42d |  |  |
| 1279 | Design | 2005-02-05 → 2005-03-01 (+24d) | 2005-02-05 → 2005-03-02 (+25d) |  |  | -21.12d → -42d |  |  |
| 1280 | Implementation | 2005-02-07 → 2005-03-02 (+23d) | 2005-02-07 → 2005-03-03 (+24d) |  |  | -21.12d → -42d |  |  |
| 1281 | Tuning | 2005-02-08 → 2005-03-03 (+23d) | 2005-02-08 → 2005-03-04 (+24d) |  |  | -21.12d → -42d |  |  |
| 1282 | **Monsters/Spawns** | 2005-02-05 → 2005-03-01 (+24d) | 2005-02-08 → 2005-03-04 (+24d) |  |  | -21.12d → -42d |  |  |
| 1283 | **Stage 1** | 2005-02-05 → 2005-03-01 (+24d) | 2005-02-08 → 2005-03-04 (+24d) |  |  | -21.12d → -42d |  |  |
| 1284 | Design | 2005-02-05 → 2005-03-01 (+24d) | 2005-02-05 → 2005-03-02 (+25d) |  |  | -21.12d → -42d |  |  |
| 1285 | Implementation | 2005-02-07 → 2005-03-02 (+23d) | 2005-02-07 → 2005-03-03 (+24d) |  |  | -21.12d → -42d |  |  |
| 1286 | Tuning | 2005-02-08 → 2005-03-03 (+23d) | 2005-02-08 → 2005-03-04 (+24d) |  |  | -21.12d → -42d |  |  |
| 1287 | **Stalkers/Spawns** | 2005-02-05 → 2005-03-01 (+24d) | 2005-02-08 → 2005-03-04 (+24d) |  |  | -21.12d → -42d |  |  |
| 1288 | **Stage 1** | 2005-02-05 → 2005-03-01 (+24d) | 2005-02-08 → 2005-03-04 (+24d) |  |  | -21.12d → -42d |  |  |
| 1289 | Design | 2005-02-05 → 2005-03-01 (+24d) | 2005-02-05 → 2005-03-02 (+25d) |  |  | -21.12d → -42d |  |  |
| 1290 | Implementation | 2005-02-07 → 2005-03-02 (+23d) | 2005-02-07 → 2005-03-03 (+24d) |  |  | -21.12d → -42d |  |  |
| 1291 | Tuning | 2005-02-08 → 2005-03-03 (+23d) | 2005-02-08 → 2005-03-04 (+24d) |  |  | -21.12d → -42d |  |  |

| ID | Task | Start | Finish | Total float |
| --- | --- | --- | --- | --- |
| 1292 | **Anomalies/Spawns** | 2005-02-05 → 2005-03-01 (+24d) | 2005-02-08 → 2005-03-04 (+24d) | -21.12d → -42d |
| 1293 | **Stage 1** | 2005-02-05 → 2005-03-01 (+24d) | 2005-02-08 → 2005-03-04 (+24d) | -21.12d → -42d |
| 1294 | Design | 2005-02-05 → 2005-03-01 (+24d) | 2005-02-05 → 2005-03-02 (+25d) | -21.12d → -42d |
| 1295 | Implementation | 2005-02-07 → 2005-03-02 (+23d) | 2005-02-07 → 2005-03-03 (+24d) | -21.12d → -42d |
| 1296 | Tuning | 2005-02-08 → 2005-03-03 (+23d) | 2005-02-08 → 2005-03-04 (+24d) | -21.12d → -42d |
| 1297 | **Physicks** | 2005-02-05 → 2005-03-01 (+24d) | 2005-02-08 → 2005-03-04 (+24d) | -21.12d → -42d |
| 1298 | **Stage 1** | 2005-02-05 → 2005-03-01 (+24d) | 2005-02-08 → 2005-03-04 (+24d) | -21.12d → -42d |
| 1299 | Design | 2005-02-05 → 2005-03-01 (+24d) | 2005-02-05 → 2005-03-02 (+25d) | -21.12d → -42d |
| 1300 | Implementation | 2005-02-07 → 2005-03-02 (+23d) | 2005-02-07 → 2005-03-03 (+24d) | -21.12d → -42d |
| 1301 | Tuning | 2005-02-08 → 2005-03-03 (+23d) | 2005-02-08 → 2005-03-04 (+24d) | -21.12d → -42d |
| 1303 | **Scripts** | 2005-02-05 → 2005-03-01 (+24d) | 2005-02-10 → 2005-03-07 (+25d) | -23.12d → -44d |
| 1304 | **Script 1** | 2005-02-05 → 2005-03-01 (+24d) | 2005-02-10 → 2005-03-07 (+25d) | -23.12d → -44d |
| 1305 | Scenario(text) | 2005-02-05 → 2005-03-01 (+24d) | 2005-02-05 → 2005-03-02 (+25d) | -23.12d → -44d |
| 1306 | Постановка задач | 2005-02-07 → 2005-03-02 (+23d) | 2005-02-07 → 2005-03-03 (+24d) | -23.12d → -44d |
| 1307 | Implimentation | 2005-02-08 → 2005-03-03 (+23d) | 2005-02-08 → 2005-03-04 (+24d) | -23.12d → -44d |
| 1308 | Dilogs/VO/Icons/Objects/Animations | 2005-02-09 → 2005-03-04 (+23d) | 2005-02-09 → 2005-03-05 (+24d) | -23.12d → -44d |
| 1309 | Настройка | 2005-02-10 → 2005-03-05 (+23d) | 2005-02-10 → 2005-03-07 (+25d) | -23.12d → -44d |
| 1310 | **Script 2** | 2005-02-05 → 2005-03-01 (+24d) | 2005-02-10 → 2005-03-07 (+25d) | -23.12d → -44d |
| 1311 | Scenario(text) | 2005-02-05 → 2005-03-01 (+24d) | 2005-02-05 → 2005-03-02 (+25d) | -23.12d → -44d |
| 1312 | Постановка задач | 2005-02-07 → 2005-03-02 (+23d) | 2005-02-07 → 2005-03-03 (+24d) | -23.12d → -44d |
| 1313 | Implimentation | 2005-02-08 → 2005-03-03 (+23d) | 2005-02-08 → 2005-03-04 (+24d) | -23.12d → -44d |
| 1314 | Dilogs/VO/Icons/Objects/Animations | 2005-02-09 → 2005-03-04 (+23d) | 2005-02-09 → 2005-03-05 (+24d) | -23.12d → -44d |
| 1315 | Настройка | 2005-02-10 → 2005-03-05 (+23d) | 2005-02-10 → 2005-03-07 (+25d) | -23.12d → -44d |
| 1316 | **Script 3** | 2005-02-05 → 2005-03-01 (+24d) | 2005-02-10 → 2005-03-07 (+25d) | -23.12d → -44d |
| 1317 | Scenario(text) | 2005-02-05 → 2005-03-01 (+24d) | 2005-02-05 → 2005-03-02 (+25d) | -23.12d → -44d |
| 1318 | Постановка задач | 2005-02-07 → 2005-03-02 (+23d) | 2005-02-07 → 2005-03-03 (+24d) | -23.12d → -44d |
| 1319 | Implimentation | 2005-02-08 → 2005-03-03 (+23d) | 2005-02-08 → 2005-03-04 (+24d) | -23.12d → -44d |
| 1320 | Dilogs/VO/Icons/Objects/Animations | 2005-02-09 → 2005-03-04 (+23d) | 2005-02-09 → 2005-03-05 (+24d) | -23.12d → -44d |
| 1321 | Настройка | 2005-02-10 → 2005-03-05 (+23d) | 2005-02-10 → 2005-03-07 (+25d) | -23.12d → -44d |
| 1322 | **Script 4** | 2005-02-05 → 2005-03-01 (+24d) | 2005-02-10 → 2005-03-07 (+25d) | -23.12d → -44d |
| 1323 | Scenario(text) | 2005-02-05 → 2005-03-01 (+24d) | 2005-02-05 → 2005-03-02 (+25d) | -23.12d → -44d |
| 1324 | Постановка задач | 2005-02-07 → 2005-03-02 (+23d) | 2005-02-07 → 2005-03-03 (+24d) | -23.12d → -44d |
| 1325 | Implimentation | 2005-02-08 → 2005-03-03 (+23d) | 2005-02-08 → 2005-03-04 (+24d) | -23.12d → -44d |
| 1326 | Dilogs/VO/Icons/Objects/Animations | 2005-02-09 → 2005-03-04 (+23d) | 2005-02-09 → 2005-03-05 (+24d) | -23.12d → -44d |
| 1327 | Настройка | 2005-02-10 → 2005-03-05 (+23d) | 2005-02-10 → 2005-03-07 (+25d) | -23.12d → -44d |
| 1328 | **Script 5** | 2005-02-05 → 2005-03-01 (+24d) | 2005-02-10 → 2005-03-07 (+25d) | -23.12d → -44d |
| 1329 | Scenario(text) | 2005-02-05 → 2005-03-01 (+24d) | 2005-02-05 → 2005-03-02 (+25d) | -23.12d → -44d |
| 1330 | Постановка задач | 2005-02-07 → 2005-03-02 (+23d) | 2005-02-07 → 2005-03-03 (+24d) | -23.12d → -44d |
| 1331 | Implimentation | 2005-02-08 → 2005-03-03 (+23d) | 2005-02-08 → 2005-03-04 (+24d) | -23.12d → -44d |
| 1332 | Dilogs/VO/Icons/Objects/Animations | 2005-02-09 → 2005-03-04 (+23d) | 2005-02-09 → 2005-03-05 (+24d) | -23.12d → -44d |
| 1333 | Настройка | 2005-02-10 → 2005-03-05 (+23d) | 2005-02-10 → 2005-03-07 (+25d) | -23.12d → -44d |
| 1335 | **19_Stancia** | 2005-02-18 → 2005-03-14 (+24d) | 2005-03-02 → 2005-03-26 (+24d) | -29.12d → -50d |
| 1336 | **LevelDesign** | 2005-02-18 → 2005-03-14 (+24d) | 2005-03-02 → 2005-03-26 (+24d) | -29.12d → -50d |
| 1337 | **Stage 1** | 2005-02-18 → 2005-03-14 (+24d) | 2005-03-02 → 2005-03-26 (+24d) | -29.12d → -50d |
| 1338 | List of Changes | 2005-02-18 → 2005-03-14 (+24d) | 2005-02-19 → 2005-03-16 (+25d) | -29.12d → -50d |
| 1339 | Changed Geometry | 2005-02-21 → 2005-03-16 (+23d) | 2005-02-21 → 2005-03-17 (+24d) | -29.12d → -50d |
| 1340 | Check List 1 | 2005-02-22 → 2005-03-17 (+23d) | 2005-02-22 → 2005-03-18 (+24d) | -29.12d → -50d |
| 1341 | Check List 2 | 2005-02-23 → 2005-03-18 (+23d) | 2005-02-23 → 2005-03-19 (+24d) | -29.12d → -50d |
| 1342 | Check List 3 | 2005-02-24 → 2005-03-19 (+23d) | 2005-02-24 → 2005-03-21 (+25d) | -29.12d → -50d |
| 1343 | Check List 4 | 2005-02-25 → 2005-03-21 (+24d) | 2005-02-25 → 2005-03-22 (+25d) | -29.12d → -50d |
| 1344 | Render Geometry | 2005-02-26 → 2005-03-22 (+24d) | 2005-02-26 → 2005-03-23 (+25d) | -29.12d → -50d |
| 1345 | Grass | 2005-02-28 → 2005-03-23 (+23d) | 2005-02-28 → 2005-03-24 (+24d) | -29.12d → -50d |
| 1346 | AI Maps | 2005-03-01 → 2005-03-24 (+23d) | 2005-03-01 → 2005-03-25 (+24d) | -29.12d → -50d |
| 1347 | Graphs | 2005-03-02 → 2005-03-25 (+23d) | 2005-03-02 → 2005-03-26 (+24d) | -29.12d → -50d |
| 1349 | **GameDesign** | 2005-02-18 → 2005-03-14 (+24d) | 2005-02-21 → 2005-03-17 (+24d) | 57.88d → 37d |
| 1350 | **Secrets** | 2005-02-18 → 2005-03-14 (+24d) | 2005-02-21 → 2005-03-17 (+24d) | 57.88d → 37d |
| 1351 | **Stage 1** | 2005-02-18 → 2005-03-14 (+24d) | 2005-02-21 → 2005-03-17 (+24d) | 57.88d → 37d |
| 1352 | Design | 2005-02-18 → 2005-03-14 (+24d) | 2005-02-18 → 2005-03-15 (+25d) | 57.88d → 37d |
| 1353 | Implementation | 2005-02-19 → 2005-03-15 (+24d) | 2005-02-19 → 2005-03-16 (+25d) | 57.88d → 37d |
| 1354 | Tuning | 2005-02-21 → 2005-03-16 (+23d) | 2005-02-21 → 2005-03-17 (+24d) | 57.88d → 37d |
| 1355 | **Smartterrains** | 2005-02-18 → 2005-03-14 (+24d) | 2005-02-21 → 2005-03-17 (+24d) | 57.88d → 37d |
| 1356 | **Stage 1** | 2005-02-18 → 2005-03-14 (+24d) | 2005-02-21 → 2005-03-17 (+24d) | 57.88d → 37d |
| 1357 | Design | 2005-02-18 → 2005-03-14 (+24d) | 2005-02-18 → 2005-03-15 (+25d) | 57.88d → 37d |
| 1358 | Implementation | 2005-02-19 → 2005-03-15 (+24d) | 2005-02-19 → 2005-03-16 (+25d) | 57.88d → 37d |
| 1359 | Tuning | 2005-02-21 → 2005-03-16 (+23d) | 2005-02-21 → 2005-03-17 (+24d) | 57.88d → 37d |
| 1360 | **Monsters/Spawns** | 2005-02-18 → 2005-03-14 (+24d) | 2005-02-21 → 2005-03-17 (+24d) | 57.88d → 37d |
| 1361 | **Stage 1** | 2005-02-18 → 2005-03-14 (+24d) | 2005-02-21 → 2005-03-17 (+24d) | 57.88d → 37d |
| 1362 | Design | 2005-02-18 → 2005-03-14 (+24d) | 2005-02-18 → 2005-03-15 (+25d) | 57.88d → 37d |
| 1363 | Implementation | 2005-02-19 → 2005-03-15 (+24d) | 2005-02-19 → 2005-03-16 (+25d) | 57.88d → 37d |
| 1364 | Tuning | 2005-02-21 → 2005-03-16 (+23d) | 2005-02-21 → 2005-03-17 (+24d) | 57.88d → 37d |

| ID | Task | Start | Finish | Total float |
| --- | --- | --- | --- | --- |
| 1365 | **Stalkers/Spawns** | 2005-02-18 → 2005-03-14 (+24d) | 2005-02-21 → 2005-03-17 (+24d) | 57.88d → 37d |
| 1366 | **Stage 1** | 2005-02-18 → 2005-03-14 (+24d) | 2005-02-21 → 2005-03-17 (+24d) | 57.88d → 37d |
| 1367 | Design | 2005-02-18 → 2005-03-14 (+24d) | 2005-02-18 → 2005-03-15 (+25d) | 57.88d → 37d |
| 1368 | Implementation | 2005-02-19 → 2005-03-15 (+24d) | 2005-02-19 → 2005-03-16 (+25d) | 57.88d → 37d |
| 1369 | Tuning | 2005-02-21 → 2005-03-16 (+23d) | 2005-02-21 → 2005-03-17 (+24d) | 57.88d → 37d |
| 1370 | **Anomalies/Spawns** | 2005-02-18 → 2005-03-14 (+24d) | 2005-02-21 → 2005-03-17 (+24d) | 57.88d → 37d |
| 1371 | **Stage 1** | 2005-02-18 → 2005-03-14 (+24d) | 2005-02-21 → 2005-03-17 (+24d) | 57.88d → 37d |
| 1372 | Design | 2005-02-18 → 2005-03-14 (+24d) | 2005-02-18 → 2005-03-15 (+25d) | 57.88d → 37d |
| 1373 | Implementation | 2005-02-19 → 2005-03-15 (+24d) | 2005-02-19 → 2005-03-16 (+25d) | 57.88d → 37d |
| 1374 | Tuning | 2005-02-21 → 2005-03-16 (+23d) | 2005-02-21 → 2005-03-17 (+24d) | 57.88d → 37d |
| 1375 | **Physicks** | 2005-02-18 → 2005-03-14 (+24d) | 2005-02-21 → 2005-03-17 (+24d) | 57.88d → 37d |
| 1376 | **Stage 1** | 2005-02-18 → 2005-03-14 (+24d) | 2005-02-21 → 2005-03-17 (+24d) | 57.88d → 37d |
| 1377 | Design | 2005-02-18 → 2005-03-14 (+24d) | 2005-02-18 → 2005-03-15 (+25d) | 57.88d → 37d |
| 1378 | Implementation | 2005-02-19 → 2005-03-15 (+24d) | 2005-02-19 → 2005-03-16 (+25d) | 57.88d → 37d |
| 1379 | Tuning | 2005-02-21 → 2005-03-16 (+23d) | 2005-02-21 → 2005-03-17 (+24d) | 57.88d → 37d |
| 1381 | **Scripts** | 2005-02-18 → 2005-03-14 (+24d) | 2005-02-23 → 2005-03-19 (+24d) | 55.88d → 35d |
| 1382 | **Script 1** | 2005-02-18 → 2005-03-14 (+24d) | 2005-02-23 → 2005-03-19 (+24d) | 55.88d → 35d |
| 1383 | Scenario(text) | 2005-02-18 → 2005-03-14 (+24d) | 2005-02-18 → 2005-03-15 (+25d) | 55.88d → 35d |
| 1384 | Постановка задач | 2005-02-19 → 2005-03-15 (+24d) | 2005-02-19 → 2005-03-16 (+25d) | 55.88d → 35d |
| 1385 | Implimentation | 2005-02-21 → 2005-03-16 (+23d) | 2005-02-21 → 2005-03-17 (+24d) | 55.88d → 35d |
| 1386 | Dilogs/VO/Icons/Objects/Animations | 2005-02-22 → 2005-03-17 (+23d) | 2005-02-22 → 2005-03-18 (+24d) | 55.88d → 35d |
| 1387 | Настройка | 2005-02-23 → 2005-03-18 (+23d) | 2005-02-23 → 2005-03-19 (+24d) | 55.88d → 35d |
| 1388 | **Script 2** | 2005-02-18 → 2005-03-14 (+24d) | 2005-02-23 → 2005-03-19 (+24d) | 55.88d → 35d |
| 1389 | Scenario(text) | 2005-02-18 → 2005-03-14 (+24d) | 2005-02-18 → 2005-03-15 (+25d) | 55.88d → 35d |
| 1390 | Постановка задач | 2005-02-19 → 2005-03-15 (+24d) | 2005-02-19 → 2005-03-16 (+25d) | 55.88d → 35d |
| 1391 | Implimentation | 2005-02-21 → 2005-03-16 (+23d) | 2005-02-21 → 2005-03-17 (+24d) | 55.88d → 35d |
| 1392 | Dilogs/VO/Icons/Objects/Animations | 2005-02-22 → 2005-03-17 (+23d) | 2005-02-22 → 2005-03-18 (+24d) | 55.88d → 35d |
| 1393 | Настройка | 2005-02-23 → 2005-03-18 (+23d) | 2005-02-23 → 2005-03-19 (+24d) | 55.88d → 35d |
| 1394 | **Script 3** | 2005-02-18 → 2005-03-14 (+24d) | 2005-02-23 → 2005-03-19 (+24d) | 55.88d → 35d |
| 1395 | Scenario(text) | 2005-02-18 → 2005-03-14 (+24d) | 2005-02-18 → 2005-03-15 (+25d) | 55.88d → 35d |
| 1396 | Постановка задач | 2005-02-19 → 2005-03-15 (+24d) | 2005-02-19 → 2005-03-16 (+25d) | 55.88d → 35d |
| 1397 | Implimentation | 2005-02-21 → 2005-03-16 (+23d) | 2005-02-21 → 2005-03-17 (+24d) | 55.88d → 35d |
| 1398 | Dilogs/VO/Icons/Objects/Animations | 2005-02-22 → 2005-03-17 (+23d) | 2005-02-22 → 2005-03-18 (+24d) | 55.88d → 35d |
| 1399 | Настройка | 2005-02-23 → 2005-03-18 (+23d) | 2005-02-23 → 2005-03-19 (+24d) | 55.88d → 35d |
| 1400 | **Script 4** | 2005-02-18 → 2005-03-14 (+24d) | 2005-02-23 → 2005-03-19 (+24d) | 55.88d → 35d |
| 1401 | Scenario(text) | 2005-02-18 → 2005-03-14 (+24d) | 2005-02-18 → 2005-03-15 (+25d) | 55.88d → 35d |
| 1402 | Постановка задач | 2005-02-19 → 2005-03-15 (+24d) | 2005-02-19 → 2005-03-16 (+25d) | 55.88d → 35d |
| 1403 | Implimentation | 2005-02-21 → 2005-03-16 (+23d) | 2005-02-21 → 2005-03-17 (+24d) | 55.88d → 35d |
| 1404 | Dilogs/VO/Icons/Objects/Animations | 2005-02-22 → 2005-03-17 (+23d) | 2005-02-22 → 2005-03-18 (+24d) | 55.88d → 35d |
| 1405 | Настройка | 2005-02-23 → 2005-03-18 (+23d) | 2005-02-23 → 2005-03-19 (+24d) | 55.88d → 35d |
| 1406 | **Script 5** | 2005-02-18 → 2005-03-14 (+24d) | 2005-02-23 → 2005-03-19 (+24d) | 55.88d → 35d |
| 1407 | Scenario(text) | 2005-02-18 → 2005-03-14 (+24d) | 2005-02-18 → 2005-03-15 (+25d) | 55.88d → 35d |
| 1408 | Постановка задач | 2005-02-19 → 2005-03-15 (+24d) | 2005-02-19 → 2005-03-16 (+25d) | 55.88d → 35d |
| 1409 | Implimentation | 2005-02-21 → 2005-03-16 (+23d) | 2005-02-21 → 2005-03-17 (+24d) | 55.88d → 35d |
| 1410 | Dilogs/VO/Icons/Objects/Animations | 2005-02-22 → 2005-03-17 (+23d) | 2005-02-22 → 2005-03-18 (+24d) | 55.88d → 35d |
| 1411 | Настройка | 2005-02-23 → 2005-03-18 (+23d) | 2005-02-23 → 2005-03-19 (+24d) | 55.88d → 35d |

## Version 3 (saved 2005-02-01)

Last finish stays 2005-03-28. Complete tasks 1 → 2.

Added:

| ID | Task | Duration | Start | Finish | Predecessors | Constraint | Resources |
| --- | --- | --- | --- | --- | --- | --- | --- |
| 316 | AI Maps/Graphs | 2.88d? | 2005-02-01 | 2005-02-03 |  | finish no earlier than 2005-02-03 | Шишкин |
| 350 | **Сцена 1 - Гулаг Бандитов.** | 3d? | 2005-02-04 | 2005-02-07 |  |  |  |
| 353 | Реализация | 1d | 2005-02-04 | 2005-02-04 | 351 | start no earlier than 2005-02-04 | Змей |
| 354 | Дополнительно требуется (анимации лидера) | 1.75d? | 2005-02-04 | 2005-02-05 |  | finish no earlier than 2005-02-05 | Вова |
| 355 | Дополнительно требуется (профайл Борова) | 1.75d? | 2005-02-04 | 2005-02-05 |  | finish no earlier than 2005-02-05 | Руслан |
| 356 | Дополнительно требуется (модель и иконка ключа от Лаборатории Х18) | 1.75d? | 2005-02-04 | 2005-02-05 |  | finish no earlier than 2005-02-05 | PROF |
| 357 | Расстановка | 2d | 2005-02-04 | 2005-02-05 |  | start no earlier than 2005-02-04 | Шишкин |
| 358 | Тексты, Диалоги, Задания, Отметки на карте, новости, профили персонажей (продумать) | 0d | 2005-02-05 | 2005-02-05 | 357 | start no earlier than 2005-02-04 | Шишкин |
| 360 | Тестирование | 1d | 2005-02-07 | 2005-02-07 |  | start no earlier than 2005-02-07 |  |
| 361 | Проверить расстановку AI нод вокруг дерева | 1d | 2005-02-07 | 2005-02-07 |  | start no earlier than 2005-02-07 | Partizan |
| 362 | **Сцена 2 - Падающий кровосос.** | 3d? | 2005-02-04 | 2005-02-07 |  |  |  |
| 363 | Постановка задач | 0d | 2005-02-04 | 2005-02-04 |  | start no earlier than 2005-02-04 | Шишкин |
| 364 | **Реализация** | 3d | 2005-02-04 | 2005-02-07 |  |  |  |
| 365 | Реализация | 1d | 2005-02-04 | 2005-02-04 |  | start no earlier than 2005-02-04 | Змей |
| 366 | Расстановка | 1d | 2005-02-07 | 2005-02-07 |  | start no earlier than 2005-02-07 | Шишкин |
| 367 | Тексты, Диалоги, Задания, Отметки на карте, новости, профили персонажей (продумать) | 1d | 2005-02-07 | 2005-02-07 |  | start no earlier than 2005-02-07 | Шишкин |
| 368 | **Тестирование** | 1d? | 2005-02-07 | 2005-02-07 |  |  |  |
| 369 | Тестирование | 1d | 2005-02-07 | 2005-02-07 |  | start no earlier than 2005-02-07 |  |
| 370 | Проверить расстановку AI нод вокруг дерева | 1d? | 2005-02-07 | 2005-02-07 |  | start no earlier than 2005-02-07 |  |
| 371 | **Сцена 3 - Переброска пленного.** | 3d? | 2005-02-05 | 2005-02-08 |  |  |  |
| 372 | Постановка задач | 0d | 2005-02-05 | 2005-02-05 |  | start no earlier than 2005-02-05 | Шишкин |
| 373 | **Реализация** | 2d? | 2005-02-05 | 2005-02-07 |  |  |  |
| 374 | Реализация | 1.88d | 2005-02-05 | 2005-02-07 |  | finish no earlier than 2005-02-07 | Змей |
| 375 | Дополнительно требуется (анимация пленника) | 1.88d? | 2005-02-05 | 2005-02-07 |  | finish no earlier than 2005-02-07 | Вова |
| 376 | Расстановка | 1d? | 2005-02-07 | 2005-02-07 |  | start no earlier than 2005-02-07 | Шишкин |
| 377 | Тексты, Диалоги, Задания, Отметки на карте, новости, профили персонажей (продумать) | 1d? | 2005-02-07 | 2005-02-07 |  | start no earlier than 2005-02-07 | Шишкин |
| 378 | **Тестирование** | 1d? | 2005-02-08 | 2005-02-08 |  |  |  |
| 379 | Тестирование | 1d? | 2005-02-08 | 2005-02-08 |  | start no earlier than 2005-02-08 |  |
| 380 | Проверить расстановку AI нод вокруг дерева | 1d? | 2005-02-08 | 2005-02-08 |  | start no earlier than 2005-02-08 |  |
| 381 | **Сцена 4 - Гулаг Монолита.** | 3.88d? | 2005-02-08 | 2005-02-11 |  |  |  |
| 382 | Постановка задач | 0d | 2005-02-08 | 2005-02-08 |  | start no earlier than 2005-02-08 | Шишкин |
| 383 | **Реализация** | 2.88d? | 2005-02-08 | 2005-02-10 | 382 |  |  |
| 384 | Реализация | 2.88d | 2005-02-08 | 2005-02-10 | 382 | finish no earlier than 2005-02-10 | Змей |
| 385 | Дополнительно требуется (модель и иконка ключа от Лаборатории Х18) | 2.88d? | 2005-02-08 | 2005-02-10 |  | finish no earlier than 2005-02-10 | PROF |
| 386 | Расстановка | 2.88d | 2005-02-08 | 2005-02-10 | 349 | finish no earlier than 2005-02-10 | Шишкин |
| 387 | Тексты, Диалоги, Задания, Отметки на карте, новости, профили персонажей (продумать) | 0.88d | 2005-02-08 | 2005-02-08 |  | finish no earlier than 2005-02-08 | Шишкин |
| 388 | **Тестирование** | 1.88d? | 2005-02-10 | 2005-02-11 |  |  |  |
| 389 | Тестирование | 1.88d | 2005-02-10 | 2005-02-11 |  | finish no earlier than 2005-02-11 |  |
| 390 | Проверить расстановку AI нод вокруг дерева | 1.88d? | 2005-02-10 | 2005-02-11 |  | start no earlier than 2005-02-10 |  |
| 391 | **Сцена 5 - SOS с бензоколонки.** | 1d? | 2005-02-11 | 2005-02-11 |  |  |  |
| 392 | Постановка задач | 0d | 2005-02-11 | 2005-02-11 |  | start no earlier than 2005-02-11 | Шишкин |
| 393 | **Реализация** | 1d? | 2005-02-11 | 2005-02-11 |  |  |  |
| 394 | Реализация | 0.88d | 2005-02-11 | 2005-02-11 |  | finish no earlier than 2005-02-11 | Змей |
| 395 | Расстановка | 0.88d | 2005-02-11 | 2005-02-11 |  | finish no earlier than 2005-02-11 | Шишкин |
| 396 | Тексты, Диалоги, Задания, Отметки на карте, новости, профили персонажей (продумать) | 1d? | 2005-02-11 | 2005-02-11 |  | start no earlier than 2005-02-11 | Шишкин |
| 397 | **Тестирование** | 0.88d? | 2005-02-11 | 2005-02-11 |  |  |  |
| 398 | Тестирование | 0.88d? | 2005-02-11 | 2005-02-11 |  | finish no earlier than 2005-02-11 |  |
| 399 | Проверить расстановку AI нод вокруг дерева | 0.88d? | 2005-02-11 | 2005-02-11 |  | finish no earlier than 2005-02-11 |  |
| 400 | **Сцена 6 - Прибытие автомобиля.** | 1d? | 2005-02-12 | 2005-02-12 |  |  |  |
| 401 | Постановка задач | 0d | 2005-02-12 | 2005-02-12 |  | start no earlier than 2005-02-12 | Шишкин |
| 402 | **Реализация** | 1d? | 2005-02-12 | 2005-02-12 |  |  |  |
| 403 | Реализация | 0.88d | 2005-02-12 | 2005-02-12 |  | start no earlier than 2005-02-12 | Змей |
| 404 | Расстановка | 0.88d | 2005-02-12 | 2005-02-12 |  | start no earlier than 2005-02-12 | Шишкин |
| 405 | Тексты, Диалоги, Задания, Отметки на карте, новости, профили персонажей (продумать) | 1d? | 2005-02-12 | 2005-02-12 |  | start no earlier than 2005-02-12 | Шишкин |
| 406 | **Тестирование** | 0.88d? | 2005-02-12 | 2005-02-12 |  |  |  |
| 407 | Тестирование | 0.88d? | 2005-02-12 | 2005-02-12 |  | start no earlier than 2005-02-12 |  |
| 408 | Проверить расстановку AI нод вокруг дерева | 0.88d? | 2005-02-12 | 2005-02-12 |  | start no earlier than 2005-02-12 |  |
| 409 | **Сцена 7 - Развод лоха.** | 2d? | 2005-02-14 | 2005-02-15 |  |  |  |
| 410 | Постановка задач | 0d | 2005-02-14 | 2005-02-14 |  | start no earlier than 2005-02-14 | Шишкин |
| 411 | **Реализация** | 2d? | 2005-02-14 | 2005-02-15 |  |  |  |
| 412 | Реализация | 1.88d | 2005-02-14 | 2005-02-15 |  | finish no earlier than 2005-02-15 | Змей |
| 413 | Расстановка | 0.88d | 2005-02-15 | 2005-02-15 |  | start no earlier than 2005-02-15 | Шишкин |
| 414 | Тексты, Диалоги, Задания, Отметки на карте, новости, профили персонажей (продумать) | 1d? | 2005-02-15 | 2005-02-15 |  | start no earlier than 2005-02-15 | Шишкин |
| 415 | **Тестирование** | 0.88d? | 2005-02-15 | 2005-02-15 |  |  |  |
| 416 | Тестирование | 0.88d? | 2005-02-15 | 2005-02-15 |  | start no earlier than 2005-02-15 |  |
| 417 | Проверить расстановку AI нод вокруг дерева | 0.88d? | 2005-02-15 | 2005-02-15 |  | start no earlier than 2005-02-15 |  |
| 418 | **Сцена 7 - Самоубийство.** | 1d? | 2005-02-16 | 2005-02-16 |  |  |  |
| 419 | Постановка задач | 0d | 2005-02-16 | 2005-02-16 |  | start no earlier than 2005-02-16 | Шишкин |
| 420 | **Реализация** | 1d? | 2005-02-16 | 2005-02-16 |  |  |  |
| 421 | Реализация | 0.88d | 2005-02-16 | 2005-02-16 |  | finish no earlier than 2005-02-16 | Змей |
| 422 | Дополнительно требуется (Задание на самоубийцу) | 0.88d? | 2005-02-16 | 2005-02-16 |  | finish no earlier than 2005-02-16 | Руслан |
| 423 | Дополнительно требуется (Вознаграждение за самоубийцу) | 0.88d? | 2005-02-16 | 2005-02-16 |  | finish no earlier than 2005-02-16 | Руслан |
| 424 | Дополнительно требуется (анимация самоубийцы) | 0.88d? | 2005-02-16 | 2005-02-16 |  | finish no earlier than 2005-02-16 | Вова |
| 425 | Расстановка | 0.88d | 2005-02-16 | 2005-02-16 |  | start no earlier than 2005-02-16 | Шишкин |
| 426 | Тексты, Диалоги, Задания, Отметки на карте, новости, профили персонажей (продумать) | 1d? | 2005-02-16 | 2005-02-16 |  | start no earlier than 2005-02-16 | Шишкин |
| 427 | **Тестирование** | 0.88d? | 2005-02-16 | 2005-02-16 |  |  |  |
| 428 | Тестирование | 0.88d? | 2005-02-16 | 2005-02-16 |  | start no earlier than 2005-02-16 |  |
| 429 | Проверить расстановку AI нод вокруг дерева | 0.88d? | 2005-02-16 | 2005-02-16 |  | start no earlier than 2005-02-16 |  |
| 430 | **Сцена 7 - Засады бандитов на входе с Гарбэджа.** | 1.88d? | 2005-02-17 | 2005-02-18 |  |  |  |
| 431 | Постановка задач | 0d | 2005-02-17 | 2005-02-17 |  | start no earlier than 2005-02-17 | Шишкин |
| 432 | **Реализация** | 1.88d? | 2005-02-17 | 2005-02-18 |  |  |  |
| 433 | Реализация | 1.88d | 2005-02-17 | 2005-02-18 |  | finish no earlier than 2005-02-18 | Змей |
| 434 | Расстановка | 0.88d | 2005-02-18 | 2005-02-18 |  | start no earlier than 2005-02-18 | Шишкин |
| 435 | Тексты, Диалоги, Задания, Отметки на карте, новости, профили персонажей (продумать) | 1d? | 2005-02-17 | 2005-02-17 |  | start no earlier than 2005-02-17 | Шишкин |
| 436 | **Тестирование** | 0.88d? | 2005-02-18 | 2005-02-18 |  |  |  |
| 437 | Тестирование | 0.88d? | 2005-02-18 | 2005-02-18 |  | finish no earlier than 2005-02-18 |  |
| 438 | Проверить расстановку AI нод вокруг дерева | 0.88d? | 2005-02-18 | 2005-02-18 |  | finish no earlier than 2005-02-18 |  |
| 439 | **Сцена 8 - Игрок в темнице** | 3.88d? | 2005-02-19 | 2005-02-23 |  |  |  |
| 440 | Постановка задач | 0d | 2005-02-19 | 2005-02-19 |  | start no earlier than 2005-02-19 | Шишкин |
| 441 | **Реализация** | 3.88d? | 2005-02-19 | 2005-02-23 |  |  |  |
| 442 | Реализация | 3.88d | 2005-02-19 | 2005-02-23 |  | finish no earlier than 2005-02-23 | Змей |
| 443 | Дополнительно требуется (переброска игрока) | 3.88d? | 2005-02-19 | 2005-02-23 |  | finish no earlier than 2005-02-23 | Dima |
| 444 | Дополнительно требуется (переброска инвентори) | 3.88d? | 2005-02-19 | 2005-02-23 |  | finish no earlier than 2005-02-23 | Dima |
| 445 | Дополнительно требуется (закрывающаяся дверь) | 3.88d? | 2005-02-19 | 2005-02-23 |  | finish no earlier than 2005-02-23 | Угрюмый |
| 446 | Дополнительно требуется (модель пульта) | 3.88d? | 2005-02-19 | 2005-02-23 |  | finish no earlier than 2005-02-23 | Угрюмый |
| 447 | Дополнительно требуется (анимация нажатия на кнопку) | 3.88d? | 2005-02-19 | 2005-02-23 |  | finish no earlier than 2005-02-23 | Вова |
| 448 | Расстановка | 0.88d | 2005-02-23 | 2005-02-23 |  | start no earlier than 2005-02-23 | Шишкин |
| 449 | Тексты, Диалоги, Задания, Отметки на карте, новости, профили персонажей (продумать) | 1d? | 2005-02-19 | 2005-02-19 |  | start no earlier than 2005-02-19 | Шишкин |
| 450 | **Тестирование** | 0.88d? | 2005-02-23 | 2005-02-23 |  |  |  |
| 451 | Тестирование | 0.88d? | 2005-02-23 | 2005-02-23 |  | start no earlier than 2005-02-23 |  |
| 452 | Проверить расстановку AI нод вокруг дерева | 0.88d? | 2005-02-23 | 2005-02-23 |  | start no earlier than 2005-02-23 |  |
| 453 | **Сцена 9 - Узник Бандитов.** | 1.88d? | 2005-02-24 | 2005-02-25 |  |  |  |
| 454 | Постановка задач | 0d | 2005-02-24 | 2005-02-24 |  | start no earlier than 2005-02-24 | Шишкин |
| 455 | **Реализация** | 1.88d? | 2005-02-24 | 2005-02-25 |  |  |  |
| 456 | Реализация | 1.88d | 2005-02-24 | 2005-02-25 |  | finish no earlier than 2005-02-25 | Змей |
| 457 | Расстановка | 0.88d | 2005-02-25 | 2005-02-25 |  | start no earlier than 2005-02-25 | Шишкин |
| 458 | Тексты, Диалоги, Задания, Отметки на карте, новости, профили персонажей (продумать) | 1d? | 2005-02-24 | 2005-02-24 |  | start no earlier than 2005-02-24 | Шишкин |
| 459 | **Тестирование** | 0.88d? | 2005-02-25 | 2005-02-25 |  |  |  |
| 460 | Тестирование | 0.88d? | 2005-02-25 | 2005-02-25 |  | start no earlier than 2005-02-25 |  |
| 461 | Проверить расстановку AI нод вокруг дерева | 0.88d? | 2005-02-25 | 2005-02-25 |  | start no earlier than 2005-02-25 |  |
| 462 | **Сцена 10 - Жертвоприношение.** | 1.88d? | 2005-02-25 | 2005-02-26 |  |  |  |
| 463 | Постановка задач | 0d | 2005-02-25 | 2005-02-25 |  | start no earlier than 2005-02-25 | Шишкин |
| 464 | **Реализация** | 1.88d? | 2005-02-25 | 2005-02-26 |  |  |  |
| 465 | Реализация | 1.75d | 2005-02-25 | 2005-02-26 |  | finish no earlier than 2005-02-26 | Змей |
| 466 | Расстановка | 0.88d | 2005-02-26 | 2005-02-26 |  | start no earlier than 2005-02-26 | Шишкин |
| 467 | Тексты, Диалоги, Задания, Отметки на карте, новости, профили персонажей (продумать) | 1d? | 2005-02-25 | 2005-02-25 |  | start no earlier than 2005-02-25 | Шишкин |
| 468 | **Тестирование** | 0.88d? | 2005-02-26 | 2005-02-26 |  |  |  |
| 469 | Тестирование | 0.88d? | 2005-02-26 | 2005-02-26 |  | start no earlier than 2005-02-26 |  |
| 470 | Проверить расстановку AI нод вокруг дерева | 0.88d? | 2005-02-26 | 2005-02-26 |  | start no earlier than 2005-02-26 |  |

Removed: 349 Сцена 1 - бандиты скармливают сталкера монстру в яме; 352 Скрипт и диалоги общения пленника с игроком; 353 Сценка со сталкиванием в яму; 355 Персонажи сцены не срываются по реакциям на звук и прочие раздражители; 356 Убедиться, что жертва упадет в яму даже в режиме с медленными апдейтами

Changed:

| ID | Task | Start | Finish | Duration | Complete | Total float | Predecessors | Other |
| --- | --- | --- | --- | --- | --- | --- | --- | --- |
| 301 | **05_Dark_Valley** | 2005-01-24 A | 2005-02-04 → 2005-02-26 (+22d) | 11d? → 29.88d? | 0% → 3% | 1.88d → -9d |  |  |
| 315 | **GameDesign** | 2005-01-24 → 2005-02-01 (+8d) | 2005-01-26 → 2005-02-25 (+30d) | 3d? → 22d? |  | 17.88d → -8.12d |  |  |
| 317 | **Secrets** | 2005-01-24 → 2005-02-21 (+28d) | 2005-01-26 → 2005-02-23 (+28d) |  |  | 17.88d → -6.12d |  |  |
| 318 | **Stage 1** | 2005-01-24 → 2005-02-21 (+28d) | 2005-01-26 → 2005-02-23 (+28d) |  |  | 17.88d → -6.12d |  |  |
| 319 | Design | 2005-01-24 → 2005-02-21 (+28d) | 2005-01-24 → 2005-02-21 (+28d) |  |  | 17.88d → -6.12d |  | constraint none → start no earlier than 2005-02-21; resources none → Шишкин |
| 320 | Implementation | 2005-01-25 → 2005-02-22 (+28d) | 2005-01-25 → 2005-02-22 (+28d) |  |  | 17.88d → -6.12d |  | constraint none → start no earlier than 2005-02-15; resources none → Шишкин |
| 321 | Tuning | 2005-01-26 → 2005-02-23 (+28d) | 2005-01-26 → 2005-02-23 (+28d) |  |  | 17.88d → -6.12d |  | resources none → Шишкин |
| 322 | **Smartterrains** | 2005-01-24 → 2005-02-14 (+21d) | 2005-01-26 → 2005-02-16 (+21d) |  |  | 17.88d → -0.12d |  |  |
| 323 | **Stage 1** | 2005-01-24 → 2005-02-14 (+21d) | 2005-01-26 → 2005-02-16 (+21d) |  |  | 17.88d → -0.12d |  |  |
| 324 | Design | 2005-01-24 → 2005-02-14 (+21d) | 2005-01-24 → 2005-02-14 (+21d) |  |  | 17.88d → -0.12d |  | constraint none → start no earlier than 2005-02-14; resources none → Шишкин |
| 325 | Implementation | 2005-01-25 → 2005-02-15 (+21d) | 2005-01-25 → 2005-02-15 (+21d) |  |  | 17.88d → -0.12d |  | resources none → Шишкин |
| 326 | Tuning | 2005-01-26 → 2005-02-16 (+21d) | 2005-01-26 → 2005-02-16 (+21d) |  |  | 17.88d → -0.12d |  | resources none → Шишкин |
| 327 | **Monsters/Spawns** | 2005-01-24 → 2005-02-17 (+24d) | 2005-01-26 → 2005-02-17 (+22d) | 3d? → 1d? |  | 17.88d → -1.12d |  |  |
| 328 | **Stage 1** | 2005-01-24 → 2005-02-17 (+24d) | 2005-01-26 → 2005-02-17 (+22d) | 3d? → 1d? |  | 17.88d → -1.12d |  |  |
| 329 | Design | 2005-01-24 → 2005-02-17 (+24d) | 2005-01-24 → 2005-02-17 (+24d) |  |  | 17.88d → -1.12d |  | constraint none → start no earlier than 2005-02-17; resources none → Шишкин |
| 330 | Implementation | 2005-01-25 → 2005-02-17 (+23d) | 2005-01-25 → 2005-02-17 (+23d) |  |  | 17.88d → -1.12d | 329 → none | constraint none → start no earlier than 2005-02-17; resources none → Шишкин |
| 331 | Tuning | 2005-01-26 → 2005-02-17 (+22d) | 2005-01-26 → 2005-02-17 (+22d) | 1d? → 0d |  | 17.88d → -1.12d |  | constraint none → start no earlier than 2005-02-17; resources none → Шишкин |
| 332 | **Stalkers/Spawns** | 2005-01-24 → 2005-02-19 (+26d) | 2005-01-26 → 2005-02-19 (+24d) | 3d? → 1d? |  | 17.88d → -3.12d |  |  |
| 333 | **Stage 1** | 2005-01-24 → 2005-02-19 (+26d) | 2005-01-26 → 2005-02-19 (+24d) | 3d? → 1d? |  | 17.88d → -3.12d |  |  |
| 334 | Design | 2005-01-24 → 2005-02-19 (+26d) | 2005-01-24 → 2005-02-19 (+26d) |  |  | 17.88d → -3.12d |  | constraint none → start no earlier than 2005-02-19; resources none → Шишкин |
| 335 | Implementation | 2005-01-25 → 2005-02-19 (+25d) | 2005-01-25 → 2005-02-19 (+25d) | 1d? → 0d |  | 17.88d → -3.12d |  | constraint none → start no earlier than 2005-02-19; resources none → Шишкин |
| 336 | Tuning | 2005-01-26 → 2005-02-19 (+24d) | 2005-01-26 → 2005-02-19 (+24d) | 1d? → 0d |  | 17.88d → -3.12d |  | constraint none → start no earlier than 2005-02-19; resources none → Шишкин |
| 337 | **Anomalies/Spawns** | 2005-01-24 → 2005-02-19 (+26d) | 2005-01-26 → 2005-02-19 (+24d) | 3d? → 1d? |  | 17.88d → -3.12d |  |  |
| 338 | **Stage 1** | 2005-01-24 → 2005-02-19 (+26d) | 2005-01-26 → 2005-02-19 (+24d) | 3d? → 1d? |  | 17.88d → -3.12d |  |  |
| 339 | Design | 2005-01-24 → 2005-02-19 (+26d) | 2005-01-24 → 2005-02-19 (+26d) |  |  | 17.88d → -3.12d |  | constraint none → start no earlier than 2005-02-19; resources none → Шишкин |
| 340 | Implementation | 2005-01-25 → 2005-02-19 (+25d) | 2005-01-25 → 2005-02-19 (+25d) | 1d? → 0d |  | 17.88d → -3.12d |  | constraint none → start no earlier than 2005-02-19; resources none → Шишкин |
| 341 | Tuning | 2005-01-26 → 2005-02-19 (+24d) | 2005-01-26 → 2005-02-19 (+24d) | 1d? → 0d |  | 17.88d → -3.12d |  | constraint none → start no earlier than 2005-02-19; resources none → Шишкин |
| 342 | **Physicks** | 2005-01-24 → 2005-02-23 (+30d) | 2005-01-26 → 2005-02-25 (+30d) |  |  | 17.88d → -8.12d |  |  |
| 343 | **Stage 1** | 2005-01-24 → 2005-02-23 (+30d) | 2005-01-26 → 2005-02-25 (+30d) |  |  | 17.88d → -8.12d |  |  |
| 344 | Design | 2005-01-24 → 2005-02-23 (+30d) | 2005-01-24 → 2005-02-23 (+30d) |  |  | 17.88d → -8.12d |  | constraint none → start no earlier than 2005-02-23 |
| 345 | Implementation | 2005-01-25 → 2005-02-24 (+30d) | 2005-01-25 → 2005-02-24 (+30d) |  |  | 17.88d → -8.12d |  |  |
| 346 | Tuning | 2005-01-26 → 2005-02-25 (+30d) | 2005-01-26 → 2005-02-25 (+30d) |  |  | 17.88d → -8.12d |  |  |
| 348 | **Scripts** | 2005-01-24 → 2005-01-27 A (+3d) | 2005-01-24 → 2005-02-26 (+33d) | 1d? → 26.88d? | 0% → 4% | 19.88d → -9d |  |  |
| 349 | Сценарий (текст) | 2005-01-24 → 2005-01-27 A (+3d) | 2005-01-24 → 2005-01-31 A (+7d) | 1d? → 3.88d | 0% → 100% | 19.88d → none |  | resources none → Шишкин |
| 351 | Постановка задач | 2005-01-24 → 2005-02-04 (+11d) | 2005-01-24 → 2005-02-04 (+11d) | 1d? → 0d |  | 19.88d → 8.88d |  | constraint none → start no earlier than 2005-02-04; resources none → Шишкин |
| 352 | **Реализация** | 2005-01-24 → 2005-02-04 (+11d) | 2005-01-24 → 2005-02-05 (+12d) | 1d? → 2d? |  | 19.88d → 8.88d | none → 351 |  |
| 359 | **Тестирование** | 2005-01-24 → 2005-02-07 (+14d) | 2005-01-24 → 2005-02-07 (+14d) | 1d? → 1d |  | 19.88d → 7.88d |  |  |
| 472 | **18_Prypiat** | 2005-02-05 → 2005-02-26 (+21d) | 2005-02-17 → 2005-03-11 (+22d) |  |  | 9.88d → -9d |  |  |
| 473 | **LevelDesign** | 2005-02-05 → 2005-02-26 (+21d) | 2005-02-17 → 2005-03-11 (+22d) |  |  | 9.88d → -9d |  |  |
| 474 | **Stage 1** | 2005-02-05 → 2005-02-26 (+21d) | 2005-02-17 → 2005-03-11 (+22d) |  |  | 9.88d → -9d |  |  |
| 475 | List of Changes | 2005-02-05 → 2005-02-26 (+21d) | 2005-02-07 → 2005-03-01 (+22d) |  |  | 9.88d → -9d |  |  |
| 476 | Changed Geometry | 2005-02-08 → 2005-03-01 (+21d) | 2005-02-08 → 2005-03-02 (+22d) |  |  | 9.88d → -9d |  |  |
| 477 | Check List 1 | 2005-02-09 → 2005-03-02 (+21d) | 2005-02-09 → 2005-03-03 (+22d) |  |  | 9.88d → -9d |  |  |
| 478 | Check List 2 | 2005-02-10 → 2005-03-03 (+21d) | 2005-02-10 → 2005-03-04 (+22d) |  |  | 9.88d → -9d |  |  |
| 479 | Check List 3 | 2005-02-11 → 2005-03-04 (+21d) | 2005-02-11 → 2005-03-05 (+22d) |  |  | 9.88d → -9d |  |  |
| 480 | Check List 4 | 2005-02-12 → 2005-03-05 (+21d) | 2005-02-12 → 2005-03-07 (+23d) |  |  | 9.88d → -9d |  |  |
| 481 | Render Geometry | 2005-02-14 → 2005-03-07 (+21d) | 2005-02-14 → 2005-03-08 (+22d) |  |  | 9.88d → -9d |  |  |
| 482 | Grass | 2005-02-15 → 2005-03-08 (+21d) | 2005-02-15 → 2005-03-09 (+22d) |  |  | 9.88d → -9d |  |  |
| 483 | AI Maps | 2005-02-16 → 2005-03-09 (+21d) | 2005-02-16 → 2005-03-10 (+22d) |  |  | 9.88d → -9d |  |  |
| 484 | Graphs | 2005-02-17 → 2005-03-10 (+21d) | 2005-02-17 → 2005-03-11 (+22d) |  |  | 9.88d → -9d |  |  |
| 486 | **GameDesign** | 2005-02-05 → 2005-02-26 (+21d) | 2005-02-08 → 2005-03-02 (+22d) |  |  | 33.88d → 15d |  |  |
| 487 | **Secrets** | 2005-02-05 → 2005-02-26 (+21d) | 2005-02-08 → 2005-03-02 (+22d) |  |  | 33.88d → 15d |  |  |
| 488 | **Stage 1** | 2005-02-05 → 2005-02-26 (+21d) | 2005-02-08 → 2005-03-02 (+22d) |  |  | 33.88d → 15d |  |  |
| 489 | Design | 2005-02-05 → 2005-02-26 (+21d) | 2005-02-05 → 2005-02-28 (+23d) |  |  | 33.88d → 15d |  |  |
| 490 | Implementation | 2005-02-07 → 2005-02-28 (+21d) | 2005-02-07 → 2005-03-01 (+22d) |  |  | 33.88d → 15d |  |  |
| 491 | Tuning | 2005-02-08 → 2005-03-01 (+21d) | 2005-02-08 → 2005-03-02 (+22d) |  |  | 33.88d → 15d |  |  |
| 492 | **Smartterrains** | 2005-02-05 → 2005-02-26 (+21d) | 2005-02-08 → 2005-03-02 (+22d) |  |  | 33.88d → 15d |  |  |
| 493 | **Stage 1** | 2005-02-05 → 2005-02-26 (+21d) | 2005-02-08 → 2005-03-02 (+22d) |  |  | 33.88d → 15d |  |  |
| 494 | Design | 2005-02-05 → 2005-02-26 (+21d) | 2005-02-05 → 2005-02-28 (+23d) |  |  | 33.88d → 15d |  |  |
| 495 | Implementation | 2005-02-07 → 2005-02-28 (+21d) | 2005-02-07 → 2005-03-01 (+22d) |  |  | 33.88d → 15d |  |  |
| 496 | Tuning | 2005-02-08 → 2005-03-01 (+21d) | 2005-02-08 → 2005-03-02 (+22d) |  |  | 33.88d → 15d |  |  |
| 497 | **Monsters/Spawns** | 2005-02-05 → 2005-02-26 (+21d) | 2005-02-08 → 2005-03-02 (+22d) |  |  | 33.88d → 15d |  |  |
| 498 | **Stage 1** | 2005-02-05 → 2005-02-26 (+21d) | 2005-02-08 → 2005-03-02 (+22d) |  |  | 33.88d → 15d |  |  |
| 499 | Design | 2005-02-05 → 2005-02-26 (+21d) | 2005-02-05 → 2005-02-28 (+23d) |  |  | 33.88d → 15d |  |  |
| 500 | Implementation | 2005-02-07 → 2005-02-28 (+21d) | 2005-02-07 → 2005-03-01 (+22d) |  |  | 33.88d → 15d |  |  |
| 501 | Tuning | 2005-02-08 → 2005-03-01 (+21d) | 2005-02-08 → 2005-03-02 (+22d) |  |  | 33.88d → 15d |  |  |
| 502 | **Stalkers/Spawns** | 2005-02-05 → 2005-02-26 (+21d) | 2005-02-08 → 2005-03-02 (+22d) |  |  | 33.88d → 15d |  |  |
| 503 | **Stage 1** | 2005-02-05 → 2005-02-26 (+21d) | 2005-02-08 → 2005-03-02 (+22d) |  |  | 33.88d → 15d |  |  |
| 504 | Design | 2005-02-05 → 2005-02-26 (+21d) | 2005-02-05 → 2005-02-28 (+23d) |  |  | 33.88d → 15d |  |  |
| 505 | Implementation | 2005-02-07 → 2005-02-28 (+21d) | 2005-02-07 → 2005-03-01 (+22d) |  |  | 33.88d → 15d |  |  |

| ID | Task | Start | Finish | Total float |
| --- | --- | --- | --- | --- |
| 506 | Tuning | 2005-02-08 → 2005-03-01 (+21d) | 2005-02-08 → 2005-03-02 (+22d) | 33.88d → 15d |
| 507 | **Anomalies/Spawns** | 2005-02-05 → 2005-02-26 (+21d) | 2005-02-08 → 2005-03-02 (+22d) | 33.88d → 15d |
| 508 | **Stage 1** | 2005-02-05 → 2005-02-26 (+21d) | 2005-02-08 → 2005-03-02 (+22d) | 33.88d → 15d |
| 509 | Design | 2005-02-05 → 2005-02-26 (+21d) | 2005-02-05 → 2005-02-28 (+23d) | 33.88d → 15d |
| 510 | Implementation | 2005-02-07 → 2005-02-28 (+21d) | 2005-02-07 → 2005-03-01 (+22d) | 33.88d → 15d |
| 511 | Tuning | 2005-02-08 → 2005-03-01 (+21d) | 2005-02-08 → 2005-03-02 (+22d) | 33.88d → 15d |
| 512 | **Physicks** | 2005-02-05 → 2005-02-26 (+21d) | 2005-02-08 → 2005-03-02 (+22d) | 33.88d → 15d |
| 513 | **Stage 1** | 2005-02-05 → 2005-02-26 (+21d) | 2005-02-08 → 2005-03-02 (+22d) | 33.88d → 15d |
| 514 | Design | 2005-02-05 → 2005-02-26 (+21d) | 2005-02-05 → 2005-02-28 (+23d) | 33.88d → 15d |
| 515 | Implementation | 2005-02-07 → 2005-02-28 (+21d) | 2005-02-07 → 2005-03-01 (+22d) | 33.88d → 15d |
| 516 | Tuning | 2005-02-08 → 2005-03-01 (+21d) | 2005-02-08 → 2005-03-02 (+22d) | 33.88d → 15d |
| 518 | **Scripts** | 2005-02-05 → 2005-02-26 (+21d) | 2005-02-10 → 2005-03-04 (+22d) | 31.88d → 13d |
| 519 | **Script 1** | 2005-02-05 → 2005-02-26 (+21d) | 2005-02-10 → 2005-03-04 (+22d) | 31.88d → 13d |
| 520 | Scenario(text) | 2005-02-05 → 2005-02-26 (+21d) | 2005-02-05 → 2005-02-28 (+23d) | 31.88d → 13d |
| 521 | Постановка задач | 2005-02-07 → 2005-02-28 (+21d) | 2005-02-07 → 2005-03-01 (+22d) | 31.88d → 13d |
| 522 | Implimentation | 2005-02-08 → 2005-03-01 (+21d) | 2005-02-08 → 2005-03-02 (+22d) | 31.88d → 13d |
| 523 | Dilogs/VO/Icons/Objects/Animations | 2005-02-09 → 2005-03-02 (+21d) | 2005-02-09 → 2005-03-03 (+22d) | 31.88d → 13d |
| 524 | Настройка | 2005-02-10 → 2005-03-03 (+21d) | 2005-02-10 → 2005-03-04 (+22d) | 31.88d → 13d |
| 525 | **Script 2** | 2005-02-05 → 2005-02-26 (+21d) | 2005-02-10 → 2005-03-04 (+22d) | 31.88d → 13d |
| 526 | Scenario(text) | 2005-02-05 → 2005-02-26 (+21d) | 2005-02-05 → 2005-02-28 (+23d) | 31.88d → 13d |
| 527 | Постановка задач | 2005-02-07 → 2005-02-28 (+21d) | 2005-02-07 → 2005-03-01 (+22d) | 31.88d → 13d |
| 528 | Implimentation | 2005-02-08 → 2005-03-01 (+21d) | 2005-02-08 → 2005-03-02 (+22d) | 31.88d → 13d |
| 529 | Dilogs/VO/Icons/Objects/Animations | 2005-02-09 → 2005-03-02 (+21d) | 2005-02-09 → 2005-03-03 (+22d) | 31.88d → 13d |
| 530 | Настройка | 2005-02-10 → 2005-03-03 (+21d) | 2005-02-10 → 2005-03-04 (+22d) | 31.88d → 13d |
| 531 | **Script 3** | 2005-02-05 → 2005-02-26 (+21d) | 2005-02-10 → 2005-03-04 (+22d) | 31.88d → 13d |
| 532 | Scenario(text) | 2005-02-05 → 2005-02-26 (+21d) | 2005-02-05 → 2005-02-28 (+23d) | 31.88d → 13d |
| 533 | Постановка задач | 2005-02-07 → 2005-02-28 (+21d) | 2005-02-07 → 2005-03-01 (+22d) | 31.88d → 13d |
| 534 | Implimentation | 2005-02-08 → 2005-03-01 (+21d) | 2005-02-08 → 2005-03-02 (+22d) | 31.88d → 13d |
| 535 | Dilogs/VO/Icons/Objects/Animations | 2005-02-09 → 2005-03-02 (+21d) | 2005-02-09 → 2005-03-03 (+22d) | 31.88d → 13d |
| 536 | Настройка | 2005-02-10 → 2005-03-03 (+21d) | 2005-02-10 → 2005-03-04 (+22d) | 31.88d → 13d |
| 537 | **Script 4** | 2005-02-05 → 2005-02-26 (+21d) | 2005-02-10 → 2005-03-04 (+22d) | 31.88d → 13d |
| 538 | Scenario(text) | 2005-02-05 → 2005-02-26 (+21d) | 2005-02-05 → 2005-02-28 (+23d) | 31.88d → 13d |
| 539 | Постановка задач | 2005-02-07 → 2005-02-28 (+21d) | 2005-02-07 → 2005-03-01 (+22d) | 31.88d → 13d |
| 540 | Implimentation | 2005-02-08 → 2005-03-01 (+21d) | 2005-02-08 → 2005-03-02 (+22d) | 31.88d → 13d |
| 541 | Dilogs/VO/Icons/Objects/Animations | 2005-02-09 → 2005-03-02 (+21d) | 2005-02-09 → 2005-03-03 (+22d) | 31.88d → 13d |
| 542 | Настройка | 2005-02-10 → 2005-03-03 (+21d) | 2005-02-10 → 2005-03-04 (+22d) | 31.88d → 13d |
| 543 | **Script 5** | 2005-02-05 → 2005-02-26 (+21d) | 2005-02-10 → 2005-03-04 (+22d) | 31.88d → 13d |
| 544 | Scenario(text) | 2005-02-05 → 2005-02-26 (+21d) | 2005-02-05 → 2005-02-28 (+23d) | 31.88d → 13d |
| 545 | Постановка задач | 2005-02-07 → 2005-02-28 (+21d) | 2005-02-07 → 2005-03-01 (+22d) | 31.88d → 13d |
| 546 | Implimentation | 2005-02-08 → 2005-03-01 (+21d) | 2005-02-08 → 2005-03-02 (+22d) | 31.88d → 13d |
| 547 | Dilogs/VO/Icons/Objects/Animations | 2005-02-09 → 2005-03-02 (+21d) | 2005-02-09 → 2005-03-03 (+22d) | 31.88d → 13d |
| 548 | Настройка | 2005-02-10 → 2005-03-03 (+21d) | 2005-02-10 → 2005-03-04 (+22d) | 31.88d → 13d |
| 550 | **13_Dead_City** | 2005-02-18 → 2005-03-11 (+21d) | 2005-03-02 → 2005-03-24 (+22d) | 25.88d → 7d |
| 551 | **LevelDesign** | 2005-02-18 → 2005-03-11 (+21d) | 2005-03-02 → 2005-03-24 (+22d) | 25.88d → 7d |
| 552 | **Stage 1** | 2005-02-18 → 2005-03-11 (+21d) | 2005-03-02 → 2005-03-24 (+22d) | 25.88d → 7d |
| 553 | List of Changes | 2005-02-18 → 2005-03-11 (+21d) | 2005-02-19 → 2005-03-14 (+23d) | 25.88d → 7d |
| 554 | Changed Geometry | 2005-02-21 → 2005-03-14 (+21d) | 2005-02-21 → 2005-03-15 (+22d) | 25.88d → 7d |
| 555 | Check List 1 | 2005-02-22 → 2005-03-15 (+21d) | 2005-02-22 → 2005-03-16 (+22d) | 25.88d → 7d |
| 556 | Check List 2 | 2005-02-23 → 2005-03-16 (+21d) | 2005-02-23 → 2005-03-17 (+22d) | 25.88d → 7d |
| 557 | Check List 3 | 2005-02-24 → 2005-03-17 (+21d) | 2005-02-24 → 2005-03-18 (+22d) | 25.88d → 7d |
| 558 | Check List 4 | 2005-02-25 → 2005-03-18 (+21d) | 2005-02-25 → 2005-03-19 (+22d) | 25.88d → 7d |
| 559 | Render Geometry | 2005-02-26 → 2005-03-19 (+21d) | 2005-02-26 → 2005-03-21 (+23d) | 25.88d → 7d |
| 560 | Grass | 2005-02-28 → 2005-03-21 (+21d) | 2005-02-28 → 2005-03-22 (+22d) | 25.88d → 7d |
| 561 | AI Maps | 2005-03-01 → 2005-03-22 (+21d) | 2005-03-01 → 2005-03-23 (+22d) | 25.88d → 7d |
| 562 | Graphs | 2005-03-02 → 2005-03-23 (+21d) | 2005-03-02 → 2005-03-24 (+22d) | 25.88d → 7d |
| 564 | **GameDesign** | 2005-02-18 → 2005-03-11 (+21d) | 2005-02-21 → 2005-03-15 (+22d) | 57.88d → 39d |
| 565 | **Secrets** | 2005-02-18 → 2005-03-11 (+21d) | 2005-02-21 → 2005-03-15 (+22d) | 57.88d → 39d |
| 566 | **Stage 1** | 2005-02-18 → 2005-03-11 (+21d) | 2005-02-21 → 2005-03-15 (+22d) | 57.88d → 39d |
| 567 | Design | 2005-02-18 → 2005-03-11 (+21d) | 2005-02-18 → 2005-03-12 (+22d) | 57.88d → 39d |
| 568 | Implementation | 2005-02-19 → 2005-03-12 (+21d) | 2005-02-19 → 2005-03-14 (+23d) | 57.88d → 39d |
| 569 | Tuning | 2005-02-21 → 2005-03-14 (+21d) | 2005-02-21 → 2005-03-15 (+22d) | 57.88d → 39d |
| 570 | **Smartterrains** | 2005-02-18 → 2005-03-11 (+21d) | 2005-02-21 → 2005-03-15 (+22d) | 57.88d → 39d |
| 571 | **Stage 1** | 2005-02-18 → 2005-03-11 (+21d) | 2005-02-21 → 2005-03-15 (+22d) | 57.88d → 39d |
| 572 | Design | 2005-02-18 → 2005-03-11 (+21d) | 2005-02-18 → 2005-03-12 (+22d) | 57.88d → 39d |
| 573 | Implementation | 2005-02-19 → 2005-03-12 (+21d) | 2005-02-19 → 2005-03-14 (+23d) | 57.88d → 39d |
| 574 | Tuning | 2005-02-21 → 2005-03-14 (+21d) | 2005-02-21 → 2005-03-15 (+22d) | 57.88d → 39d |
| 575 | **Monsters/Spawns** | 2005-02-18 → 2005-03-11 (+21d) | 2005-02-21 → 2005-03-15 (+22d) | 57.88d → 39d |
| 576 | **Stage 1** | 2005-02-18 → 2005-03-11 (+21d) | 2005-02-21 → 2005-03-15 (+22d) | 57.88d → 39d |
| 577 | Design | 2005-02-18 → 2005-03-11 (+21d) | 2005-02-18 → 2005-03-12 (+22d) | 57.88d → 39d |
| 578 | Implementation | 2005-02-19 → 2005-03-12 (+21d) | 2005-02-19 → 2005-03-14 (+23d) | 57.88d → 39d |

| ID | Task | Start | Finish | Total float |
| --- | --- | --- | --- | --- |
| 579 | Tuning | 2005-02-21 → 2005-03-14 (+21d) | 2005-02-21 → 2005-03-15 (+22d) | 57.88d → 39d |
| 580 | **Stalkers/Spawns** | 2005-02-18 → 2005-03-11 (+21d) | 2005-02-21 → 2005-03-15 (+22d) | 57.88d → 39d |
| 581 | **Stage 1** | 2005-02-18 → 2005-03-11 (+21d) | 2005-02-21 → 2005-03-15 (+22d) | 57.88d → 39d |
| 582 | Design | 2005-02-18 → 2005-03-11 (+21d) | 2005-02-18 → 2005-03-12 (+22d) | 57.88d → 39d |
| 583 | Implementation | 2005-02-19 → 2005-03-12 (+21d) | 2005-02-19 → 2005-03-14 (+23d) | 57.88d → 39d |
| 584 | Tuning | 2005-02-21 → 2005-03-14 (+21d) | 2005-02-21 → 2005-03-15 (+22d) | 57.88d → 39d |
| 585 | **Anomalies/Spawns** | 2005-02-18 → 2005-03-11 (+21d) | 2005-02-21 → 2005-03-15 (+22d) | 57.88d → 39d |
| 586 | **Stage 1** | 2005-02-18 → 2005-03-11 (+21d) | 2005-02-21 → 2005-03-15 (+22d) | 57.88d → 39d |
| 587 | Design | 2005-02-18 → 2005-03-11 (+21d) | 2005-02-18 → 2005-03-12 (+22d) | 57.88d → 39d |
| 588 | Implementation | 2005-02-19 → 2005-03-12 (+21d) | 2005-02-19 → 2005-03-14 (+23d) | 57.88d → 39d |
| 589 | Tuning | 2005-02-21 → 2005-03-14 (+21d) | 2005-02-21 → 2005-03-15 (+22d) | 57.88d → 39d |
| 590 | **Physicks** | 2005-02-18 → 2005-03-11 (+21d) | 2005-02-21 → 2005-03-15 (+22d) | 57.88d → 39d |
| 591 | **Stage 1** | 2005-02-18 → 2005-03-11 (+21d) | 2005-02-21 → 2005-03-15 (+22d) | 57.88d → 39d |
| 592 | Design | 2005-02-18 → 2005-03-11 (+21d) | 2005-02-18 → 2005-03-12 (+22d) | 57.88d → 39d |
| 593 | Implementation | 2005-02-19 → 2005-03-12 (+21d) | 2005-02-19 → 2005-03-14 (+23d) | 57.88d → 39d |
| 594 | Tuning | 2005-02-21 → 2005-03-14 (+21d) | 2005-02-21 → 2005-03-15 (+22d) | 57.88d → 39d |
| 596 | **Scripts** | 2005-02-18 → 2005-03-11 (+21d) | 2005-02-23 → 2005-03-17 (+22d) | 55.88d → 37d |
| 597 | **Script 1** | 2005-02-18 → 2005-03-11 (+21d) | 2005-02-23 → 2005-03-17 (+22d) | 55.88d → 37d |
| 598 | Scenario(text) | 2005-02-18 → 2005-03-11 (+21d) | 2005-02-18 → 2005-03-12 (+22d) | 55.88d → 37d |
| 599 | Постановка задач | 2005-02-19 → 2005-03-12 (+21d) | 2005-02-19 → 2005-03-14 (+23d) | 55.88d → 37d |
| 600 | Implimentation | 2005-02-21 → 2005-03-14 (+21d) | 2005-02-21 → 2005-03-15 (+22d) | 55.88d → 37d |
| 601 | Dilogs/VO/Icons/Objects/Animations | 2005-02-22 → 2005-03-15 (+21d) | 2005-02-22 → 2005-03-16 (+22d) | 55.88d → 37d |
| 602 | Настройка | 2005-02-23 → 2005-03-16 (+21d) | 2005-02-23 → 2005-03-17 (+22d) | 55.88d → 37d |
| 603 | **Script 2** | 2005-02-18 → 2005-03-11 (+21d) | 2005-02-23 → 2005-03-17 (+22d) | 55.88d → 37d |
| 604 | Scenario(text) | 2005-02-18 → 2005-03-11 (+21d) | 2005-02-18 → 2005-03-12 (+22d) | 55.88d → 37d |
| 605 | Постановка задач | 2005-02-19 → 2005-03-12 (+21d) | 2005-02-19 → 2005-03-14 (+23d) | 55.88d → 37d |
| 606 | Implimentation | 2005-02-21 → 2005-03-14 (+21d) | 2005-02-21 → 2005-03-15 (+22d) | 55.88d → 37d |
| 607 | Dilogs/VO/Icons/Objects/Animations | 2005-02-22 → 2005-03-15 (+21d) | 2005-02-22 → 2005-03-16 (+22d) | 55.88d → 37d |
| 608 | Настройка | 2005-02-23 → 2005-03-16 (+21d) | 2005-02-23 → 2005-03-17 (+22d) | 55.88d → 37d |
| 609 | **Script 3** | 2005-02-18 → 2005-03-11 (+21d) | 2005-02-23 → 2005-03-17 (+22d) | 55.88d → 37d |
| 610 | Scenario(text) | 2005-02-18 → 2005-03-11 (+21d) | 2005-02-18 → 2005-03-12 (+22d) | 55.88d → 37d |
| 611 | Постановка задач | 2005-02-19 → 2005-03-12 (+21d) | 2005-02-19 → 2005-03-14 (+23d) | 55.88d → 37d |
| 612 | Implimentation | 2005-02-21 → 2005-03-14 (+21d) | 2005-02-21 → 2005-03-15 (+22d) | 55.88d → 37d |
| 613 | Dilogs/VO/Icons/Objects/Animations | 2005-02-22 → 2005-03-15 (+21d) | 2005-02-22 → 2005-03-16 (+22d) | 55.88d → 37d |
| 614 | Настройка | 2005-02-23 → 2005-03-16 (+21d) | 2005-02-23 → 2005-03-17 (+22d) | 55.88d → 37d |
| 615 | **Script 4** | 2005-02-18 → 2005-03-11 (+21d) | 2005-02-23 → 2005-03-17 (+22d) | 55.88d → 37d |
| 616 | Scenario(text) | 2005-02-18 → 2005-03-11 (+21d) | 2005-02-18 → 2005-03-12 (+22d) | 55.88d → 37d |
| 617 | Постановка задач | 2005-02-19 → 2005-03-12 (+21d) | 2005-02-19 → 2005-03-14 (+23d) | 55.88d → 37d |
| 618 | Implimentation | 2005-02-21 → 2005-03-14 (+21d) | 2005-02-21 → 2005-03-15 (+22d) | 55.88d → 37d |
| 619 | Dilogs/VO/Icons/Objects/Animations | 2005-02-22 → 2005-03-15 (+21d) | 2005-02-22 → 2005-03-16 (+22d) | 55.88d → 37d |
| 620 | Настройка | 2005-02-23 → 2005-03-16 (+21d) | 2005-02-23 → 2005-03-17 (+22d) | 55.88d → 37d |
| 621 | **Script 5** | 2005-02-18 → 2005-03-11 (+21d) | 2005-02-23 → 2005-03-17 (+22d) | 55.88d → 37d |
| 622 | Scenario(text) | 2005-02-18 → 2005-03-11 (+21d) | 2005-02-18 → 2005-03-12 (+22d) | 55.88d → 37d |
| 623 | Постановка задач | 2005-02-19 → 2005-03-12 (+21d) | 2005-02-19 → 2005-03-14 (+23d) | 55.88d → 37d |
| 624 | Implimentation | 2005-02-21 → 2005-03-14 (+21d) | 2005-02-21 → 2005-03-15 (+22d) | 55.88d → 37d |
| 625 | Dilogs/VO/Icons/Objects/Animations | 2005-02-22 → 2005-03-15 (+21d) | 2005-02-22 → 2005-03-16 (+22d) | 55.88d → 37d |
| 626 | Настройка | 2005-02-23 → 2005-03-16 (+21d) | 2005-02-23 → 2005-03-17 (+22d) | 55.88d → 37d |

## Version 4 (saved 2005-02-02)

Last finish stays 2005-03-28.

Removed: 312 AI Maps; 313 Graphs; 363 Постановка задач; 372 Постановка задач; 382 Постановка задач; 392 Постановка задач; 401 Постановка задач; 410 Постановка задач; 419 Постановка задач; 431 Постановка задач; 440 Постановка задач; 454 Постановка задач; 463 Постановка задач

Changed:

| ID | Task | Start | Finish | Duration | Complete | Total float | Predecessors | Other |
| --- | --- | --- | --- | --- | --- | --- | --- | --- |
| 297 | **05_Dark_Valley** |  | 2005-02-26 → 2005-02-28 (+2d) | 29.88d? → 30.88d? | 3% → 4% | -9d → -10d |  |  |
| 298 | **LevelDesign** |  | 2005-02-04 → 2005-02-02 (-2d) | 11d? → 9d? |  | 1.88d → 3.88d |  |  |
| 299 | **Stage 1** |  | 2005-02-04 → 2005-02-02 (-2d) | 11d? → 9d? |  | 1.88d → 3.88d |  |  |
| 309 | **GameDesign** | 2005-02-01 A |  |  | 0% → 5% |  |  |  |
| 310 | AI Maps/Graphs | 2005-02-01 A |  |  | 0% → 35% |  |  |  |
| 321 | **Monsters/Spawns** |  | 2005-02-17 → 2005-02-19 (+2d) | 1d? → 3d? |  | -1.12d → -3.12d |  |  |
| 322 | **Stage 1** |  | 2005-02-17 → 2005-02-19 (+2d) | 1d? → 3d? |  | -1.12d → -3.12d |  |  |
| 324 | Implementation | 2005-02-17 → 2005-02-18 (+1d) | 2005-02-17 → 2005-02-18 (+1d) |  |  | -1.12d → -3.12d | none → 323 |  |
| 325 | Tuning | 2005-02-17 → 2005-02-19 (+2d) | 2005-02-17 → 2005-02-19 (+2d) | 0d → 1d |  | -1.12d → -3.12d |  |  |
| 326 | **Stalkers/Spawns** |  | 2005-02-19 → 2005-02-22 (+3d) | 1d? → 3d? |  | -3.12d → -5.12d |  |  |
| 327 | **Stage 1** |  | 2005-02-19 → 2005-02-22 (+3d) | 1d? → 3d? |  | -3.12d → -5.12d |  |  |
| 329 | Implementation | 2005-02-19 → 2005-02-21 (+2d) | 2005-02-19 → 2005-02-21 (+2d) | 0d → 1d |  | -3.12d → -5.12d |  |  |
| 330 | Tuning | 2005-02-19 → 2005-02-22 (+3d) | 2005-02-19 → 2005-02-22 (+3d) | 0d → 1d |  | -3.12d → -5.12d |  |  |
| 331 | **Anomalies/Spawns** |  | 2005-02-19 → 2005-02-22 (+3d) | 1d? → 3d? |  | -3.12d → -5.12d |  |  |
| 332 | **Stage 1** |  | 2005-02-19 → 2005-02-22 (+3d) | 1d? → 3d? |  | -3.12d → -5.12d |  |  |
| 334 | Implementation | 2005-02-19 → 2005-02-21 (+2d) | 2005-02-19 → 2005-02-21 (+2d) | 0d → 1d |  | -3.12d → -5.12d |  |  |
| 335 | Tuning | 2005-02-19 → 2005-02-22 (+3d) | 2005-02-19 → 2005-02-22 (+3d) | 0d → 1d |  | -3.12d → -5.12d |  |  |
| 338 | Design |  |  |  |  |  |  | resources none → Джип |
| 339 | Implementation |  |  |  |  |  |  | resources none → Джип |
| 340 | Tuning |  |  |  |  |  |  | resources none → Джип |
| 342 | **Scripts** |  | 2005-02-26 → 2005-02-28 (+2d) | 26.88d? → 27.88d? |  | -9d → -10d |  |  |
| 344 | Постановка задач |  |  | 0d → 1d? |  | 8.88d → 9.88d |  |  |
| 346 | **Реализация** |  |  | 2d? → 1.75d? |  | 8.88d → 9.12d | 344 → none |  |
| 347 | Реализация |  |  |  |  |  | 344 → none |  |
| 352 | Тексты, Диалоги, Задания, Отметки на карте, новости, профили персонажей (продумать) | 2005-02-05 → 2005-02-07 (+2d) | 2005-02-05 → 2005-02-07 (+2d) | 0d → 1d |  | 8.88d → 7.88d |  |  |
| 354 | Тестирование |  |  |  |  |  |  | resources none → Lema |
| 355 | Проверить расстановку AI нод вокруг дерева |  |  |  |  |  |  | resources Partizan → Lema |
| 357 | **Реализация** |  | 2005-02-07 → 2005-02-04 (-3d) | 3d → 1d |  | 7.88d → 9.88d |  |  |
| 359 | Расстановка |  |  | 1d → 0.5d |  |  |  |  |
| 360 | Тексты, Диалоги, Задания, Отметки на карте, новости, профили персонажей (продумать) |  |  | 1d → 0.5d |  |  | none → 359 |  |
| 362 | Тестирование |  |  |  |  |  |  | resources none → Lema |
| 363 | Проверить расстановку AI нод вокруг дерева |  |  |  |  |  |  | resources none → Lema |
| 365 | **Реализация** |  |  | 2d? → 1.88d? |  | 7.88d → 8d |  |  |
| 368 | Расстановка |  |  | 1d? → 1d |  |  |  |  |
| 371 | Тестирование |  |  |  |  |  |  | resources none → Lema |
| 372 | Проверить расстановку AI нод вокруг дерева |  |  |  |  |  |  | resources none → Lema |
| 374 | **Реализация** |  |  |  |  |  | Постановка задач → none |  |
| 375 | Реализация |  |  |  |  |  | Постановка задач → none |  |
| 378 | Тексты, Диалоги, Задания, Отметки на карте, новости, профили персонажей (продумать) | 2005-02-08 → 2005-02-10 (+2d) | 2005-02-08 → 2005-02-10 (+2d) | 0.88d → 0.5d |  | 7d → 5.38d |  | constraint finish no earlier than 2005-02-08 → start no earlier than 2005-02-10 |
| 380 | Тестирование |  |  |  |  |  |  | resources none → Lema |
| 381 | Проверить расстановку AI нод вокруг дерева |  |  |  |  |  |  | resources none → Lema |
| 383 | **Реализация** |  |  | 1d? → 0.88d |  | 3.88d → 4d |  |  |
| 388 | Тестирование |  |  |  |  |  |  | resources none → Lema |
| 389 | Проверить расстановку AI нод вокруг дерева |  |  |  |  |  |  | resources none → Lema |
| 390 | **Сцена 6 - Прибытие автомобиля.** |  | 2005-02-12 → 2005-02-14 (+2d) | 1d? → 1.88d? |  | 2.88d → 2d |  |  |
| 391 | **Реализация** |  |  | 1d? → 0.88d |  | 2.88d → 3d |  |  |
| 395 | **Тестирование** | 2005-02-12 → 2005-02-14 (+2d) | 2005-02-12 → 2005-02-14 (+2d) |  |  | 3d → 2d |  |  |
| 396 | Тестирование | 2005-02-12 → 2005-02-14 (+2d) | 2005-02-12 → 2005-02-14 (+2d) |  |  | 3d → 2d |  | constraint start no earlier than 2005-02-12 → start no earlier than 2005-02-14; resources none → Lema |
| 397 | Проверить расстановку AI нод вокруг дерева | 2005-02-12 → 2005-02-14 (+2d) | 2005-02-12 → 2005-02-14 (+2d) |  |  | 3d → 2d |  | constraint start no earlier than 2005-02-12 → start no earlier than 2005-02-14; resources none → Lema |
| 399 | **Реализация** |  |  | 2d? → 1.88d |  | 0.88d → 1d |  |  |
| 404 | Тестирование |  |  |  |  |  |  | resources none → Lema |
| 405 | Проверить расстановку AI нод вокруг дерева |  |  |  |  |  |  | resources none → Lema |
| 407 | **Реализация** |  |  | 1d? → 0.88d? |  | -0.12d → 0d |  |  |
| 412 | Расстановка |  |  | 0.88d → 1d |  | 0d → -0.12d |  |  |
| 415 | Тестирование |  |  |  |  |  |  | resources none → Lema |
| 416 | Проверить расстановку AI нод вокруг дерева |  |  |  |  |  |  | resources none → Lema |
| 417 | **Сцена 7 - Засады бандитов на входе с Гарбэджа.** |  |  | 1.88d? → 2d? |  | -2d → -2.12d |  |  |
| 418 | **Реализация** |  |  | 1.88d? → 1.88d |  |  |  |  |
| 421 | Тексты, Диалоги, Задания, Отметки на карте, новости, профили персонажей (продумать) | 2005-02-17 → 2005-02-18 (+1d) | 2005-02-17 → 2005-02-18 (+1d) |  |  | -1.12d → -2.12d |  | constraint start no earlier than 2005-02-17 → start no earlier than 2005-02-18 |
| 423 | Тестирование |  |  |  |  |  |  | resources none → Lema |
| 424 | Проверить расстановку AI нод вокруг дерева |  |  |  |  |  |  | resources none → Lema |
| 425 | **Сцена 8 - Игрок в темнице** |  |  | 3.88d? → 4d? |  | -6d → -6.12d |  |  |
| 434 | Тексты, Диалоги, Задания, Отметки на карте, новости, профили персонажей (продумать) | 2005-02-19 → 2005-02-23 (+4d) | 2005-02-19 → 2005-02-23 (+4d) |  |  | -3.12d → -6.12d |  | constraint start no earlier than 2005-02-19 → start no earlier than 2005-02-23 |
| 436 | Тестирование |  |  |  |  |  |  | resources none → Lema |
| 437 | Проверить расстановку AI нод вокруг дерева |  |  |  |  |  |  | resources none → Lema |
| 438 | **Сцена 9 - Узник Бандитов.** |  |  | 1.88d? → 2d? |  | -8d → -8.12d |  |  |
| 439 | **Реализация** |  |  | 1.88d? → 1.88d |  |  |  |  |
| 441 | Расстановка |  |  | 0.88d → 1d |  | -8d → -8.12d |  |  |
| 442 | Тексты, Диалоги, Задания, Отметки на карте, новости, профили персонажей (продумать) | 2005-02-24 → 2005-02-25 (+1d) | 2005-02-24 → 2005-02-25 (+1d) |  |  | -7.12d → -8.12d |  | constraint start no earlier than 2005-02-24 → start no earlier than 2005-02-25 |
| 443 | **Тестирование** |  |  | 0.88d? → 1d? |  | -8d → -8.12d |  |  |

| ID | Task | Start | Finish | Duration | Total float | Other |
| --- | --- | --- | --- | --- | --- | --- |
| 444 | Тестирование |  |  | 0.88d? → 1d? | -8d → -8.12d | resources none → Lema |
| 445 | Проверить расстановку AI нод вокруг дерева |  |  |  |  | resources none → Lema |
| 446 | **Сцена 10 - Жертвоприношение.** |  | 2005-02-26 → 2005-02-28 (+2d) | 1.88d? → 2.88d? | -9d → -10d |  |
| 447 | **Реализация** |  |  | 1.88d? → 1.75d | -9d → -8.88d |  |
| 450 | Тексты, Диалоги, Задания, Отметки на карте, новости, профили персонажей (продумать) | 2005-02-25 → 2005-02-26 (+1d) | 2005-02-25 → 2005-02-26 (+1d) |  | -8.12d → -9.12d | constraint start no earlier than 2005-02-25 → start no earlier than 2005-02-26 |
| 451 | **Тестирование** | 2005-02-26 → 2005-02-28 (+2d) | 2005-02-26 → 2005-02-28 (+2d) |  | -9d → -10d |  |
| 452 | Тестирование | 2005-02-26 → 2005-02-28 (+2d) | 2005-02-26 → 2005-02-28 (+2d) |  | -9d → -10d | constraint start no earlier than 2005-02-26 → start no earlier than 2005-02-28; resources none → Lema |
| 453 | Проверить расстановку AI нод вокруг дерева | 2005-02-26 → 2005-02-28 (+2d) | 2005-02-26 → 2005-02-28 (+2d) |  | -9d → -10d | constraint start no earlier than 2005-02-26 → start no earlier than 2005-02-28; resources none → Lema |
| 455 | **18_Prypiat** | 2005-02-26 → 2005-02-28 (+2d) | 2005-03-11 → 2005-03-12 (+1d) |  | -9d → -10d |  |
| 456 | **LevelDesign** | 2005-02-26 → 2005-02-28 (+2d) | 2005-03-11 → 2005-03-12 (+1d) |  | -9d → -10d |  |
| 457 | **Stage 1** | 2005-02-26 → 2005-02-28 (+2d) | 2005-03-11 → 2005-03-12 (+1d) |  | -9d → -10d |  |
| 458 | List of Changes | 2005-02-26 → 2005-02-28 (+2d) | 2005-03-01 → 2005-03-02 (+1d) |  | -9d → -10d |  |
| 459 | Changed Geometry | 2005-03-01 → 2005-03-02 (+1d) | 2005-03-02 → 2005-03-03 (+1d) |  | -9d → -10d |  |
| 460 | Check List 1 | 2005-03-02 → 2005-03-03 (+1d) | 2005-03-03 → 2005-03-04 (+1d) |  | -9d → -10d |  |
| 461 | Check List 2 | 2005-03-03 → 2005-03-04 (+1d) | 2005-03-04 → 2005-03-05 (+1d) |  | -9d → -10d |  |
| 462 | Check List 3 | 2005-03-04 → 2005-03-05 (+1d) | 2005-03-05 → 2005-03-07 (+2d) |  | -9d → -10d |  |
| 463 | Check List 4 | 2005-03-05 → 2005-03-07 (+2d) | 2005-03-07 → 2005-03-08 (+1d) |  | -9d → -10d |  |
| 464 | Render Geometry | 2005-03-07 → 2005-03-08 (+1d) | 2005-03-08 → 2005-03-09 (+1d) |  | -9d → -10d |  |
| 465 | Grass | 2005-03-08 → 2005-03-09 (+1d) | 2005-03-09 → 2005-03-10 (+1d) |  | -9d → -10d |  |
| 466 | AI Maps | 2005-03-09 → 2005-03-10 (+1d) | 2005-03-10 → 2005-03-11 (+1d) |  | -9d → -10d |  |
| 467 | Graphs | 2005-03-10 → 2005-03-11 (+1d) | 2005-03-11 → 2005-03-12 (+1d) |  | -9d → -10d |  |
| 469 | **GameDesign** | 2005-02-26 → 2005-02-28 (+2d) | 2005-03-02 → 2005-03-03 (+1d) |  | 15d → 14d |  |
| 470 | **Secrets** | 2005-02-26 → 2005-02-28 (+2d) | 2005-03-02 → 2005-03-03 (+1d) |  | 15d → 14d |  |
| 471 | **Stage 1** | 2005-02-26 → 2005-02-28 (+2d) | 2005-03-02 → 2005-03-03 (+1d) |  | 15d → 14d |  |
| 472 | Design | 2005-02-26 → 2005-02-28 (+2d) | 2005-02-28 → 2005-03-01 (+1d) |  | 15d → 14d |  |
| 473 | Implementation | 2005-02-28 → 2005-03-01 (+1d) | 2005-03-01 → 2005-03-02 (+1d) |  | 15d → 14d |  |
| 474 | Tuning | 2005-03-01 → 2005-03-02 (+1d) | 2005-03-02 → 2005-03-03 (+1d) |  | 15d → 14d |  |
| 475 | **Smartterrains** | 2005-02-26 → 2005-02-28 (+2d) | 2005-03-02 → 2005-03-03 (+1d) |  | 15d → 14d |  |
| 476 | **Stage 1** | 2005-02-26 → 2005-02-28 (+2d) | 2005-03-02 → 2005-03-03 (+1d) |  | 15d → 14d |  |
| 477 | Design | 2005-02-26 → 2005-02-28 (+2d) | 2005-02-28 → 2005-03-01 (+1d) |  | 15d → 14d |  |
| 478 | Implementation | 2005-02-28 → 2005-03-01 (+1d) | 2005-03-01 → 2005-03-02 (+1d) |  | 15d → 14d |  |
| 479 | Tuning | 2005-03-01 → 2005-03-02 (+1d) | 2005-03-02 → 2005-03-03 (+1d) |  | 15d → 14d |  |
| 480 | **Monsters/Spawns** | 2005-02-26 → 2005-02-28 (+2d) | 2005-03-02 → 2005-03-03 (+1d) |  | 15d → 14d |  |
| 481 | **Stage 1** | 2005-02-26 → 2005-02-28 (+2d) | 2005-03-02 → 2005-03-03 (+1d) |  | 15d → 14d |  |
| 482 | Design | 2005-02-26 → 2005-02-28 (+2d) | 2005-02-28 → 2005-03-01 (+1d) |  | 15d → 14d |  |
| 483 | Implementation | 2005-02-28 → 2005-03-01 (+1d) | 2005-03-01 → 2005-03-02 (+1d) |  | 15d → 14d |  |
| 484 | Tuning | 2005-03-01 → 2005-03-02 (+1d) | 2005-03-02 → 2005-03-03 (+1d) |  | 15d → 14d |  |
| 485 | **Stalkers/Spawns** | 2005-02-26 → 2005-02-28 (+2d) | 2005-03-02 → 2005-03-03 (+1d) |  | 15d → 14d |  |
| 486 | **Stage 1** | 2005-02-26 → 2005-02-28 (+2d) | 2005-03-02 → 2005-03-03 (+1d) |  | 15d → 14d |  |
| 487 | Design | 2005-02-26 → 2005-02-28 (+2d) | 2005-02-28 → 2005-03-01 (+1d) |  | 15d → 14d |  |
| 488 | Implementation | 2005-02-28 → 2005-03-01 (+1d) | 2005-03-01 → 2005-03-02 (+1d) |  | 15d → 14d |  |
| 489 | Tuning | 2005-03-01 → 2005-03-02 (+1d) | 2005-03-02 → 2005-03-03 (+1d) |  | 15d → 14d |  |
| 490 | **Anomalies/Spawns** | 2005-02-26 → 2005-02-28 (+2d) | 2005-03-02 → 2005-03-03 (+1d) |  | 15d → 14d |  |
| 491 | **Stage 1** | 2005-02-26 → 2005-02-28 (+2d) | 2005-03-02 → 2005-03-03 (+1d) |  | 15d → 14d |  |
| 492 | Design | 2005-02-26 → 2005-02-28 (+2d) | 2005-02-28 → 2005-03-01 (+1d) |  | 15d → 14d |  |
| 493 | Implementation | 2005-02-28 → 2005-03-01 (+1d) | 2005-03-01 → 2005-03-02 (+1d) |  | 15d → 14d |  |
| 494 | Tuning | 2005-03-01 → 2005-03-02 (+1d) | 2005-03-02 → 2005-03-03 (+1d) |  | 15d → 14d |  |
| 495 | **Physicks** | 2005-02-26 → 2005-02-28 (+2d) | 2005-03-02 → 2005-03-03 (+1d) |  | 15d → 14d |  |
| 496 | **Stage 1** | 2005-02-26 → 2005-02-28 (+2d) | 2005-03-02 → 2005-03-03 (+1d) |  | 15d → 14d |  |
| 497 | Design | 2005-02-26 → 2005-02-28 (+2d) | 2005-02-28 → 2005-03-01 (+1d) |  | 15d → 14d |  |
| 498 | Implementation | 2005-02-28 → 2005-03-01 (+1d) | 2005-03-01 → 2005-03-02 (+1d) |  | 15d → 14d |  |
| 499 | Tuning | 2005-03-01 → 2005-03-02 (+1d) | 2005-03-02 → 2005-03-03 (+1d) |  | 15d → 14d |  |
| 501 | **Scripts** | 2005-02-26 → 2005-02-28 (+2d) | 2005-03-04 → 2005-03-05 (+1d) |  | 13d → 12d |  |
| 502 | **Script 1** | 2005-02-26 → 2005-02-28 (+2d) | 2005-03-04 → 2005-03-05 (+1d) |  | 13d → 12d |  |
| 503 | Scenario(text) | 2005-02-26 → 2005-02-28 (+2d) | 2005-02-28 → 2005-03-01 (+1d) |  | 13d → 12d |  |
| 504 | Постановка задач | 2005-02-28 → 2005-03-01 (+1d) | 2005-03-01 → 2005-03-02 (+1d) |  | 13d → 12d |  |
| 505 | Implimentation | 2005-03-01 → 2005-03-02 (+1d) | 2005-03-02 → 2005-03-03 (+1d) |  | 13d → 12d |  |
| 506 | Dilogs/VO/Icons/Objects/Animations | 2005-03-02 → 2005-03-03 (+1d) | 2005-03-03 → 2005-03-04 (+1d) |  | 13d → 12d |  |
| 507 | Настройка | 2005-03-03 → 2005-03-04 (+1d) | 2005-03-04 → 2005-03-05 (+1d) |  | 13d → 12d |  |
| 508 | **Script 2** | 2005-02-26 → 2005-02-28 (+2d) | 2005-03-04 → 2005-03-05 (+1d) |  | 13d → 12d |  |
| 509 | Scenario(text) | 2005-02-26 → 2005-02-28 (+2d) | 2005-02-28 → 2005-03-01 (+1d) |  | 13d → 12d |  |
| 510 | Постановка задач | 2005-02-28 → 2005-03-01 (+1d) | 2005-03-01 → 2005-03-02 (+1d) |  | 13d → 12d |  |
| 511 | Implimentation | 2005-03-01 → 2005-03-02 (+1d) | 2005-03-02 → 2005-03-03 (+1d) |  | 13d → 12d |  |
| 512 | Dilogs/VO/Icons/Objects/Animations | 2005-03-02 → 2005-03-03 (+1d) | 2005-03-03 → 2005-03-04 (+1d) |  | 13d → 12d |  |
| 513 | Настройка | 2005-03-03 → 2005-03-04 (+1d) | 2005-03-04 → 2005-03-05 (+1d) |  | 13d → 12d |  |
| 514 | **Script 3** | 2005-02-26 → 2005-02-28 (+2d) | 2005-03-04 → 2005-03-05 (+1d) |  | 13d → 12d |  |
| 515 | Scenario(text) | 2005-02-26 → 2005-02-28 (+2d) | 2005-02-28 → 2005-03-01 (+1d) |  | 13d → 12d |  |
| 516 | Постановка задач | 2005-02-28 → 2005-03-01 (+1d) | 2005-03-01 → 2005-03-02 (+1d) |  | 13d → 12d |  |
| 517 | Implimentation | 2005-03-01 → 2005-03-02 (+1d) | 2005-03-02 → 2005-03-03 (+1d) |  | 13d → 12d |  |
| 518 | Dilogs/VO/Icons/Objects/Animations | 2005-03-02 → 2005-03-03 (+1d) | 2005-03-03 → 2005-03-04 (+1d) |  | 13d → 12d |  |

| ID | Task | Start | Finish | Total float |
| --- | --- | --- | --- | --- |
| 519 | Настройка | 2005-03-03 → 2005-03-04 (+1d) | 2005-03-04 → 2005-03-05 (+1d) | 13d → 12d |
| 520 | **Script 4** | 2005-02-26 → 2005-02-28 (+2d) | 2005-03-04 → 2005-03-05 (+1d) | 13d → 12d |
| 521 | Scenario(text) | 2005-02-26 → 2005-02-28 (+2d) | 2005-02-28 → 2005-03-01 (+1d) | 13d → 12d |
| 522 | Постановка задач | 2005-02-28 → 2005-03-01 (+1d) | 2005-03-01 → 2005-03-02 (+1d) | 13d → 12d |
| 523 | Implimentation | 2005-03-01 → 2005-03-02 (+1d) | 2005-03-02 → 2005-03-03 (+1d) | 13d → 12d |
| 524 | Dilogs/VO/Icons/Objects/Animations | 2005-03-02 → 2005-03-03 (+1d) | 2005-03-03 → 2005-03-04 (+1d) | 13d → 12d |
| 525 | Настройка | 2005-03-03 → 2005-03-04 (+1d) | 2005-03-04 → 2005-03-05 (+1d) | 13d → 12d |
| 526 | **Script 5** | 2005-02-26 → 2005-02-28 (+2d) | 2005-03-04 → 2005-03-05 (+1d) | 13d → 12d |
| 527 | Scenario(text) | 2005-02-26 → 2005-02-28 (+2d) | 2005-02-28 → 2005-03-01 (+1d) | 13d → 12d |
| 528 | Постановка задач | 2005-02-28 → 2005-03-01 (+1d) | 2005-03-01 → 2005-03-02 (+1d) | 13d → 12d |
| 529 | Implimentation | 2005-03-01 → 2005-03-02 (+1d) | 2005-03-02 → 2005-03-03 (+1d) | 13d → 12d |
| 530 | Dilogs/VO/Icons/Objects/Animations | 2005-03-02 → 2005-03-03 (+1d) | 2005-03-03 → 2005-03-04 (+1d) | 13d → 12d |
| 531 | Настройка | 2005-03-03 → 2005-03-04 (+1d) | 2005-03-04 → 2005-03-05 (+1d) | 13d → 12d |
| 533 | **13_Dead_City** | 2005-03-11 → 2005-03-12 (+1d) | 2005-03-24 → 2005-03-25 (+1d) | 7d → 6d |
| 534 | **LevelDesign** | 2005-03-11 → 2005-03-12 (+1d) | 2005-03-24 → 2005-03-25 (+1d) | 7d → 6d |
| 535 | **Stage 1** | 2005-03-11 → 2005-03-12 (+1d) | 2005-03-24 → 2005-03-25 (+1d) | 7d → 6d |
| 536 | List of Changes | 2005-03-11 → 2005-03-12 (+1d) | 2005-03-14 → 2005-03-15 (+1d) | 7d → 6d |
| 537 | Changed Geometry | 2005-03-14 → 2005-03-15 (+1d) | 2005-03-15 → 2005-03-16 (+1d) | 7d → 6d |
| 538 | Check List 1 | 2005-03-15 → 2005-03-16 (+1d) | 2005-03-16 → 2005-03-17 (+1d) | 7d → 6d |
| 539 | Check List 2 | 2005-03-16 → 2005-03-17 (+1d) | 2005-03-17 → 2005-03-18 (+1d) | 7d → 6d |
| 540 | Check List 3 | 2005-03-17 → 2005-03-18 (+1d) | 2005-03-18 → 2005-03-19 (+1d) | 7d → 6d |
| 541 | Check List 4 | 2005-03-18 → 2005-03-19 (+1d) | 2005-03-19 → 2005-03-21 (+2d) | 7d → 6d |
| 542 | Render Geometry | 2005-03-19 → 2005-03-21 (+2d) | 2005-03-21 → 2005-03-22 (+1d) | 7d → 6d |
| 543 | Grass | 2005-03-21 → 2005-03-22 (+1d) | 2005-03-22 → 2005-03-23 (+1d) | 7d → 6d |
| 544 | AI Maps | 2005-03-22 → 2005-03-23 (+1d) | 2005-03-23 → 2005-03-24 (+1d) | 7d → 6d |
| 545 | Graphs | 2005-03-23 → 2005-03-24 (+1d) | 2005-03-24 → 2005-03-25 (+1d) | 7d → 6d |
| 547 | **GameDesign** | 2005-03-11 → 2005-03-12 (+1d) | 2005-03-15 → 2005-03-16 (+1d) | 39d → 38d |
| 548 | **Secrets** | 2005-03-11 → 2005-03-12 (+1d) | 2005-03-15 → 2005-03-16 (+1d) | 39d → 38d |
| 549 | **Stage 1** | 2005-03-11 → 2005-03-12 (+1d) | 2005-03-15 → 2005-03-16 (+1d) | 39d → 38d |
| 550 | Design | 2005-03-11 → 2005-03-12 (+1d) | 2005-03-12 → 2005-03-14 (+2d) | 39d → 38d |
| 551 | Implementation | 2005-03-12 → 2005-03-14 (+2d) | 2005-03-14 → 2005-03-15 (+1d) | 39d → 38d |
| 552 | Tuning | 2005-03-14 → 2005-03-15 (+1d) | 2005-03-15 → 2005-03-16 (+1d) | 39d → 38d |
| 553 | **Smartterrains** | 2005-03-11 → 2005-03-12 (+1d) | 2005-03-15 → 2005-03-16 (+1d) | 39d → 38d |
| 554 | **Stage 1** | 2005-03-11 → 2005-03-12 (+1d) | 2005-03-15 → 2005-03-16 (+1d) | 39d → 38d |
| 555 | Design | 2005-03-11 → 2005-03-12 (+1d) | 2005-03-12 → 2005-03-14 (+2d) | 39d → 38d |
| 556 | Implementation | 2005-03-12 → 2005-03-14 (+2d) | 2005-03-14 → 2005-03-15 (+1d) | 39d → 38d |
| 557 | Tuning | 2005-03-14 → 2005-03-15 (+1d) | 2005-03-15 → 2005-03-16 (+1d) | 39d → 38d |
| 558 | **Monsters/Spawns** | 2005-03-11 → 2005-03-12 (+1d) | 2005-03-15 → 2005-03-16 (+1d) | 39d → 38d |
| 559 | **Stage 1** | 2005-03-11 → 2005-03-12 (+1d) | 2005-03-15 → 2005-03-16 (+1d) | 39d → 38d |
| 560 | Design | 2005-03-11 → 2005-03-12 (+1d) | 2005-03-12 → 2005-03-14 (+2d) | 39d → 38d |
| 561 | Implementation | 2005-03-12 → 2005-03-14 (+2d) | 2005-03-14 → 2005-03-15 (+1d) | 39d → 38d |
| 562 | Tuning | 2005-03-14 → 2005-03-15 (+1d) | 2005-03-15 → 2005-03-16 (+1d) | 39d → 38d |
| 563 | **Stalkers/Spawns** | 2005-03-11 → 2005-03-12 (+1d) | 2005-03-15 → 2005-03-16 (+1d) | 39d → 38d |
| 564 | **Stage 1** | 2005-03-11 → 2005-03-12 (+1d) | 2005-03-15 → 2005-03-16 (+1d) | 39d → 38d |
| 565 | Design | 2005-03-11 → 2005-03-12 (+1d) | 2005-03-12 → 2005-03-14 (+2d) | 39d → 38d |
| 566 | Implementation | 2005-03-12 → 2005-03-14 (+2d) | 2005-03-14 → 2005-03-15 (+1d) | 39d → 38d |
| 567 | Tuning | 2005-03-14 → 2005-03-15 (+1d) | 2005-03-15 → 2005-03-16 (+1d) | 39d → 38d |
| 568 | **Anomalies/Spawns** | 2005-03-11 → 2005-03-12 (+1d) | 2005-03-15 → 2005-03-16 (+1d) | 39d → 38d |
| 569 | **Stage 1** | 2005-03-11 → 2005-03-12 (+1d) | 2005-03-15 → 2005-03-16 (+1d) | 39d → 38d |
| 570 | Design | 2005-03-11 → 2005-03-12 (+1d) | 2005-03-12 → 2005-03-14 (+2d) | 39d → 38d |
| 571 | Implementation | 2005-03-12 → 2005-03-14 (+2d) | 2005-03-14 → 2005-03-15 (+1d) | 39d → 38d |
| 572 | Tuning | 2005-03-14 → 2005-03-15 (+1d) | 2005-03-15 → 2005-03-16 (+1d) | 39d → 38d |
| 573 | **Physicks** | 2005-03-11 → 2005-03-12 (+1d) | 2005-03-15 → 2005-03-16 (+1d) | 39d → 38d |
| 574 | **Stage 1** | 2005-03-11 → 2005-03-12 (+1d) | 2005-03-15 → 2005-03-16 (+1d) | 39d → 38d |
| 575 | Design | 2005-03-11 → 2005-03-12 (+1d) | 2005-03-12 → 2005-03-14 (+2d) | 39d → 38d |
| 576 | Implementation | 2005-03-12 → 2005-03-14 (+2d) | 2005-03-14 → 2005-03-15 (+1d) | 39d → 38d |
| 577 | Tuning | 2005-03-14 → 2005-03-15 (+1d) | 2005-03-15 → 2005-03-16 (+1d) | 39d → 38d |
| 579 | **Scripts** | 2005-03-11 → 2005-03-12 (+1d) | 2005-03-17 → 2005-03-18 (+1d) | 37d → 36d |
| 580 | **Script 1** | 2005-03-11 → 2005-03-12 (+1d) | 2005-03-17 → 2005-03-18 (+1d) | 37d → 36d |
| 581 | Scenario(text) | 2005-03-11 → 2005-03-12 (+1d) | 2005-03-12 → 2005-03-14 (+2d) | 37d → 36d |
| 582 | Постановка задач | 2005-03-12 → 2005-03-14 (+2d) | 2005-03-14 → 2005-03-15 (+1d) | 37d → 36d |
| 583 | Implimentation | 2005-03-14 → 2005-03-15 (+1d) | 2005-03-15 → 2005-03-16 (+1d) | 37d → 36d |
| 584 | Dilogs/VO/Icons/Objects/Animations | 2005-03-15 → 2005-03-16 (+1d) | 2005-03-16 → 2005-03-17 (+1d) | 37d → 36d |
| 585 | Настройка | 2005-03-16 → 2005-03-17 (+1d) | 2005-03-17 → 2005-03-18 (+1d) | 37d → 36d |
| 586 | **Script 2** | 2005-03-11 → 2005-03-12 (+1d) | 2005-03-17 → 2005-03-18 (+1d) | 37d → 36d |
| 587 | Scenario(text) | 2005-03-11 → 2005-03-12 (+1d) | 2005-03-12 → 2005-03-14 (+2d) | 37d → 36d |
| 588 | Постановка задач | 2005-03-12 → 2005-03-14 (+2d) | 2005-03-14 → 2005-03-15 (+1d) | 37d → 36d |
| 589 | Implimentation | 2005-03-14 → 2005-03-15 (+1d) | 2005-03-15 → 2005-03-16 (+1d) | 37d → 36d |
| 590 | Dilogs/VO/Icons/Objects/Animations | 2005-03-15 → 2005-03-16 (+1d) | 2005-03-16 → 2005-03-17 (+1d) | 37d → 36d |
| 591 | Настройка | 2005-03-16 → 2005-03-17 (+1d) | 2005-03-17 → 2005-03-18 (+1d) | 37d → 36d |

| ID | Task | Start | Finish | Duration | Total float | Other |
| --- | --- | --- | --- | --- | --- | --- |
| 592 | **Script 3** | 2005-03-11 → 2005-03-12 (+1d) | 2005-03-17 → 2005-03-18 (+1d) |  | 37d → 36d |  |
| 593 | Scenario(text) | 2005-03-11 → 2005-03-12 (+1d) | 2005-03-12 → 2005-03-14 (+2d) |  | 37d → 36d |  |
| 594 | Постановка задач | 2005-03-12 → 2005-03-14 (+2d) | 2005-03-14 → 2005-03-15 (+1d) |  | 37d → 36d |  |
| 595 | Implimentation | 2005-03-14 → 2005-03-15 (+1d) | 2005-03-15 → 2005-03-16 (+1d) |  | 37d → 36d |  |
| 596 | Dilogs/VO/Icons/Objects/Animations | 2005-03-15 → 2005-03-16 (+1d) | 2005-03-16 → 2005-03-17 (+1d) |  | 37d → 36d |  |
| 597 | Настройка | 2005-03-16 → 2005-03-17 (+1d) | 2005-03-17 → 2005-03-18 (+1d) |  | 37d → 36d |  |
| 598 | **Script 4** | 2005-03-11 → 2005-03-12 (+1d) | 2005-03-17 → 2005-03-18 (+1d) |  | 37d → 36d |  |
| 599 | Scenario(text) | 2005-03-11 → 2005-03-12 (+1d) | 2005-03-12 → 2005-03-14 (+2d) |  | 37d → 36d |  |
| 600 | Постановка задач | 2005-03-12 → 2005-03-14 (+2d) | 2005-03-14 → 2005-03-15 (+1d) |  | 37d → 36d |  |
| 601 | Implimentation | 2005-03-14 → 2005-03-15 (+1d) | 2005-03-15 → 2005-03-16 (+1d) |  | 37d → 36d |  |
| 602 | Dilogs/VO/Icons/Objects/Animations | 2005-03-15 → 2005-03-16 (+1d) | 2005-03-16 → 2005-03-17 (+1d) |  | 37d → 36d |  |
| 603 | Настройка | 2005-03-16 → 2005-03-17 (+1d) | 2005-03-17 → 2005-03-18 (+1d) |  | 37d → 36d |  |
| 604 | **Script 5** | 2005-03-11 → 2005-03-12 (+1d) | 2005-03-17 → 2005-03-18 (+1d) |  | 37d → 36d |  |
| 605 | Scenario(text) | 2005-03-11 → 2005-03-12 (+1d) | 2005-03-12 → 2005-03-14 (+2d) |  | 37d → 36d |  |
| 606 | Постановка задач | 2005-03-12 → 2005-03-14 (+2d) | 2005-03-14 → 2005-03-15 (+1d) |  | 37d → 36d |  |
| 607 | Implimentation | 2005-03-14 → 2005-03-15 (+1d) | 2005-03-15 → 2005-03-16 (+1d) |  | 37d → 36d |  |
| 608 | Dilogs/VO/Icons/Objects/Animations | 2005-03-15 → 2005-03-16 (+1d) | 2005-03-16 → 2005-03-17 (+1d) |  | 37d → 36d |  |
| 609 | Настройка | 2005-03-16 → 2005-03-17 (+1d) | 2005-03-17 → 2005-03-18 (+1d) |  | 37d → 36d |  |
| 1513 | **15_Radar** |  | 2005-02-04 → 2005-02-11 (+7d) | 11d? → 16.88d? |  |  |
| 1527 | **GameDesign** |  | 2005-01-26 → 2005-02-11 (+16d) | 3d? → 16.88d? | 17.88d → 4d | resources none → Чугай, Лестат |
| 1528 | **Secrets** |  | 2005-01-26 → 2005-01-31 (+5d) | 3d? → 6.88d? | 17.88d → 14d |  |
| 1529 | **Stage 1** |  | 2005-01-26 → 2005-01-31 (+5d) | 3d? → 6.88d? | 17.88d → 14d |  |
| 1530 | Design |  | 2005-01-24 → 2005-01-25 (+1d) | 1d? → 1.88d? | 17.88d → 17d | constraint none → finish no earlier than 2005-01-25; resources none → LeSTAT |
| 1531 | Implementation |  | 2005-01-25 → 2005-01-26 (+1d) |  | 17.88d → 17d | constraint none → finish no earlier than 2005-01-25; resources none → LeSTAT |
| 1532 | Tuning | 2005-01-26 → 2005-01-29 (+3d) | 2005-01-26 → 2005-01-31 (+5d) |  | 17.88d → 14d | constraint none → finish no earlier than 2005-01-31; resources none → LeSTAT |
| 1533 | **Smartterrains** |  | 2005-01-26 → 2005-02-11 (+16d) | 3d? → 16.88d? | 17.88d → 4d |  |
| 1534 | **Stage 1** |  | 2005-01-26 → 2005-02-11 (+16d) | 3d? → 16.88d? | 17.88d → 4d |  |
| 1535 | Design |  |  |  |  | resources none → LeSTAT |
| 1536 | Implementation | 2005-01-25 → 2005-02-05 (+11d) | 2005-01-25 → 2005-02-07 (+13d) |  | 17.88d → 7d | constraint none → finish no earlier than 2005-02-07; resources none → LeSTAT |
| 1537 | Tuning | 2005-01-26 → 2005-02-10 (+15d) | 2005-01-26 → 2005-02-11 (+16d) |  | 17.88d → 4d | constraint none → finish no earlier than 2005-02-11; resources none → LeSTAT |
| 1540 | Design |  |  |  |  | resources none → LeSTAT |
| 1541 | Implementation |  |  |  |  | resources none → LeSTAT |
| 1542 | Tuning |  |  |  |  | resources none → LeSTAT |
| 1543 | **Stalkers/Spawns** | 2005-01-24 → 2005-02-03 (+10d) | 2005-01-26 → 2005-02-11 (+16d) | 3d? → 7.88d? | 17.88d → 4d |  |
| 1544 | **Stage 1** | 2005-01-24 → 2005-02-03 (+10d) | 2005-01-26 → 2005-02-11 (+16d) | 3d? → 7.88d? | 17.88d → 4d |  |
| 1545 | Design | 2005-01-24 → 2005-02-03 (+10d) | 2005-01-24 → 2005-02-03 (+10d) |  | 17.88d → 8.88d | constraint none → start no earlier than 2005-02-03; resources none → LeSTAT |
| 1546 | Implementation | 2005-01-25 → 2005-02-05 (+11d) | 2005-01-25 → 2005-02-07 (+13d) |  | 17.88d → 7d | constraint none → finish no earlier than 2005-02-07; resources none → LeSTAT |
| 1547 | Tuning | 2005-01-26 → 2005-02-10 (+15d) | 2005-01-26 → 2005-02-11 (+16d) |  | 17.88d → 4d | constraint none → finish no earlier than 2005-02-11; resources none → LeSTAT |
| 1548 | **Anomalies/Spawns** | 2005-01-24 → 2005-02-04 (+11d) | 2005-01-26 → 2005-02-07 (+12d) |  | 17.88d → 7.88d |  |
| 1549 | **Stage 1** | 2005-01-24 → 2005-02-04 (+11d) | 2005-01-26 → 2005-02-07 (+12d) |  | 17.88d → 7.88d |  |
| 1550 | Design | 2005-01-24 → 2005-02-04 (+11d) | 2005-01-24 → 2005-02-04 (+11d) |  | 17.88d → 7.88d | constraint none → start no earlier than 2005-02-04; resources none → LeSTAT |
| 1551 | Implementation | 2005-01-25 → 2005-02-05 (+11d) | 2005-01-25 → 2005-02-05 (+11d) |  | 17.88d → 7.88d | resources none → LeSTAT |
| 1552 | Tuning | 2005-01-26 → 2005-02-07 (+12d) | 2005-01-26 → 2005-02-07 (+12d) |  | 17.88d → 7.88d | resources none → LeSTAT |
| 1553 | **Physicks** | 2005-01-24 → 2005-02-03 (+10d) | 2005-01-26 → 2005-02-11 (+16d) | 3d? → 7.88d? | 17.88d → 4d |  |
| 1554 | **Stage 1** | 2005-01-24 → 2005-02-03 (+10d) | 2005-01-26 → 2005-02-11 (+16d) | 3d? → 7.88d? | 17.88d → 4d |  |
| 1555 | Design | 2005-01-24 → 2005-02-03 (+10d) | 2005-01-24 → 2005-02-04 (+11d) | 1d? → 1.88d? | 17.88d → 8d | constraint none → finish no earlier than 2005-02-04; resources none → LeSTAT |
| 1556 | Implementation | 2005-01-25 → 2005-02-05 (+11d) | 2005-01-25 → 2005-02-07 (+13d) |  | 17.88d → 7d | constraint none → finish no earlier than 2005-02-07; resources none → LeSTAT |
| 1557 | Tuning | 2005-01-26 → 2005-02-10 (+15d) | 2005-01-26 → 2005-02-11 (+16d) |  | 17.88d → 4d | constraint none → finish no earlier than 2005-02-11; resources none → LeSTAT |
| 1559 | **Scripts** |  | 2005-01-28 → 2005-02-02 (+5d) | 5d? → 8.88d? | 15.88d → 12d |  |
| 1560 | **Script 1** |  | 2005-01-28 → 2005-02-02 (+5d) | 5d? → 8.88d? | 15.88d → 12d |  |
| 1561 | Scenario(text) |  | 2005-01-24 → 2005-01-28 (+4d) | 1d? → 4.88d? | 15.88d → 12d | constraint none → finish no earlier than 2005-01-28; resources none → Чугай, Лестат |
| 1562 | Постановка задач | 2005-01-25 → 2005-01-28 (+3d) | 2005-01-25 → 2005-01-29 (+4d) |  | 15.88d → 12d |  |
| 1563 | Implimentation | 2005-01-26 → 2005-01-29 (+3d) | 2005-01-26 → 2005-01-31 (+5d) |  | 15.88d → 12d |  |
| 1564 | Dilogs/VO/Icons/Objects/Animations | 2005-01-27 → 2005-01-31 (+4d) | 2005-01-27 → 2005-02-01 (+5d) |  | 15.88d → 12d |  |
| 1565 | Настройка | 2005-01-28 → 2005-02-01 (+4d) | 2005-01-28 → 2005-02-02 (+5d) |  | 15.88d → 12d |  |
| 1592 | **12_Yantar_Underground** | 2005-02-05 → 2005-02-11 (+6d) | 2005-02-17 → 2005-02-24 (+7d) |  | 9.88d → 4d |  |
| 1593 | **LevelDesign** | 2005-02-05 → 2005-02-11 (+6d) | 2005-02-17 → 2005-02-24 (+7d) |  | 9.88d → 4d |  |
| 1594 | **Stage 1** | 2005-02-05 → 2005-02-11 (+6d) | 2005-02-17 → 2005-02-24 (+7d) |  | 9.88d → 4d |  |
| 1595 | List of Changes | 2005-02-05 → 2005-02-11 (+6d) | 2005-02-07 → 2005-02-14 (+7d) |  | 9.88d → 4d |  |
| 1596 | Changed Geometry | 2005-02-08 → 2005-02-14 (+6d) | 2005-02-08 → 2005-02-15 (+7d) |  | 9.88d → 4d |  |
| 1597 | Check List 1 | 2005-02-09 → 2005-02-15 (+6d) | 2005-02-09 → 2005-02-16 (+7d) |  | 9.88d → 4d |  |
| 1598 | Check List 2 | 2005-02-10 → 2005-02-16 (+6d) | 2005-02-10 → 2005-02-17 (+7d) |  | 9.88d → 4d |  |
| 1599 | Check List 3 | 2005-02-11 → 2005-02-17 (+6d) | 2005-02-11 → 2005-02-18 (+7d) |  | 9.88d → 4d |  |
| 1600 | Check List 4 | 2005-02-12 → 2005-02-18 (+6d) | 2005-02-12 → 2005-02-19 (+7d) |  | 9.88d → 4d |  |
| 1601 | Render Geometry | 2005-02-14 → 2005-02-19 (+5d) | 2005-02-14 → 2005-02-21 (+7d) |  | 9.88d → 4d |  |
| 1602 | Grass | 2005-02-15 → 2005-02-21 (+6d) | 2005-02-15 → 2005-02-22 (+7d) |  | 9.88d → 4d |  |
| 1603 | AI Maps | 2005-02-16 → 2005-02-22 (+6d) | 2005-02-16 → 2005-02-23 (+7d) |  | 9.88d → 4d |  |
| 1604 | Graphs | 2005-02-17 → 2005-02-23 (+6d) | 2005-02-17 → 2005-02-24 (+7d) |  | 9.88d → 4d |  |
| 1606 | **GameDesign** | 2005-02-05 → 2005-02-11 (+6d) | 2005-02-08 → 2005-02-15 (+7d) |  | 18.88d → 13d |  |
| 1607 | **Secrets** | 2005-02-05 → 2005-02-11 (+6d) | 2005-02-08 → 2005-02-15 (+7d) |  | 18.88d → 13d |  |

| ID | Task | Start | Finish | Total float |
| --- | --- | --- | --- | --- |
| 1608 | **Stage 1** | 2005-02-05 → 2005-02-11 (+6d) | 2005-02-08 → 2005-02-15 (+7d) | 18.88d → 13d |
| 1609 | Design | 2005-02-05 → 2005-02-11 (+6d) | 2005-02-05 → 2005-02-12 (+7d) | 18.88d → 13d |
| 1610 | Implementation | 2005-02-07 → 2005-02-12 (+5d) | 2005-02-07 → 2005-02-14 (+7d) | 18.88d → 13d |
| 1611 | Tuning | 2005-02-08 → 2005-02-14 (+6d) | 2005-02-08 → 2005-02-15 (+7d) | 18.88d → 13d |
| 1612 | **Smartterrains** | 2005-02-05 → 2005-02-11 (+6d) | 2005-02-08 → 2005-02-15 (+7d) | 18.88d → 13d |
| 1613 | **Stage 1** | 2005-02-05 → 2005-02-11 (+6d) | 2005-02-08 → 2005-02-15 (+7d) | 18.88d → 13d |
| 1614 | Design | 2005-02-05 → 2005-02-11 (+6d) | 2005-02-05 → 2005-02-12 (+7d) | 18.88d → 13d |
| 1615 | Implementation | 2005-02-07 → 2005-02-12 (+5d) | 2005-02-07 → 2005-02-14 (+7d) | 18.88d → 13d |
| 1616 | Tuning | 2005-02-08 → 2005-02-14 (+6d) | 2005-02-08 → 2005-02-15 (+7d) | 18.88d → 13d |
| 1617 | **Monsters/Spawns** | 2005-02-05 → 2005-02-11 (+6d) | 2005-02-08 → 2005-02-15 (+7d) | 18.88d → 13d |
| 1618 | **Stage 1** | 2005-02-05 → 2005-02-11 (+6d) | 2005-02-08 → 2005-02-15 (+7d) | 18.88d → 13d |
| 1619 | Design | 2005-02-05 → 2005-02-11 (+6d) | 2005-02-05 → 2005-02-12 (+7d) | 18.88d → 13d |
| 1620 | Implementation | 2005-02-07 → 2005-02-12 (+5d) | 2005-02-07 → 2005-02-14 (+7d) | 18.88d → 13d |
| 1621 | Tuning | 2005-02-08 → 2005-02-14 (+6d) | 2005-02-08 → 2005-02-15 (+7d) | 18.88d → 13d |
| 1622 | **Stalkers/Spawns** | 2005-02-05 → 2005-02-11 (+6d) | 2005-02-08 → 2005-02-15 (+7d) | 18.88d → 13d |
| 1623 | **Stage 1** | 2005-02-05 → 2005-02-11 (+6d) | 2005-02-08 → 2005-02-15 (+7d) | 18.88d → 13d |
| 1624 | Design | 2005-02-05 → 2005-02-11 (+6d) | 2005-02-05 → 2005-02-12 (+7d) | 18.88d → 13d |
| 1625 | Implementation | 2005-02-07 → 2005-02-12 (+5d) | 2005-02-07 → 2005-02-14 (+7d) | 18.88d → 13d |
| 1626 | Tuning | 2005-02-08 → 2005-02-14 (+6d) | 2005-02-08 → 2005-02-15 (+7d) | 18.88d → 13d |
| 1627 | **Anomalies/Spawns** | 2005-02-05 → 2005-02-11 (+6d) | 2005-02-08 → 2005-02-15 (+7d) | 18.88d → 13d |
| 1628 | **Stage 1** | 2005-02-05 → 2005-02-11 (+6d) | 2005-02-08 → 2005-02-15 (+7d) | 18.88d → 13d |
| 1629 | Design | 2005-02-05 → 2005-02-11 (+6d) | 2005-02-05 → 2005-02-12 (+7d) | 18.88d → 13d |
| 1630 | Implementation | 2005-02-07 → 2005-02-12 (+5d) | 2005-02-07 → 2005-02-14 (+7d) | 18.88d → 13d |
| 1631 | Tuning | 2005-02-08 → 2005-02-14 (+6d) | 2005-02-08 → 2005-02-15 (+7d) | 18.88d → 13d |
| 1632 | **Physicks** | 2005-02-05 → 2005-02-11 (+6d) | 2005-02-08 → 2005-02-15 (+7d) | 18.88d → 13d |
| 1633 | **Stage 1** | 2005-02-05 → 2005-02-11 (+6d) | 2005-02-08 → 2005-02-15 (+7d) | 18.88d → 13d |
| 1634 | Design | 2005-02-05 → 2005-02-11 (+6d) | 2005-02-05 → 2005-02-12 (+7d) | 18.88d → 13d |
| 1635 | Implementation | 2005-02-07 → 2005-02-12 (+5d) | 2005-02-07 → 2005-02-14 (+7d) | 18.88d → 13d |
| 1636 | Tuning | 2005-02-08 → 2005-02-14 (+6d) | 2005-02-08 → 2005-02-15 (+7d) | 18.88d → 13d |
| 1638 | **Scripts** | 2005-02-05 → 2005-02-11 (+6d) | 2005-02-10 → 2005-02-17 (+7d) | 16.88d → 11d |
| 1639 | **Script 1** | 2005-02-05 → 2005-02-11 (+6d) | 2005-02-10 → 2005-02-17 (+7d) | 16.88d → 11d |
| 1640 | Scenario(text) | 2005-02-05 → 2005-02-11 (+6d) | 2005-02-05 → 2005-02-12 (+7d) | 16.88d → 11d |
| 1641 | Постановка задач | 2005-02-07 → 2005-02-12 (+5d) | 2005-02-07 → 2005-02-14 (+7d) | 16.88d → 11d |
| 1642 | Implimentation | 2005-02-08 → 2005-02-14 (+6d) | 2005-02-08 → 2005-02-15 (+7d) | 16.88d → 11d |
| 1643 | Dilogs/VO/Icons/Objects/Animations | 2005-02-09 → 2005-02-15 (+6d) | 2005-02-09 → 2005-02-16 (+7d) | 16.88d → 11d |
| 1644 | Настройка | 2005-02-10 → 2005-02-16 (+6d) | 2005-02-10 → 2005-02-17 (+7d) | 16.88d → 11d |
| 1645 | **Script 2** | 2005-02-05 → 2005-02-11 (+6d) | 2005-02-10 → 2005-02-17 (+7d) | 16.88d → 11d |
| 1646 | Scenario(text) | 2005-02-05 → 2005-02-11 (+6d) | 2005-02-05 → 2005-02-12 (+7d) | 16.88d → 11d |
| 1647 | Постановка задач | 2005-02-07 → 2005-02-12 (+5d) | 2005-02-07 → 2005-02-14 (+7d) | 16.88d → 11d |
| 1648 | Implimentation | 2005-02-08 → 2005-02-14 (+6d) | 2005-02-08 → 2005-02-15 (+7d) | 16.88d → 11d |
| 1649 | Dilogs/VO/Icons/Objects/Animations | 2005-02-09 → 2005-02-15 (+6d) | 2005-02-09 → 2005-02-16 (+7d) | 16.88d → 11d |
| 1650 | Настройка | 2005-02-10 → 2005-02-16 (+6d) | 2005-02-10 → 2005-02-17 (+7d) | 16.88d → 11d |
| 1651 | **Script 3** | 2005-02-05 → 2005-02-11 (+6d) | 2005-02-10 → 2005-02-17 (+7d) | 16.88d → 11d |
| 1652 | Scenario(text) | 2005-02-05 → 2005-02-11 (+6d) | 2005-02-05 → 2005-02-12 (+7d) | 16.88d → 11d |
| 1653 | Постановка задач | 2005-02-07 → 2005-02-12 (+5d) | 2005-02-07 → 2005-02-14 (+7d) | 16.88d → 11d |
| 1654 | Implimentation | 2005-02-08 → 2005-02-14 (+6d) | 2005-02-08 → 2005-02-15 (+7d) | 16.88d → 11d |
| 1655 | Dilogs/VO/Icons/Objects/Animations | 2005-02-09 → 2005-02-15 (+6d) | 2005-02-09 → 2005-02-16 (+7d) | 16.88d → 11d |
| 1656 | Настройка | 2005-02-10 → 2005-02-16 (+6d) | 2005-02-10 → 2005-02-17 (+7d) | 16.88d → 11d |
| 1657 | **Script 4** | 2005-02-05 → 2005-02-11 (+6d) | 2005-02-10 → 2005-02-17 (+7d) | 16.88d → 11d |
| 1658 | Scenario(text) | 2005-02-05 → 2005-02-11 (+6d) | 2005-02-05 → 2005-02-12 (+7d) | 16.88d → 11d |
| 1659 | Постановка задач | 2005-02-07 → 2005-02-12 (+5d) | 2005-02-07 → 2005-02-14 (+7d) | 16.88d → 11d |
| 1660 | Implimentation | 2005-02-08 → 2005-02-14 (+6d) | 2005-02-08 → 2005-02-15 (+7d) | 16.88d → 11d |
| 1661 | Dilogs/VO/Icons/Objects/Animations | 2005-02-09 → 2005-02-15 (+6d) | 2005-02-09 → 2005-02-16 (+7d) | 16.88d → 11d |
| 1662 | Настройка | 2005-02-10 → 2005-02-16 (+6d) | 2005-02-10 → 2005-02-17 (+7d) | 16.88d → 11d |
| 1663 | **Script 5** | 2005-02-05 → 2005-02-11 (+6d) | 2005-02-10 → 2005-02-17 (+7d) | 16.88d → 11d |
| 1664 | Scenario(text) | 2005-02-05 → 2005-02-11 (+6d) | 2005-02-05 → 2005-02-12 (+7d) | 16.88d → 11d |
| 1665 | Постановка задач | 2005-02-07 → 2005-02-12 (+5d) | 2005-02-07 → 2005-02-14 (+7d) | 16.88d → 11d |
| 1666 | Implimentation | 2005-02-08 → 2005-02-14 (+6d) | 2005-02-08 → 2005-02-15 (+7d) | 16.88d → 11d |
| 1667 | Dilogs/VO/Icons/Objects/Animations | 2005-02-09 → 2005-02-15 (+6d) | 2005-02-09 → 2005-02-16 (+7d) | 16.88d → 11d |
| 1668 | Настройка | 2005-02-10 → 2005-02-16 (+6d) | 2005-02-10 → 2005-02-17 (+7d) | 16.88d → 11d |
| 1671 | **14_Swamp** | 2005-02-18 → 2005-02-24 (+6d) | 2005-03-02 → 2005-03-09 (+7d) | 10.88d → 5d |
| 1672 | **LevelDesign** | 2005-02-18 → 2005-02-24 (+6d) | 2005-03-02 → 2005-03-09 (+7d) | 10.88d → 5d |
| 1673 | **Stage 1** | 2005-02-18 → 2005-02-24 (+6d) | 2005-03-02 → 2005-03-09 (+7d) | 10.88d → 5d |
| 1674 | List of Changes | 2005-02-18 → 2005-02-24 (+6d) | 2005-02-19 → 2005-02-26 (+7d) | 10.88d → 5d |
| 1675 | Changed Geometry | 2005-02-21 → 2005-02-26 (+5d) | 2005-02-21 → 2005-02-28 (+7d) | 10.88d → 5d |
| 1676 | Check List 1 | 2005-02-22 → 2005-02-28 (+6d) | 2005-02-22 → 2005-03-01 (+7d) | 10.88d → 5d |
| 1677 | Check List 2 | 2005-02-23 → 2005-03-01 (+6d) | 2005-02-23 → 2005-03-02 (+7d) | 10.88d → 5d |
| 1678 | Check List 3 | 2005-02-24 → 2005-03-02 (+6d) | 2005-02-24 → 2005-03-03 (+7d) | 10.88d → 5d |
| 1679 | Check List 4 | 2005-02-25 → 2005-03-03 (+6d) | 2005-02-25 → 2005-03-04 (+7d) | 10.88d → 5d |
| 1680 | Render Geometry | 2005-02-26 → 2005-03-04 (+6d) | 2005-02-26 → 2005-03-05 (+7d) | 10.88d → 5d |

| ID | Task | Start | Finish | Total float |
| --- | --- | --- | --- | --- |
| 1681 | Grass | 2005-02-28 → 2005-03-05 (+5d) | 2005-02-28 → 2005-03-07 (+7d) | 10.88d → 5d |
| 1682 | AI Maps | 2005-03-01 → 2005-03-07 (+6d) | 2005-03-01 → 2005-03-08 (+7d) | 10.88d → 5d |
| 1683 | Graphs | 2005-03-02 → 2005-03-08 (+6d) | 2005-03-02 → 2005-03-09 (+7d) | 10.88d → 5d |
| 1685 | **GameDesign** | 2005-02-18 → 2005-02-24 (+6d) | 2005-02-21 → 2005-02-28 (+7d) | 45.88d → 40d |
| 1686 | **Secrets** | 2005-02-18 → 2005-02-24 (+6d) | 2005-02-21 → 2005-02-28 (+7d) | 45.88d → 40d |
| 1687 | **Stage 1** | 2005-02-18 → 2005-02-24 (+6d) | 2005-02-21 → 2005-02-28 (+7d) | 45.88d → 40d |
| 1688 | Design | 2005-02-18 → 2005-02-24 (+6d) | 2005-02-18 → 2005-02-25 (+7d) | 45.88d → 40d |
| 1689 | Implementation | 2005-02-19 → 2005-02-25 (+6d) | 2005-02-19 → 2005-02-26 (+7d) | 45.88d → 40d |
| 1690 | Tuning | 2005-02-21 → 2005-02-26 (+5d) | 2005-02-21 → 2005-02-28 (+7d) | 45.88d → 40d |
| 1691 | **Smartterrains** | 2005-02-18 → 2005-02-24 (+6d) | 2005-02-21 → 2005-02-28 (+7d) | 45.88d → 40d |
| 1692 | **Stage 1** | 2005-02-18 → 2005-02-24 (+6d) | 2005-02-21 → 2005-02-28 (+7d) | 45.88d → 40d |
| 1693 | Design | 2005-02-18 → 2005-02-24 (+6d) | 2005-02-18 → 2005-02-25 (+7d) | 45.88d → 40d |
| 1694 | Implementation | 2005-02-19 → 2005-02-25 (+6d) | 2005-02-19 → 2005-02-26 (+7d) | 45.88d → 40d |
| 1695 | Tuning | 2005-02-21 → 2005-02-26 (+5d) | 2005-02-21 → 2005-02-28 (+7d) | 45.88d → 40d |
| 1696 | **Monsters/Spawns** | 2005-02-18 → 2005-02-24 (+6d) | 2005-02-21 → 2005-02-28 (+7d) | 45.88d → 40d |
| 1697 | **Stage 1** | 2005-02-18 → 2005-02-24 (+6d) | 2005-02-21 → 2005-02-28 (+7d) | 45.88d → 40d |
| 1698 | Design | 2005-02-18 → 2005-02-24 (+6d) | 2005-02-18 → 2005-02-25 (+7d) | 45.88d → 40d |
| 1699 | Implementation | 2005-02-19 → 2005-02-25 (+6d) | 2005-02-19 → 2005-02-26 (+7d) | 45.88d → 40d |
| 1700 | Tuning | 2005-02-21 → 2005-02-26 (+5d) | 2005-02-21 → 2005-02-28 (+7d) | 45.88d → 40d |
| 1701 | **Stalkers/Spawns** | 2005-02-18 → 2005-02-24 (+6d) | 2005-02-21 → 2005-02-28 (+7d) | 45.88d → 40d |
| 1702 | **Stage 1** | 2005-02-18 → 2005-02-24 (+6d) | 2005-02-21 → 2005-02-28 (+7d) | 45.88d → 40d |
| 1703 | Design | 2005-02-18 → 2005-02-24 (+6d) | 2005-02-18 → 2005-02-25 (+7d) | 45.88d → 40d |
| 1704 | Implementation | 2005-02-19 → 2005-02-25 (+6d) | 2005-02-19 → 2005-02-26 (+7d) | 45.88d → 40d |
| 1705 | Tuning | 2005-02-21 → 2005-02-26 (+5d) | 2005-02-21 → 2005-02-28 (+7d) | 45.88d → 40d |
| 1706 | **Anomalies/Spawns** | 2005-02-18 → 2005-02-24 (+6d) | 2005-02-21 → 2005-02-28 (+7d) | 45.88d → 40d |
| 1707 | **Stage 1** | 2005-02-18 → 2005-02-24 (+6d) | 2005-02-21 → 2005-02-28 (+7d) | 45.88d → 40d |
| 1708 | Design | 2005-02-18 → 2005-02-24 (+6d) | 2005-02-18 → 2005-02-25 (+7d) | 45.88d → 40d |
| 1709 | Implementation | 2005-02-19 → 2005-02-25 (+6d) | 2005-02-19 → 2005-02-26 (+7d) | 45.88d → 40d |
| 1710 | Tuning | 2005-02-21 → 2005-02-26 (+5d) | 2005-02-21 → 2005-02-28 (+7d) | 45.88d → 40d |
| 1711 | **Physicks** | 2005-02-18 → 2005-02-24 (+6d) | 2005-02-21 → 2005-02-28 (+7d) | 45.88d → 40d |
| 1712 | **Stage 1** | 2005-02-18 → 2005-02-24 (+6d) | 2005-02-21 → 2005-02-28 (+7d) | 45.88d → 40d |
| 1713 | Design | 2005-02-18 → 2005-02-24 (+6d) | 2005-02-18 → 2005-02-25 (+7d) | 45.88d → 40d |
| 1714 | Implementation | 2005-02-19 → 2005-02-25 (+6d) | 2005-02-19 → 2005-02-26 (+7d) | 45.88d → 40d |
| 1715 | Tuning | 2005-02-21 → 2005-02-26 (+5d) | 2005-02-21 → 2005-02-28 (+7d) | 45.88d → 40d |
| 1717 | **Scripts** | 2005-02-18 → 2005-02-24 (+6d) | 2005-02-23 → 2005-03-02 (+7d) | 43.88d → 38d |
| 1718 | **Script 1** | 2005-02-18 → 2005-02-24 (+6d) | 2005-02-23 → 2005-03-02 (+7d) | 43.88d → 38d |
| 1719 | Scenario(text) | 2005-02-18 → 2005-02-24 (+6d) | 2005-02-18 → 2005-02-25 (+7d) | 43.88d → 38d |
| 1720 | Постановка задач | 2005-02-19 → 2005-02-25 (+6d) | 2005-02-19 → 2005-02-26 (+7d) | 43.88d → 38d |
| 1721 | Implimentation | 2005-02-21 → 2005-02-26 (+5d) | 2005-02-21 → 2005-02-28 (+7d) | 43.88d → 38d |
| 1722 | Dilogs/VO/Icons/Objects/Animations | 2005-02-22 → 2005-02-28 (+6d) | 2005-02-22 → 2005-03-01 (+7d) | 43.88d → 38d |
| 1723 | Настройка | 2005-02-23 → 2005-03-01 (+6d) | 2005-02-23 → 2005-03-02 (+7d) | 43.88d → 38d |
| 1724 | **Script 2** | 2005-02-18 → 2005-02-24 (+6d) | 2005-02-23 → 2005-03-02 (+7d) | 43.88d → 38d |
| 1725 | Scenario(text) | 2005-02-18 → 2005-02-24 (+6d) | 2005-02-18 → 2005-02-25 (+7d) | 43.88d → 38d |
| 1726 | Постановка задач | 2005-02-19 → 2005-02-25 (+6d) | 2005-02-19 → 2005-02-26 (+7d) | 43.88d → 38d |
| 1727 | Implimentation | 2005-02-21 → 2005-02-26 (+5d) | 2005-02-21 → 2005-02-28 (+7d) | 43.88d → 38d |
| 1728 | Dilogs/VO/Icons/Objects/Animations | 2005-02-22 → 2005-02-28 (+6d) | 2005-02-22 → 2005-03-01 (+7d) | 43.88d → 38d |
| 1729 | Настройка | 2005-02-23 → 2005-03-01 (+6d) | 2005-02-23 → 2005-03-02 (+7d) | 43.88d → 38d |
| 1730 | **Script 3** | 2005-02-18 → 2005-02-24 (+6d) | 2005-02-23 → 2005-03-02 (+7d) | 43.88d → 38d |
| 1731 | Scenario(text) | 2005-02-18 → 2005-02-24 (+6d) | 2005-02-18 → 2005-02-25 (+7d) | 43.88d → 38d |
| 1732 | Постановка задач | 2005-02-19 → 2005-02-25 (+6d) | 2005-02-19 → 2005-02-26 (+7d) | 43.88d → 38d |
| 1733 | Implimentation | 2005-02-21 → 2005-02-26 (+5d) | 2005-02-21 → 2005-02-28 (+7d) | 43.88d → 38d |
| 1734 | Dilogs/VO/Icons/Objects/Animations | 2005-02-22 → 2005-02-28 (+6d) | 2005-02-22 → 2005-03-01 (+7d) | 43.88d → 38d |
| 1735 | Настройка | 2005-02-23 → 2005-03-01 (+6d) | 2005-02-23 → 2005-03-02 (+7d) | 43.88d → 38d |
| 1736 | **Script 4** | 2005-02-18 → 2005-02-24 (+6d) | 2005-02-23 → 2005-03-02 (+7d) | 43.88d → 38d |
| 1737 | Scenario(text) | 2005-02-18 → 2005-02-24 (+6d) | 2005-02-18 → 2005-02-25 (+7d) | 43.88d → 38d |
| 1738 | Постановка задач | 2005-02-19 → 2005-02-25 (+6d) | 2005-02-19 → 2005-02-26 (+7d) | 43.88d → 38d |
| 1739 | Implimentation | 2005-02-21 → 2005-02-26 (+5d) | 2005-02-21 → 2005-02-28 (+7d) | 43.88d → 38d |
| 1740 | Dilogs/VO/Icons/Objects/Animations | 2005-02-22 → 2005-02-28 (+6d) | 2005-02-22 → 2005-03-01 (+7d) | 43.88d → 38d |
| 1741 | Настройка | 2005-02-23 → 2005-03-01 (+6d) | 2005-02-23 → 2005-03-02 (+7d) | 43.88d → 38d |
| 1742 | **Script 5** | 2005-02-18 → 2005-02-24 (+6d) | 2005-02-23 → 2005-03-02 (+7d) | 43.88d → 38d |
| 1743 | Scenario(text) | 2005-02-18 → 2005-02-24 (+6d) | 2005-02-18 → 2005-02-25 (+7d) | 43.88d → 38d |
| 1744 | Постановка задач | 2005-02-19 → 2005-02-25 (+6d) | 2005-02-19 → 2005-02-26 (+7d) | 43.88d → 38d |
| 1745 | Implimentation | 2005-02-21 → 2005-02-26 (+5d) | 2005-02-21 → 2005-02-28 (+7d) | 43.88d → 38d |
| 1746 | Dilogs/VO/Icons/Objects/Animations | 2005-02-22 → 2005-02-28 (+6d) | 2005-02-22 → 2005-03-01 (+7d) | 43.88d → 38d |
| 1747 | Настройка | 2005-02-23 → 2005-03-01 (+6d) | 2005-02-23 → 2005-03-02 (+7d) | 43.88d → 38d |

## Version 5 (saved 2005-02-03)

Last finish 2005-03-28 → 2005-04-16 (+19d).

Added:

| ID | Task | Duration | Start | Finish | Predecessors | Constraint | Resources |
| --- | --- | --- | --- | --- | --- | --- | --- |
| 1298 | Дополнительно требуется wallmarki: | 6.88d? | 2005-02-03 | 2005-02-10 |  | finish no earlier than 2005-02-10 | PROF |
| 1299 | Дополнительно требуется физика | 6.88d? | 2005-02-03 | 2005-02-10 |  | finish no earlier than 2005-02-10 | Угрюмый |
| 1300 | Дополнительно требуется оружие | 6.88d? | 2005-02-03 | 2005-02-10 |  | finish no earlier than 2005-02-10 | PROF |
| 1301 | Дополнительно требуется иконки | 6.88d? | 2005-02-03 | 2005-02-10 |  | finish no earlier than 2005-02-10 | PROF |
| 1312 | Дополнительно требуется иконки | 1.88d? | 2005-02-03 | 2005-02-04 |  | finish no earlier than 2005-02-04 | PROF |
| 1567 | **Сцена 1 - Лагерь Монолита (Лес)** | 50d? | 2005-01-24 | 2005-03-22 |  |  | Чугай, Лестат |
| 1569 | **Реализация** | 29d | 2005-02-17 | 2005-03-22 | 1568 |  | Чугай, Лестат |
| 1570 | Реализация | 2d | 2005-02-17 | 2005-02-18 | 1568 | start no earlier than 2005-02-16 | Чугай |
| 1571 | Расстановка | 29d | 2005-02-17 | 2005-03-22 |  |  | LeSTAT |
| 1572 | Тексты, Диалоги, Задания, Отметки на карте, новости, профили персонажей (продумать) | 8d | 2005-02-17 | 2005-02-25 |  |  | LeSTAT |
| 1573 | **Тестирование** | 23d? | 2005-01-24 | 2005-02-18 |  |  | Чугай, Лестат |
| 1574 | Тестирование | 1d | 2005-02-18 | 2005-02-18 |  | start no earlier than 2005-02-18 | Гхола |
| 1575 | Проверить расстановку AI нод вокруг дерева | 6.25d? | 2005-01-24 | 2005-01-31 |  |  | Гхола |
| 1576 | **Сцена 2 - Небольшой пост Монолитовцев (секрет)** | 25d? | 2005-01-24 | 2005-02-21 |  |  | Чугай, Лестат |
| 1578 | **Реализация** | 1d? | 2005-02-21 | 2005-02-21 |  |  | Чугай, Лестат |
| 1579 | Реализация | 1d | 2005-02-21 | 2005-02-21 |  | start no earlier than 2005-02-21 | Чугай |
| 1580 | Доработка X в движке | 1d? | 2005-02-21 | 2005-02-21 |  | start no earlier than 2005-02-21 | Чугай |
| 1581 | Расстановка | 1d | 2005-02-21 | 2005-02-21 |  | start no earlier than 2005-02-21 | LeSTAT |
| 1582 | Тексты, Диалоги, Задания, Отметки на карте, новости, профили персонажей (продумать) | 1d | 2005-02-21 | 2005-02-21 |  | start no earlier than 2005-02-21 | LeSTAT |
| 1583 | **Тестирование** | 25d? | 2005-01-24 | 2005-02-21 |  |  | Чугай, Лестат |
| 1584 | Тестирование | 1d | 2005-02-21 | 2005-02-21 |  | start no earlier than 2005-02-21 | Гхола |
| 1585 | Проверить расстановку AI нод вокруг дерева | 4d? | 2005-01-24 | 2005-01-27 |  |  | Гхола |
| 1586 | **Сцена 3 - Лагер Охраняющий Антенны (Монолит)** | 26d? | 2005-01-24 | 2005-02-22 |  |  | Чугай, Лестат |
| 1588 | **Реализация** | 1d? | 2005-02-22 | 2005-02-22 |  |  | Чугай, Лестат |
| 1589 | Реализация | 1d | 2005-02-22 | 2005-02-22 |  | start no earlier than 2005-02-22 | Чугай |
| 1590 | Доработка X в движке | 1d? | 2005-02-22 | 2005-02-22 |  | start no earlier than 2005-02-22 | Чугай |
| 1591 | Расстановка | 1d? | 2005-02-22 | 2005-02-22 |  | start no earlier than 2005-02-22 | LeSTAT |
| 1592 | Тексты, Диалоги, Задания, Отметки на карте, новости, профили персонажей (продумать) | 1d? | 2005-02-22 | 2005-02-22 |  | start no earlier than 2005-02-22 | LeSTAT |
| 1593 | **Тестирование** | 26d? | 2005-01-24 | 2005-02-22 |  |  | Чугай, Лестат |
| 1594 | Тестирование | 1d? | 2005-02-22 | 2005-02-22 |  | start no earlier than 2005-02-22 | Гхола |
| 1595 | Проверить расстановку AI нод вокруг дерева | 3d? | 2005-01-24 | 2005-01-26 |  |  | Гхола |
| 1596 | **Сцена 4 - Засада Кровососов** | 29d? | 2005-01-24 | 2005-02-25 |  |  | Чугай, Лестат |
| 1598 | **Реализация** | 2d? | 2005-02-24 | 2005-02-25 |  |  | Чугай, Лестат |
| 1599 | Реализация | 2d | 2005-02-24 | 2005-02-25 |  | start no earlier than 2005-02-24 | Чугай |
| 1600 | Доработка X в движке | 1d? | 2005-02-24 | 2005-02-24 |  | start no earlier than 2005-02-24 | Чугай |
| 1601 | Расстановка | 2d | 2005-02-24 | 2005-02-25 |  | start no earlier than 2005-02-24 | LeSTAT |
| 1602 | Тексты, Диалоги, Задания, Отметки на карте, новости, профили персонажей (продумать) | 1d? | 2005-02-24 | 2005-02-24 |  | start no earlier than 2005-02-24 | LeSTAT |
| 1603 | **Тестирование** | 28d? | 2005-01-24 | 2005-02-24 |  |  | Чугай, Лестат |
| 1604 | Тестирование | 1d? | 2005-02-24 | 2005-02-24 |  | start no earlier than 2005-02-24 | Гхола |
| 1605 | Проверить расстановку AI нод вокруг дерева | 3d? | 2005-01-24 | 2005-01-26 |  |  | Гхола |
| 1606 | **Сцена 5 - Дорога** | 3d? | 2005-02-23 | 2005-02-25 |  |  | Чугай, Лестат |
| 1608 | **Реализация** | 2d? | 2005-02-24 | 2005-02-25 |  |  | Чугай, Лестат |
| 1609 | Реализация | 2d | 2005-02-24 | 2005-02-25 |  | start no earlier than 2005-02-24 | Чугай |
| 1610 | Доработка X в движке | 1d? | 2005-02-24 | 2005-02-24 |  | start no earlier than 2005-02-24 | Чугай |
| 1611 | Расстановка | 2d | 2005-02-24 | 2005-02-25 |  | start no earlier than 2005-02-24 | LeSTAT |
| 1612 | Тексты, Диалоги, Задания, Отметки на карте, новости, профили персонажей (продумать) | 1d? | 2005-02-24 | 2005-02-24 |  | start no earlier than 2005-02-24 | LeSTAT |
| 1613 | **Тестирование** | 1d? | 2005-02-24 | 2005-02-24 |  |  | Чугай, Лестат |
| 1614 | Тестирование | 1d? | 2005-02-24 | 2005-02-24 |  | start no earlier than 2005-02-24 | Гхола |
| 1615 | Проверить расстановку AI нод вокруг дерева | 1d? | 2005-02-24 | 2005-02-24 |  | start no earlier than 2005-02-24 | Гхола |

Removed: 1560 Script 1; 1561 Scenario(text); 1563 Implimentation; 1564 Dilogs/VO/Icons/Objects/Animations; 1565 Настройка; 1566 Script 2; 1567 Scenario(text); 1569 Implimentation; 1570 Dilogs/VO/Icons/Objects/Animations; 1571 Настройка; 1572 Script 3; 1573 Scenario(text); 1575 Implimentation; 1576 Dilogs/VO/Icons/Objects/Animations; 1577 Настройка; 1578 Script 4; 1579 Scenario(text); 1581 Implimentation; 1582 Dilogs/VO/Icons/Objects/Animations; 1583 Настройка; 1584 Script 5; 1585 Scenario(text); 1587 Implimentation; 1588 Dilogs/VO/Icons/Objects/Animations; 1589 Настройка

Changed:

| ID | Task | Start | Finish | Duration | Complete | Total float | Predecessors | Other |
| --- | --- | --- | --- | --- | --- | --- | --- | --- |
| 309 | **GameDesign** |  |  |  | 5% → 10% |  |  |  |
| 310 | AI Maps/Graphs |  |  |  | 35% → 75% |  |  |  |
| 1295 | **Scripts** |  |  |  | 2% → 1% |  |  |  |
| 1311 | **Сцена 2 - Группировка Долга** | 2005-02-16 → 2005-02-03 (-13d) |  | 4d? → 15d? |  |  |  |  |
| 1520 | **15_Radar** |  | 2005-02-11 → 2005-03-22 (+39d) | 16.88d? → 50d? |  | 1.88d → -29.12d |  |  |
| 1566 | **Scripts** |  | 2005-02-02 → 2005-03-22 (+48d) | 8.88d? → 50d? |  | 12d → -29.12d |  |  |
| 1568 | Постановка задач | 2005-01-28 → 2005-02-16 (+19d) | 2005-01-29 → 2005-02-16 (+18d) | 1d? → 1d |  | 12d → -2.12d | Scenario(text) → none | constraint none → start no earlier than 2005-02-16; resources none → Чугай |
| 1577 | Постановка задач | 2005-01-25 → 2005-02-18 (+24d) | 2005-01-25 → 2005-02-19 (+25d) | 1d? → 1d |  | 15.88d → -2.88d | Scenario(text) → none | constraint none → finish no earlier than 2005-02-19; resources none → Чугай |
| 1587 | Постановка задач | 2005-01-25 → 2005-02-22 (+28d) | 2005-01-25 → 2005-02-22 (+28d) |  |  | 15.88d → -5.12d | Scenario(text) → none | constraint none → start no earlier than 2005-02-22; resources none → Чугай |
| 1597 | Постановка задач | 2005-01-25 → 2005-02-23 (+29d) | 2005-01-25 → 2005-02-23 (+29d) |  |  | 15.88d → -6.12d | Scenario(text) → none | constraint none → start no earlier than 2005-02-23; resources none → Чугай |
| 1607 | Постановка задач | 2005-01-25 → 2005-02-23 (+29d) | 2005-01-25 → 2005-02-23 (+29d) |  |  | 15.88d → -6.12d | Scenario(text) → none | constraint none → start no earlier than 2005-02-23; resources none → Чугай |
| 1621 | **12_Yantar_Underground** | 2005-02-11 → 2005-03-23 (+40d) | 2005-02-24 → 2005-04-04 (+39d) |  |  | 4d → -29.12d |  |  |
| 1622 | **LevelDesign** | 2005-02-11 → 2005-03-23 (+40d) | 2005-02-24 → 2005-04-04 (+39d) |  |  | 4d → -29.12d |  |  |
| 1623 | **Stage 1** | 2005-02-11 → 2005-03-23 (+40d) | 2005-02-24 → 2005-04-04 (+39d) |  |  | 4d → -29.12d |  |  |
| 1624 | List of Changes | 2005-02-11 → 2005-03-23 (+40d) | 2005-02-14 → 2005-03-24 (+38d) |  |  | 4d → -29.12d |  |  |
| 1625 | Changed Geometry | 2005-02-14 → 2005-03-25 (+39d) | 2005-02-15 → 2005-03-25 (+38d) |  |  | 4d → -29.12d |  |  |
| 1626 | Check List 1 | 2005-02-15 → 2005-03-26 (+39d) | 2005-02-16 → 2005-03-26 (+38d) |  |  | 4d → -29.12d |  |  |
| 1627 | Check List 2 | 2005-02-16 → 2005-03-28 (+40d) | 2005-02-17 → 2005-03-28 (+39d) |  |  | 4d → -29.12d |  |  |
| 1628 | Check List 3 | 2005-02-17 → 2005-03-29 (+40d) | 2005-02-18 → 2005-03-29 (+39d) |  |  | 4d → -29.12d |  |  |
| 1629 | Check List 4 | 2005-02-18 → 2005-03-30 (+40d) | 2005-02-19 → 2005-03-30 (+39d) |  |  | 4d → -29.12d |  |  |
| 1630 | Render Geometry | 2005-02-19 → 2005-03-31 (+40d) | 2005-02-21 → 2005-03-31 (+38d) |  |  | 4d → -29.12d |  |  |
| 1631 | Grass | 2005-02-21 → 2005-04-01 (+39d) | 2005-02-22 → 2005-04-01 (+38d) |  |  | 4d → -29.12d |  |  |
| 1632 | AI Maps | 2005-02-22 → 2005-04-02 (+39d) | 2005-02-23 → 2005-04-02 (+38d) |  |  | 4d → -29.12d |  |  |
| 1633 | Graphs | 2005-02-23 → 2005-04-04 (+40d) | 2005-02-24 → 2005-04-04 (+39d) |  |  | 4d → -29.12d |  |  |
| 1635 | **GameDesign** | 2005-02-11 → 2005-03-23 (+40d) | 2005-02-15 → 2005-03-25 (+38d) |  |  | 13d → -20.12d |  |  |
| 1636 | **Secrets** | 2005-02-11 → 2005-03-23 (+40d) | 2005-02-15 → 2005-03-25 (+38d) |  |  | 13d → -20.12d |  |  |
| 1637 | **Stage 1** | 2005-02-11 → 2005-03-23 (+40d) | 2005-02-15 → 2005-03-25 (+38d) |  |  | 13d → -20.12d |  |  |
| 1638 | Design | 2005-02-11 → 2005-03-23 (+40d) | 2005-02-12 → 2005-03-23 (+39d) |  |  | 13d → -20.12d |  |  |
| 1639 | Implementation | 2005-02-12 → 2005-03-24 (+40d) | 2005-02-14 → 2005-03-24 (+38d) |  |  | 13d → -20.12d |  |  |
| 1640 | Tuning | 2005-02-14 → 2005-03-25 (+39d) | 2005-02-15 → 2005-03-25 (+38d) |  |  | 13d → -20.12d |  |  |
| 1641 | **Smartterrains** | 2005-02-11 → 2005-03-23 (+40d) | 2005-02-15 → 2005-03-25 (+38d) |  |  | 13d → -20.12d |  |  |
| 1642 | **Stage 1** | 2005-02-11 → 2005-03-23 (+40d) | 2005-02-15 → 2005-03-25 (+38d) |  |  | 13d → -20.12d |  |  |
| 1643 | Design | 2005-02-11 → 2005-03-23 (+40d) | 2005-02-12 → 2005-03-23 (+39d) |  |  | 13d → -20.12d |  |  |
| 1644 | Implementation | 2005-02-12 → 2005-03-24 (+40d) | 2005-02-14 → 2005-03-24 (+38d) |  |  | 13d → -20.12d |  |  |
| 1645 | Tuning | 2005-02-14 → 2005-03-25 (+39d) | 2005-02-15 → 2005-03-25 (+38d) |  |  | 13d → -20.12d |  |  |
| 1646 | **Monsters/Spawns** | 2005-02-11 → 2005-03-23 (+40d) | 2005-02-15 → 2005-03-25 (+38d) |  |  | 13d → -20.12d |  |  |
| 1647 | **Stage 1** | 2005-02-11 → 2005-03-23 (+40d) | 2005-02-15 → 2005-03-25 (+38d) |  |  | 13d → -20.12d |  |  |
| 1648 | Design | 2005-02-11 → 2005-03-23 (+40d) | 2005-02-12 → 2005-03-23 (+39d) |  |  | 13d → -20.12d |  |  |
| 1649 | Implementation | 2005-02-12 → 2005-03-24 (+40d) | 2005-02-14 → 2005-03-24 (+38d) |  |  | 13d → -20.12d |  |  |
| 1650 | Tuning | 2005-02-14 → 2005-03-25 (+39d) | 2005-02-15 → 2005-03-25 (+38d) |  |  | 13d → -20.12d |  |  |
| 1651 | **Stalkers/Spawns** | 2005-02-11 → 2005-03-23 (+40d) | 2005-02-15 → 2005-03-25 (+38d) |  |  | 13d → -20.12d |  |  |
| 1652 | **Stage 1** | 2005-02-11 → 2005-03-23 (+40d) | 2005-02-15 → 2005-03-25 (+38d) |  |  | 13d → -20.12d |  |  |
| 1653 | Design | 2005-02-11 → 2005-03-23 (+40d) | 2005-02-12 → 2005-03-23 (+39d) |  |  | 13d → -20.12d |  |  |
| 1654 | Implementation | 2005-02-12 → 2005-03-24 (+40d) | 2005-02-14 → 2005-03-24 (+38d) |  |  | 13d → -20.12d |  |  |
| 1655 | Tuning | 2005-02-14 → 2005-03-25 (+39d) | 2005-02-15 → 2005-03-25 (+38d) |  |  | 13d → -20.12d |  |  |
| 1656 | **Anomalies/Spawns** | 2005-02-11 → 2005-03-23 (+40d) | 2005-02-15 → 2005-03-25 (+38d) |  |  | 13d → -20.12d |  |  |
| 1657 | **Stage 1** | 2005-02-11 → 2005-03-23 (+40d) | 2005-02-15 → 2005-03-25 (+38d) |  |  | 13d → -20.12d |  |  |
| 1658 | Design | 2005-02-11 → 2005-03-23 (+40d) | 2005-02-12 → 2005-03-23 (+39d) |  |  | 13d → -20.12d |  |  |
| 1659 | Implementation | 2005-02-12 → 2005-03-24 (+40d) | 2005-02-14 → 2005-03-24 (+38d) |  |  | 13d → -20.12d |  |  |
| 1660 | Tuning | 2005-02-14 → 2005-03-25 (+39d) | 2005-02-15 → 2005-03-25 (+38d) |  |  | 13d → -20.12d |  |  |
| 1661 | **Physicks** | 2005-02-11 → 2005-03-23 (+40d) | 2005-02-15 → 2005-03-25 (+38d) |  |  | 13d → -20.12d |  |  |
| 1662 | **Stage 1** | 2005-02-11 → 2005-03-23 (+40d) | 2005-02-15 → 2005-03-25 (+38d) |  |  | 13d → -20.12d |  |  |
| 1663 | Design | 2005-02-11 → 2005-03-23 (+40d) | 2005-02-12 → 2005-03-23 (+39d) |  |  | 13d → -20.12d |  |  |
| 1664 | Implementation | 2005-02-12 → 2005-03-24 (+40d) | 2005-02-14 → 2005-03-24 (+38d) |  |  | 13d → -20.12d |  |  |
| 1665 | Tuning | 2005-02-14 → 2005-03-25 (+39d) | 2005-02-15 → 2005-03-25 (+38d) |  |  | 13d → -20.12d |  |  |
| 1667 | **Scripts** | 2005-02-11 → 2005-03-23 (+40d) | 2005-02-17 → 2005-03-28 (+39d) |  |  | 11d → -22.12d |  |  |
| 1668 | **Script 1** | 2005-02-11 → 2005-03-23 (+40d) | 2005-02-17 → 2005-03-28 (+39d) |  |  | 11d → -22.12d |  |  |
| 1669 | Scenario(text) | 2005-02-11 → 2005-03-23 (+40d) | 2005-02-12 → 2005-03-23 (+39d) |  |  | 11d → -22.12d |  |  |
| 1670 | Постановка задач | 2005-02-12 → 2005-03-24 (+40d) | 2005-02-14 → 2005-03-24 (+38d) |  |  | 11d → -22.12d |  |  |
| 1671 | Implimentation | 2005-02-14 → 2005-03-25 (+39d) | 2005-02-15 → 2005-03-25 (+38d) |  |  | 11d → -22.12d |  |  |
| 1672 | Dilogs/VO/Icons/Objects/Animations | 2005-02-15 → 2005-03-26 (+39d) | 2005-02-16 → 2005-03-26 (+38d) |  |  | 11d → -22.12d |  |  |
| 1673 | Настройка | 2005-02-16 → 2005-03-28 (+40d) | 2005-02-17 → 2005-03-28 (+39d) |  |  | 11d → -22.12d |  |  |
| 1674 | **Script 2** | 2005-02-11 → 2005-03-23 (+40d) | 2005-02-17 → 2005-03-28 (+39d) |  |  | 11d → -22.12d |  |  |
| 1675 | Scenario(text) | 2005-02-11 → 2005-03-23 (+40d) | 2005-02-12 → 2005-03-23 (+39d) |  |  | 11d → -22.12d |  |  |
| 1676 | Постановка задач | 2005-02-12 → 2005-03-24 (+40d) | 2005-02-14 → 2005-03-24 (+38d) |  |  | 11d → -22.12d |  |  |
| 1677 | Implimentation | 2005-02-14 → 2005-03-25 (+39d) | 2005-02-15 → 2005-03-25 (+38d) |  |  | 11d → -22.12d |  |  |
| 1678 | Dilogs/VO/Icons/Objects/Animations | 2005-02-15 → 2005-03-26 (+39d) | 2005-02-16 → 2005-03-26 (+38d) |  |  | 11d → -22.12d |  |  |
| 1679 | Настройка | 2005-02-16 → 2005-03-28 (+40d) | 2005-02-17 → 2005-03-28 (+39d) |  |  | 11d → -22.12d |  |  |
| 1680 | **Script 3** | 2005-02-11 → 2005-03-23 (+40d) | 2005-02-17 → 2005-03-28 (+39d) |  |  | 11d → -22.12d |  |  |
| 1681 | Scenario(text) | 2005-02-11 → 2005-03-23 (+40d) | 2005-02-12 → 2005-03-23 (+39d) |  |  | 11d → -22.12d |  |  |

| ID | Task | Start | Finish | Total float |
| --- | --- | --- | --- | --- |
| 1682 | Постановка задач | 2005-02-12 → 2005-03-24 (+40d) | 2005-02-14 → 2005-03-24 (+38d) | 11d → -22.12d |
| 1683 | Implimentation | 2005-02-14 → 2005-03-25 (+39d) | 2005-02-15 → 2005-03-25 (+38d) | 11d → -22.12d |
| 1684 | Dilogs/VO/Icons/Objects/Animations | 2005-02-15 → 2005-03-26 (+39d) | 2005-02-16 → 2005-03-26 (+38d) | 11d → -22.12d |
| 1685 | Настройка | 2005-02-16 → 2005-03-28 (+40d) | 2005-02-17 → 2005-03-28 (+39d) | 11d → -22.12d |
| 1686 | **Script 4** | 2005-02-11 → 2005-03-23 (+40d) | 2005-02-17 → 2005-03-28 (+39d) | 11d → -22.12d |
| 1687 | Scenario(text) | 2005-02-11 → 2005-03-23 (+40d) | 2005-02-12 → 2005-03-23 (+39d) | 11d → -22.12d |
| 1688 | Постановка задач | 2005-02-12 → 2005-03-24 (+40d) | 2005-02-14 → 2005-03-24 (+38d) | 11d → -22.12d |
| 1689 | Implimentation | 2005-02-14 → 2005-03-25 (+39d) | 2005-02-15 → 2005-03-25 (+38d) | 11d → -22.12d |
| 1690 | Dilogs/VO/Icons/Objects/Animations | 2005-02-15 → 2005-03-26 (+39d) | 2005-02-16 → 2005-03-26 (+38d) | 11d → -22.12d |
| 1691 | Настройка | 2005-02-16 → 2005-03-28 (+40d) | 2005-02-17 → 2005-03-28 (+39d) | 11d → -22.12d |
| 1692 | **Script 5** | 2005-02-11 → 2005-03-23 (+40d) | 2005-02-17 → 2005-03-28 (+39d) | 11d → -22.12d |
| 1693 | Scenario(text) | 2005-02-11 → 2005-03-23 (+40d) | 2005-02-12 → 2005-03-23 (+39d) | 11d → -22.12d |
| 1694 | Постановка задач | 2005-02-12 → 2005-03-24 (+40d) | 2005-02-14 → 2005-03-24 (+38d) | 11d → -22.12d |
| 1695 | Implimentation | 2005-02-14 → 2005-03-25 (+39d) | 2005-02-15 → 2005-03-25 (+38d) | 11d → -22.12d |
| 1696 | Dilogs/VO/Icons/Objects/Animations | 2005-02-15 → 2005-03-26 (+39d) | 2005-02-16 → 2005-03-26 (+38d) | 11d → -22.12d |
| 1697 | Настройка | 2005-02-16 → 2005-03-28 (+40d) | 2005-02-17 → 2005-03-28 (+39d) | 11d → -22.12d |
| 1700 | **14_Swamp** | 2005-02-24 → 2005-04-05 (+40d) | 2005-03-09 → 2005-04-16 (+38d) | 5d → -28.12d |
| 1701 | **LevelDesign** | 2005-02-24 → 2005-04-05 (+40d) | 2005-03-09 → 2005-04-16 (+38d) | 5d → -28.12d |
| 1702 | **Stage 1** | 2005-02-24 → 2005-04-05 (+40d) | 2005-03-09 → 2005-04-16 (+38d) | 5d → -28.12d |
| 1703 | List of Changes | 2005-02-24 → 2005-04-05 (+40d) | 2005-02-26 → 2005-04-06 (+39d) | 5d → -28.12d |
| 1704 | Changed Geometry | 2005-02-26 → 2005-04-07 (+40d) | 2005-02-28 → 2005-04-07 (+38d) | 5d → -28.12d |
| 1705 | Check List 1 | 2005-02-28 → 2005-04-08 (+39d) | 2005-03-01 → 2005-04-08 (+38d) | 5d → -28.12d |
| 1706 | Check List 2 | 2005-03-01 → 2005-04-09 (+39d) | 2005-03-02 → 2005-04-09 (+38d) | 5d → -28.12d |
| 1707 | Check List 3 | 2005-03-02 → 2005-04-11 (+40d) | 2005-03-03 → 2005-04-11 (+39d) | 5d → -28.12d |
| 1708 | Check List 4 | 2005-03-03 → 2005-04-12 (+40d) | 2005-03-04 → 2005-04-12 (+39d) | 5d → -28.12d |
| 1709 | Render Geometry | 2005-03-04 → 2005-04-13 (+40d) | 2005-03-05 → 2005-04-13 (+39d) | 5d → -28.12d |
| 1710 | Grass | 2005-03-05 → 2005-04-14 (+40d) | 2005-03-07 → 2005-04-14 (+38d) | 5d → -28.12d |
| 1711 | AI Maps | 2005-03-07 → 2005-04-15 (+39d) | 2005-03-08 → 2005-04-15 (+38d) | 5d → -28.12d |
| 1712 | Graphs | 2005-03-08 → 2005-04-16 (+39d) | 2005-03-09 → 2005-04-16 (+38d) | 5d → -28.12d |
| 1714 | **GameDesign** | 2005-02-24 → 2005-04-05 (+40d) | 2005-02-28 → 2005-04-07 (+38d) | 40d → 6.88d |
| 1715 | **Secrets** | 2005-02-24 → 2005-04-05 (+40d) | 2005-02-28 → 2005-04-07 (+38d) | 40d → 6.88d |
| 1716 | **Stage 1** | 2005-02-24 → 2005-04-05 (+40d) | 2005-02-28 → 2005-04-07 (+38d) | 40d → 6.88d |
| 1717 | Design | 2005-02-24 → 2005-04-05 (+40d) | 2005-02-25 → 2005-04-05 (+39d) | 40d → 6.88d |
| 1718 | Implementation | 2005-02-25 → 2005-04-06 (+40d) | 2005-02-26 → 2005-04-06 (+39d) | 40d → 6.88d |
| 1719 | Tuning | 2005-02-26 → 2005-04-07 (+40d) | 2005-02-28 → 2005-04-07 (+38d) | 40d → 6.88d |
| 1720 | **Smartterrains** | 2005-02-24 → 2005-04-05 (+40d) | 2005-02-28 → 2005-04-07 (+38d) | 40d → 6.88d |
| 1721 | **Stage 1** | 2005-02-24 → 2005-04-05 (+40d) | 2005-02-28 → 2005-04-07 (+38d) | 40d → 6.88d |
| 1722 | Design | 2005-02-24 → 2005-04-05 (+40d) | 2005-02-25 → 2005-04-05 (+39d) | 40d → 6.88d |
| 1723 | Implementation | 2005-02-25 → 2005-04-06 (+40d) | 2005-02-26 → 2005-04-06 (+39d) | 40d → 6.88d |
| 1724 | Tuning | 2005-02-26 → 2005-04-07 (+40d) | 2005-02-28 → 2005-04-07 (+38d) | 40d → 6.88d |
| 1725 | **Monsters/Spawns** | 2005-02-24 → 2005-04-05 (+40d) | 2005-02-28 → 2005-04-07 (+38d) | 40d → 6.88d |
| 1726 | **Stage 1** | 2005-02-24 → 2005-04-05 (+40d) | 2005-02-28 → 2005-04-07 (+38d) | 40d → 6.88d |
| 1727 | Design | 2005-02-24 → 2005-04-05 (+40d) | 2005-02-25 → 2005-04-05 (+39d) | 40d → 6.88d |
| 1728 | Implementation | 2005-02-25 → 2005-04-06 (+40d) | 2005-02-26 → 2005-04-06 (+39d) | 40d → 6.88d |
| 1729 | Tuning | 2005-02-26 → 2005-04-07 (+40d) | 2005-02-28 → 2005-04-07 (+38d) | 40d → 6.88d |
| 1730 | **Stalkers/Spawns** | 2005-02-24 → 2005-04-05 (+40d) | 2005-02-28 → 2005-04-07 (+38d) | 40d → 6.88d |
| 1731 | **Stage 1** | 2005-02-24 → 2005-04-05 (+40d) | 2005-02-28 → 2005-04-07 (+38d) | 40d → 6.88d |
| 1732 | Design | 2005-02-24 → 2005-04-05 (+40d) | 2005-02-25 → 2005-04-05 (+39d) | 40d → 6.88d |
| 1733 | Implementation | 2005-02-25 → 2005-04-06 (+40d) | 2005-02-26 → 2005-04-06 (+39d) | 40d → 6.88d |
| 1734 | Tuning | 2005-02-26 → 2005-04-07 (+40d) | 2005-02-28 → 2005-04-07 (+38d) | 40d → 6.88d |
| 1735 | **Anomalies/Spawns** | 2005-02-24 → 2005-04-05 (+40d) | 2005-02-28 → 2005-04-07 (+38d) | 40d → 6.88d |
| 1736 | **Stage 1** | 2005-02-24 → 2005-04-05 (+40d) | 2005-02-28 → 2005-04-07 (+38d) | 40d → 6.88d |
| 1737 | Design | 2005-02-24 → 2005-04-05 (+40d) | 2005-02-25 → 2005-04-05 (+39d) | 40d → 6.88d |
| 1738 | Implementation | 2005-02-25 → 2005-04-06 (+40d) | 2005-02-26 → 2005-04-06 (+39d) | 40d → 6.88d |
| 1739 | Tuning | 2005-02-26 → 2005-04-07 (+40d) | 2005-02-28 → 2005-04-07 (+38d) | 40d → 6.88d |
| 1740 | **Physicks** | 2005-02-24 → 2005-04-05 (+40d) | 2005-02-28 → 2005-04-07 (+38d) | 40d → 6.88d |
| 1741 | **Stage 1** | 2005-02-24 → 2005-04-05 (+40d) | 2005-02-28 → 2005-04-07 (+38d) | 40d → 6.88d |
| 1742 | Design | 2005-02-24 → 2005-04-05 (+40d) | 2005-02-25 → 2005-04-05 (+39d) | 40d → 6.88d |
| 1743 | Implementation | 2005-02-25 → 2005-04-06 (+40d) | 2005-02-26 → 2005-04-06 (+39d) | 40d → 6.88d |
| 1744 | Tuning | 2005-02-26 → 2005-04-07 (+40d) | 2005-02-28 → 2005-04-07 (+38d) | 40d → 6.88d |
| 1746 | **Scripts** | 2005-02-24 → 2005-04-05 (+40d) | 2005-03-02 → 2005-04-09 (+38d) | 38d → 4.88d |
| 1747 | **Script 1** | 2005-02-24 → 2005-04-05 (+40d) | 2005-03-02 → 2005-04-09 (+38d) | 38d → 4.88d |
| 1748 | Scenario(text) | 2005-02-24 → 2005-04-05 (+40d) | 2005-02-25 → 2005-04-05 (+39d) | 38d → 4.88d |
| 1749 | Постановка задач | 2005-02-25 → 2005-04-06 (+40d) | 2005-02-26 → 2005-04-06 (+39d) | 38d → 4.88d |
| 1750 | Implimentation | 2005-02-26 → 2005-04-07 (+40d) | 2005-02-28 → 2005-04-07 (+38d) | 38d → 4.88d |
| 1751 | Dilogs/VO/Icons/Objects/Animations | 2005-02-28 → 2005-04-08 (+39d) | 2005-03-01 → 2005-04-08 (+38d) | 38d → 4.88d |
| 1752 | Настройка | 2005-03-01 → 2005-04-09 (+39d) | 2005-03-02 → 2005-04-09 (+38d) | 38d → 4.88d |
| 1753 | **Script 2** | 2005-02-24 → 2005-04-05 (+40d) | 2005-03-02 → 2005-04-09 (+38d) | 38d → 4.88d |
| 1754 | Scenario(text) | 2005-02-24 → 2005-04-05 (+40d) | 2005-02-25 → 2005-04-05 (+39d) | 38d → 4.88d |
| 1755 | Постановка задач | 2005-02-25 → 2005-04-06 (+40d) | 2005-02-26 → 2005-04-06 (+39d) | 38d → 4.88d |

| ID | Task | Start | Finish | Total float |
| --- | --- | --- | --- | --- |
| 1756 | Implimentation | 2005-02-26 → 2005-04-07 (+40d) | 2005-02-28 → 2005-04-07 (+38d) | 38d → 4.88d |
| 1757 | Dilogs/VO/Icons/Objects/Animations | 2005-02-28 → 2005-04-08 (+39d) | 2005-03-01 → 2005-04-08 (+38d) | 38d → 4.88d |
| 1758 | Настройка | 2005-03-01 → 2005-04-09 (+39d) | 2005-03-02 → 2005-04-09 (+38d) | 38d → 4.88d |
| 1759 | **Script 3** | 2005-02-24 → 2005-04-05 (+40d) | 2005-03-02 → 2005-04-09 (+38d) | 38d → 4.88d |
| 1760 | Scenario(text) | 2005-02-24 → 2005-04-05 (+40d) | 2005-02-25 → 2005-04-05 (+39d) | 38d → 4.88d |
| 1761 | Постановка задач | 2005-02-25 → 2005-04-06 (+40d) | 2005-02-26 → 2005-04-06 (+39d) | 38d → 4.88d |
| 1762 | Implimentation | 2005-02-26 → 2005-04-07 (+40d) | 2005-02-28 → 2005-04-07 (+38d) | 38d → 4.88d |
| 1763 | Dilogs/VO/Icons/Objects/Animations | 2005-02-28 → 2005-04-08 (+39d) | 2005-03-01 → 2005-04-08 (+38d) | 38d → 4.88d |
| 1764 | Настройка | 2005-03-01 → 2005-04-09 (+39d) | 2005-03-02 → 2005-04-09 (+38d) | 38d → 4.88d |
| 1765 | **Script 4** | 2005-02-24 → 2005-04-05 (+40d) | 2005-03-02 → 2005-04-09 (+38d) | 38d → 4.88d |
| 1766 | Scenario(text) | 2005-02-24 → 2005-04-05 (+40d) | 2005-02-25 → 2005-04-05 (+39d) | 38d → 4.88d |
| 1767 | Постановка задач | 2005-02-25 → 2005-04-06 (+40d) | 2005-02-26 → 2005-04-06 (+39d) | 38d → 4.88d |
| 1768 | Implimentation | 2005-02-26 → 2005-04-07 (+40d) | 2005-02-28 → 2005-04-07 (+38d) | 38d → 4.88d |
| 1769 | Dilogs/VO/Icons/Objects/Animations | 2005-02-28 → 2005-04-08 (+39d) | 2005-03-01 → 2005-04-08 (+38d) | 38d → 4.88d |
| 1770 | Настройка | 2005-03-01 → 2005-04-09 (+39d) | 2005-03-02 → 2005-04-09 (+38d) | 38d → 4.88d |
| 1771 | **Script 5** | 2005-02-24 → 2005-04-05 (+40d) | 2005-03-02 → 2005-04-09 (+38d) | 38d → 4.88d |
| 1772 | Scenario(text) | 2005-02-24 → 2005-04-05 (+40d) | 2005-02-25 → 2005-04-05 (+39d) | 38d → 4.88d |
| 1773 | Постановка задач | 2005-02-25 → 2005-04-06 (+40d) | 2005-02-26 → 2005-04-06 (+39d) | 38d → 4.88d |
| 1774 | Implimentation | 2005-02-26 → 2005-04-07 (+40d) | 2005-02-28 → 2005-04-07 (+38d) | 38d → 4.88d |
| 1775 | Dilogs/VO/Icons/Objects/Animations | 2005-02-28 → 2005-04-08 (+39d) | 2005-03-01 → 2005-04-08 (+38d) | 38d → 4.88d |
| 1776 | Настройка | 2005-03-01 → 2005-04-09 (+39d) | 2005-03-02 → 2005-04-09 (+38d) | 38d → 4.88d |
